# Extension of the Existing Rail Monitoring System in HEET

Schedule from Primavera P6, 2026-11-16 to 2027-11-15, data date 2026-11-16.
Must finish by 2027-11-15

## Calendars

- SAR-FIELD (Sun-Thu 8h): Mon-Thu 08:00-16:00; Fri-Sat off; Sun 08:00-16:00. Exceptions (off unless hours are given): 2027-02-22, 2027-03-08 to 2027-03-11, 2027-05-16 to 2027-05-19, 2027-09-23.
- SAR-7DAY (reviews & procurement 8h): Mon-Sun 08:00-16:00.
- SAR-OFFICE (Sun-Thu 8h): Mon-Thu 08:00-16:00; Fri-Sat off; Sun 08:00-16:00. Exceptions (off unless hours are given): 2027-02-22, 2027-03-08 to 2027-03-11, 2027-05-16 to 2027-05-19, 2027-09-23.

## Schedule

| ID | WBS | Activity | Type | Duration | Start | Finish | Predecessors | Total float | Free float | Constraint | Calendar |
| --- | --- | --- | --- | --- | --- | --- | --- | --- | --- | --- | --- |
|  | 1.1 | **Project Milestones** |  |  | 2026-11-16 | 2027-11-15 |  |  |  |  |  |
| MS-001 |  | NTP - Notice to Proceed (16-Nov-2026; re-base if the actual NTP differs) | milestone | 0d | 2026-11-16 | 2026-11-16 |  | 0d |  | start on or after 2026-11-16 | SAR-OFFICE (Sun-Thu 8h) |
| MS-010 |  | Stage 1 complete - mobilization done, IFC approved & submittals issued | milestone | 0d | 2027-03-30 | 2027-03-30 | SUD-1010, SUD-1020, SUD-1035, MOB-1040, APR-1560, APR-1510, APR-1520, APR-1530, APR-1540, APR-1550 | 130d |  |  | SAR-OFFICE (Sun-Thu 8h) |
| MS-070 |  | Stage 2 complete - procurement, construction & installation complete | milestone | 0d | 2027-10-05 | 2027-10-05 | CIV-540, TDR-3520, WX-3620, COM-3720, CLD-3820, INT-4010, PWR-3430, MS-010, TST-4110, CIV-140, CIV-240, CIV-340, CIV-440 | 0d |  |  | SAR-OFFICE (Sun-Thu 8h) |
| MS-100 |  | Stage 3 complete - commissioning & performance validation complete | milestone | 0d | 2027-11-02 | 2027-11-02 | CMS-4320 | 2d | 0d |  | SAR-OFFICE (Sun-Thu 8h) |
| MS-120 |  | Taking-Over - planned completion (contract limit 15-Nov-2027 = NTP + 12 months) | milestone | 0d | 2027-11-15 | 2027-11-15 | HND-5090 | 0d |  |  | SAR-OFFICE (Sun-Thu 8h) |
| MS-130 |  | DLP Start - 12-month defects liability period begins at Taking-Over (BoQ item 29; no activity, no cost) | milestone | 0d | 2027-11-15 | 2027-11-15 | MS-120 | 0d |  |  | SAR-OFFICE (Sun-Thu 8h) |
|  | 1.2 | **PRELIMINARIES & GENERAL REQUIREMENTS** |  |  | 2026-11-16 | 2027-11-15 |  |  |  |  |  |
| MGT-1060 |  | Project management, QA/QC & HSE supervision and records (LOE) | level of effort | 251d | 2026-11-16 | 2027-11-15 | MOB-1010 SS, HND-5090 FF | 0d |  |  | SAR-OFFICE (Sun-Thu 8h) |
| MOB-1010 |  | Kick-off meeting & project management set-up |  | 2d | 2026-11-16 | 2026-11-17 | MS-001 | 0d |  |  | SAR-OFFICE (Sun-Thu 8h) |
| MGT-1090 |  | Obtain SAR risk scores & confirm Section priority (SAR input) |  | 3d | 2026-11-18 | 2026-11-22 | MOB-1010 | 72d | 71d |  | SAR-OFFICE (Sun-Thu 8h) |
| MOB-1020 |  | Insurance (CAR / TPL) & performance bond issuance |  | 4d | 2026-11-18 | 2026-11-23 | MOB-1010 | 0d |  |  | SAR-OFFICE (Sun-Thu 8h) |
| MOB-1030 |  | PTS training & PO induction - batch 1 (initial team) |  | 3d | 2026-11-18 | 2026-11-22 | MOB-1010 | 2d |  |  | SAR-OFFICE (Sun-Thu 8h) |
| MOB-1050 |  | Site security, fencing & traffic management - mobilization & design period (LOE) | level of effort | 90d | 2026-12-13 | 2027-04-22 | MOB-1040 SS, MOB-3010 FF | 0d |  |  |  |
| MOB-1080 |  | Protection Officer on site - mobilization & design period (LOE) | level of effort | 90d | 2026-12-13 | 2027-04-22 | MOB-1040 SS, MOB-3010 FF | 0d |  |  |  |
| MOB-3005 |  | PTS training & PO induction - batch 2 (field crews) |  | 3d | 2026-12-14 | 2026-12-16 | APR-1520 | 82d | 81d |  | SAR-OFFICE (Sun-Thu 8h) |
| MOB-1051 |  | Site security, fencing & traffic management - construction period (LOE) | level of effort | 103d | 2027-04-25 | 2027-09-20 | CIV-110 SS, CAB-560 FF | 0d |  |  |  |
| MOB-1081 |  | Protection Officer on site - construction period (LOE) | level of effort | 103d | 2027-04-25 | 2027-09-20 | CIV-110 SS, CAB-560 FF | 0d |  |  |  |
| MOB-1052 |  | Site security, fencing & traffic management - testing & commissioning period (LOE) | level of effort | 20d | 2027-10-06 | 2027-11-02 | TST-4210 SS, CMS-4320 FF | 0d |  |  |  |
| MOB-1082 |  | Protection Officer on site - testing & commissioning period (LOE) | level of effort | 20d | 2027-10-06 | 2027-11-02 | TST-4210 SS, CMS-4320 FF | 0d |  |  |  |
| MOB-1053 |  | Site security, fencing & traffic management - handover period (LOE) | level of effort | 9d | 2027-11-03 | 2027-11-15 | DOC-5010 SS, HND-5090 FF | 0d |  |  |  |
| MOB-1083 |  | Protection Officer on site - handover period (LOE) | level of effort | 9d | 2027-11-03 | 2027-11-15 | DOC-5010 SS, HND-5090 FF | 0d |  |  |  |
|  | 1.2.1 | **Site Mobilization, Establishment & Demobilization** |  |  | 2026-12-13 | 2027-11-09 |  |  |  |  |  |
| MOB-1040 |  | Site establishment - offices & temporary facilities |  | 8d | 2026-12-13 | 2026-12-22 | PRM-1120 | 78d | 65d |  |  |
| MOB-3010 |  | Mobilize plant, equipment & labour; compound & logistics set-up |  | 5d | 2027-04-18 | 2027-04-22 | PRM-2120, APR-1520, APR-1510, SUD-1055, MOB-1040, MOB-3005 | 1d | 0d |  |  |
| DEM-5100 |  | Demobilization & site clearance |  | 5d | 2027-11-03 | 2027-11-09 | DOC-5040, CMS-4320 | 3d |  |  |  |

| ID | WBS | Activity | Duration | Start | Finish | Predecessors | Total float | Free float | Calendar |
| --- | --- | --- | --- | --- | --- | --- | --- | --- | --- |
|  | 1.3 | **PROJECT START-UP DOCUMENTS & APPROVALS (Contract cl. 4.2, 5, 8, 10, 13)** |  | 2026-11-16 | 2026-12-13 |  |  |  |  |
| SUD-1010 |  | Performance Security (10% on-demand bank guarantee) - confirm issue & submit to SAR (due before Effective Date) | 1d | 2026-11-16 | 2026-11-16 | MS-001 | 221d | 91d | SAR-OFFICE (Sun-Thu 8h) |
| SUD-1020 |  | Submit contractor licences & certificates (CR, tax, MISA) to SAR | 1d | 2026-11-16 | 2026-11-16 | MS-001 | 221d | 91d | SAR-OFFICE (Sun-Thu 8h) |
| SUD-1030 |  | Baseline programme (Primavera P6) - prepare & submit within 14 days of Effective Date | 8d | 2026-11-16 | 2026-11-25 | MS-001 | 205d | 0d | SAR-OFFICE (Sun-Thu 8h) |
| SUB-1410 |  | QA/QC Plan, HSE Plan & Project Execution Plan - prepare & submit | 5d | 2026-11-18 | 2026-11-24 | MOB-1010 | 88d | 0d | SAR-OFFICE (Sun-Thu 8h) |
| SUB-1420 |  | Method statements & ITPs (survey, trenching, cable laying, OTDR/splicing, track crossing, equipment) - prepare & submit | 8d | 2026-11-18 | 2026-11-29 | MOB-1010 | 73d | 0d | SAR-OFFICE (Sun-Thu 8h) |
| SUD-1050 |  | Key Personnel CVs, manpower & Saudization schedule - submit to SAR | 3d | 2026-11-18 | 2026-11-22 | MOB-1010 | 90d | 0d | SAR-OFFICE (Sun-Thu 8h) |
| SUD-1060 |  | Sub-contractor & supplier approval request (cl. 5.7.2) - prepare & submit | 5d | 2026-11-18 | 2026-11-24 | MOB-1010 | 60d | 0d | SAR-OFFICE (Sun-Thu 8h) |
| SUD-1055 |  | SAR approval - Key Personnel & manpower schedule | 14d | 2026-11-23 | 2026-12-06 | SUD-1050 | 133d | 132d | SAR-7DAY (reviews & procurement 8h) |
| SUD-1040 |  | Insurance certificates (CAR, marine cargo, professional indemnity, plant) - submit to SAR | 1d | 2026-11-24 | 2026-11-24 | MOB-1020 | 0d |  | SAR-OFFICE (Sun-Thu 8h) |
| APR-1510 |  | SAR review & approval - QA/QC, HSE & Execution Plans | 14d | 2026-11-25 | 2026-12-08 | SUB-1410 | 131d | 112d | SAR-7DAY (reviews & procurement 8h) |
| SUD-1065 |  | SAR prior written approval - sub-contractors & suppliers | 14d | 2026-11-25 | 2026-12-08 | SUD-1060 | 84d |  | SAR-7DAY (reviews & procurement 8h) |
| SUD-1035 |  | SAR review & approval - baseline programme | 14d | 2026-11-26 | 2026-12-09 | SUD-1030 | 300d | 111d | SAR-7DAY (reviews & procurement 8h) |
| APR-1520 |  | SAR review & approval - method statements & ITPs | 14d | 2026-11-30 | 2026-12-13 | SUB-1420 | 108d | 0d | SAR-7DAY (reviews & procurement 8h) |
|  | 1.4 | **PERMITS & AUTHORITY APPROVALS (PA)** |  | 2026-11-25 | 2027-04-15 |  |  |  |  |
|  | 1.4.1 | **Permit 1 - Site Access & Survey (before Survey)** |  | 2026-11-25 | 2026-12-10 |  |  |  |  |
| PRM-1110 |  | Permit 1 - prepare & submit work permit request for site access & survey (Work Permit Portal) | 2d | 2026-11-25 | 2026-11-26 | MOB-1020, MOB-1030, SUD-1040 | 0d |  | SAR-OFFICE (Sun-Thu 8h) |
| PRM-1120 |  | SAR review & issue Permit 1 (site access & survey) | 14d | 2026-11-27 | 2026-12-10 | PRM-1110 | 2d |  | SAR-7DAY (reviews & procurement 8h) |
|  | 1.4.2 | **Permit 2 - Start of Execution (after IFC approved)** |  | 2027-03-31 | 2027-04-15 |  |  |  |  |
| PRM-2110 |  | Permit 2 - prepare & submit work permit request for execution (route works, crossings, station works; TTF02, PICOP, PTS register) | 2d | 2027-03-31 | 2027-04-01 | APR-1560, APR-1520, MOB-1030 | 1d | 0d | SAR-OFFICE (Sun-Thu 8h) |
| PRM-2120 |  | SAR review & issue Permit 2 (start of execution) | 14d | 2027-04-02 | 2027-04-15 | PRM-2110 | 3d | 2d | SAR-7DAY (reviews & procurement 8h) |
|  | 1.5 | **ENGINEERING (E)** |  | 2026-11-18 | 2027-04-21 |  |  |  |  |
|  | 1.5.1 | **Survey, Survey Report & Existing System Assessment** |  | 2026-12-13 | 2027-01-25 |  |  |  |  |
| SRV-1210 |  | Existing system, power capacity & shelter assessment (incl. data correlation) | 5d | 2026-12-13 | 2026-12-17 | PRM-1120 | 2d | 0d |  |
| SRV-1220 |  | Topographic survey, GPR utilities detection & dilapidation survey (5.5 km route) | 7d | 2026-12-13 | 2026-12-21 | PRM-1120 | 0d |  |  |
| SRV-1231 |  | Survey Report part A - TDR baseline report (existing system) | 20d | 2026-12-22 | 2027-01-18 | SRV-1210, SRV-1220 | 0d |  | SAR-OFFICE (Sun-Thu 8h) |
| SRV-1232 |  | Survey Report part B - DAS seismic baseline report (existing system) | 20d | 2026-12-22 | 2027-01-18 | SRV-1210, SRV-1220 | 0d |  | SAR-OFFICE (Sun-Thu 8h) |
| SRV-1233 |  | Survey Report part C - DSS strain baseline report (existing system) | 20d | 2026-12-22 | 2027-01-18 | SRV-1210, SRV-1220 | 0d |  | SAR-OFFICE (Sun-Thu 8h) |
| SRV-1234 |  | Survey Report part D - weather station data baseline report (existing system) | 20d | 2026-12-22 | 2027-01-18 | SRV-1210, SRV-1220 | 0d |  | SAR-OFFICE (Sun-Thu 8h) |
| SRV-1230 |  | Survey Report - compile baseline of existing system (topographic, GPR, dilapidation, TDR, DAS, DSS, weather) | 5d | 2027-01-19 | 2027-01-25 | SRV-1231, SRV-1232, SRV-1233, SRV-1234 | 0d |  | SAR-OFFICE (Sun-Thu 8h) |

| ID | WBS | Activity | Duration | Start | Finish | Predecessors | Total float | Free float | Calendar |
| --- | --- | --- | --- | --- | --- | --- | --- | --- | --- |
|  | 1.5.2 | **Design & Engineering (Concept / Preliminary / Detailed-IFC)** |  | 2026-11-18 | 2027-03-30 |  |  |  |  |
|  | 1.5.2.1 | **Concept Design** |  | 2026-11-18 | 2027-02-09 |  |  |  |  |
|  | 1.5.2.1.1 | **Concept - Design** |  | 2026-11-18 | 2026-11-24 |  |  |  |  |
| DSN-1305 |  | Concept design - basis of design, route, system architecture & sizing | 5d | 2026-11-18 | 2026-11-24 | MOB-1010 | 44d |  | SAR-OFFICE (Sun-Thu 8h) |
|  | 1.5.2.1.2 | **Concept - Submittal (Contractor)** |  | 2027-01-26 | 2027-01-26 |  |  |  |  |
| SUB-1305 |  | Concept design package + Survey Report - submit to SAR | 1d | 2027-01-26 | 2027-01-26 | DSN-1305, SRV-1230 | 0d |  | SAR-OFFICE (Sun-Thu 8h) |
|  | 1.5.2.1.3 | **Concept - SAR Approval** |  | 2027-01-27 | 2027-02-09 |  |  |  |  |
| APR-1305 |  | SAR review & approval - Concept design & Survey Report | 14d | 2027-01-27 | 2027-02-09 | SUB-1305 | 0d |  | SAR-7DAY (reviews & procurement 8h) |
|  | 1.5.2.2 | **Preliminary Design** |  | 2027-02-10 | 2027-03-02 |  |  |  |  |
|  | 1.5.2.2.1 | **Preliminary - Design** |  | 2027-02-10 | 2027-02-15 |  |  |  |  |
| DSN-1307 |  | Preliminary design - route & cable layout, power/shelter sizing, interfaces, quantity check | 4d | 2027-02-10 | 2027-02-15 | APR-1305 | 0d |  | SAR-OFFICE (Sun-Thu 8h) |
|  | 1.5.2.2.2 | **Preliminary - Submittal (Contractor)** |  | 2027-02-16 | 2027-02-16 |  |  |  |  |
| SUB-1307 |  | Preliminary design package - submit to SAR | 1d | 2027-02-16 | 2027-02-16 | DSN-1307 | 0d |  | SAR-OFFICE (Sun-Thu 8h) |
|  | 1.5.2.2.3 | **Preliminary - SAR Approval** |  | 2027-02-17 | 2027-03-02 |  |  |  |  |
| APR-1307 |  | SAR review & approval - Preliminary design | 14d | 2027-02-17 | 2027-03-02 | SUB-1307 | 0d |  | SAR-7DAY (reviews & procurement 8h) |
|  | 1.5.2.3 | **Detailed Design / IFC** |  | 2027-03-03 | 2027-03-30 |  |  |  |  |
|  | 1.5.2.3.1 | **Detailed / IFC - Design** |  | 2027-03-03 | 2027-03-15 |  |  |  |  |
| DSN-1310 |  | Detailed design - IFC drawings, specifications & calculations | 5d | 2027-03-03 | 2027-03-15 | APR-1307, MGT-1090 | 1d | 0d | SAR-OFFICE (Sun-Thu 8h) |
|  | 1.5.2.3.2 | **Detailed / IFC - Submittal (Contractor)** |  | 2027-03-16 | 2027-03-16 |  |  |  |  |
| DSN-1320 |  | IFC package QA check & submission to SAR | 1d | 2027-03-16 | 2027-03-16 | DSN-1310 | 1d | 0d | SAR-OFFICE (Sun-Thu 8h) |
|  | 1.5.2.3.3 | **Detailed / IFC - SAR Approval** |  | 2027-03-17 | 2027-03-30 |  |  |  |  |
| APR-1560 |  | SAR review & approval - IFC package (IFC approved) | 14d | 2027-03-17 | 2027-03-30 | DSN-1320 | 1d | 0d | SAR-7DAY (reviews & procurement 8h) |
|  | 1.5.3 | **Other Engineering Submittals (Contractor)** |  | 2026-12-10 | 2027-04-07 |  |  |  |  |
| SUB-1490 |  | FAT procedures & test plans (TDR, cables, weather, comms, UPS, cloud hardware) | 6d | 2026-12-10 | 2026-12-17 | APR-1540 | 80d | 0d | SAR-OFFICE (Sun-Thu 8h) |
| SUB-1480 |  | Interface Control Document - existing 1.5 km system & iSiteCentral | 8d | 2026-12-20 | 2026-12-29 | SRV-1210 | 173d | 0d | SAR-OFFICE (Sun-Thu 8h) |
| SUB-1470 |  | Cybersecurity (NCA ECC-1/CSCC-1/OTCC-1, SAR OT/ICS) & local-cloud architecture design package | 10d | 2027-02-10 | 2027-02-24 | SRV-1210, APR-1305 | 75d | 0d | SAR-OFFICE (Sun-Thu 8h) |
| SUB-1495 |  | SAT, commissioning & performance-validation procedures | 6d | 2027-03-31 | 2027-04-07 | APR-1560 | 115d | 0d | SAR-OFFICE (Sun-Thu 8h) |

| ID | WBS | Activity | Duration | Start | Finish | Predecessors | Total float | Free float | Constraint | Calendar |
| --- | --- | --- | --- | --- | --- | --- | --- | --- | --- | --- |
|  | 1.5.4 | **SAR Reviews & Approvals - Other Engineering** |  | 2026-12-18 | 2027-04-21 |  |  |  |  |  |
| APR-1660 |  | SAR review & approval - FAT procedures (SAR witness notice incl.) | 14d | 2026-12-18 | 2026-12-31 | SUB-1490 | 120d | 94d |  | SAR-7DAY (reviews & procurement 8h) |
| APR-1650 |  | SAR / system-owner review & approval - Interface Control Document | 14d | 2026-12-30 | 2027-01-12 | SUB-1480 | 256d |  |  | SAR-7DAY (reviews & procurement 8h) |
| APR-1620 |  | SAR IT/OT & cybersecurity review & approval - architecture design | 14d | 2027-02-25 | 2027-03-10 | SUB-1470 | 117d | 3d |  | SAR-7DAY (reviews & procurement 8h) |
| APR-1670 |  | SAR review & approval - SAT/commissioning procedures | 14d | 2027-04-08 | 2027-04-21 | SUB-1495 | 167d |  |  | SAR-7DAY (reviews & procurement 8h) |
|  | 1.6 | **PROCUREMENT (P)** |  | 2026-11-18 | 2027-06-14 |  |  |  |  |  |
|  | 1.6.1 | **Material Submittals (Contractor)** |  | 2026-11-18 | 2026-11-25 |  |  |  |  |  |
| SUB-1430 |  | Material submittal - DSS cable NZS-DSS-C02, 48-core FO cable, TDR coaxial cable | 5d | 2026-11-18 | 2026-11-24 | MOB-1010 | 60d | 0d |  | SAR-OFFICE (Sun-Thu 8h) |
| SUB-1440 |  | Material submittal - TDR system, weather station, comms modules/SIM, UPS & electrical panels, cloud hardware | 6d | 2026-11-18 | 2026-11-25 | MOB-1010 | 80d | 0d |  | SAR-OFFICE (Sun-Thu 8h) |
| SUB-1450 |  | Material submittal - FO closures, handholes/manholes, steel & rigid conduits, marker posts, sweet sand | 5d | 2026-11-18 | 2026-11-24 | MOB-1010 | 80d | 0d |  | SAR-OFFICE (Sun-Thu 8h) |
|  | 1.6.2 | **SAR Material Approvals** |  | 2026-11-25 | 2026-12-09 |  |  |  |  |  |
| APR-1530 |  | SAR review & approval - cable materials (DSS, FO, TDR coax) | 14d | 2026-11-25 | 2026-12-08 | SUB-1430 | 84d |  |  | SAR-7DAY (reviews & procurement 8h) |
| APR-1550 |  | SAR review & approval - civil materials (closures, handholes, conduits, markers, sand) | 14d | 2026-11-25 | 2026-12-08 | SUB-1450 | 119d | 84d |  | SAR-7DAY (reviews & procurement 8h) |
| APR-1540 |  | SAR review & approval - equipment materials (TDR, weather, comms, UPS/panels, cloud HW) | 14d | 2026-11-26 | 2026-12-09 | SUB-1440 | 119d | 0d |  | SAR-7DAY (reviews & procurement 8h) |
|  | 1.6.3 | **LONG-LEAD ITEMS (LL) - PO, Manufacture, FAT, Shipping, Customs & Delivery** |  | 2027-03-03 | 2027-06-14 |  |  |  |  |  |
|  | 1.6.3.1 | **LL-01 DSS cable NZS-DSS-C02** |  | 2027-03-03 | 2027-05-14 |  |  |  |  |  |
| PRC-DSS10 |  | [LL-01] Place PO & supplier kick-off - DSS cable NZS-DSS-C02 (5,500 LM) | 3d | 2027-03-03 | 2027-03-07 | APR-1530, SUD-1065, APR-1307 | 0d |  | start on or after 2027-02-16 | SAR-OFFICE (Sun-Thu 8h) |
| PRC-DSS20 |  | [LL-01] Manufacture / supply - DSS cable NZS-DSS-C02 (5,500 LM) | 49d | 2027-03-08 | 2027-04-25 | PRC-DSS10 | 5d | 0d |  | SAR-7DAY (reviews & procurement 8h) |
| FAT-DSS |  | [LL-01] FAT at manufacturer - DSS cable NZS-DSS-C02 (5,500 LM) | 2d | 2027-04-26 | 2027-04-27 | PRC-DSS20, APR-1660 | 5d | 0d |  | SAR-7DAY (reviews & procurement 8h) |
| PRC-DSS30 |  | [LL-01] Shipping / import - DSS cable NZS-DSS-C02 (5,500 LM) | 7d | 2027-04-28 | 2027-05-04 | FAT-DSS | 5d | 0d |  | SAR-7DAY (reviews & procurement 8h) |
| PRC-DSS40 |  | [LL-01] Customs clearance & SABER conformity - DSS cable NZS-DSS-C02 (5,500 LM) | 7d | 2027-05-05 | 2027-05-11 | PRC-DSS30 | 5d | 0d |  | SAR-7DAY (reviews & procurement 8h) |
| PRC-DSS50 |  | [LL-01] Delivery to site (Heet) - DSS cable NZS-DSS-C02 (5,500 LM) | 3d | 2027-05-12 | 2027-05-14 | PRC-DSS40 | 5d |  |  | SAR-7DAY (reviews & procurement 8h) |
|  | 1.6.3.2 | **LL-02 48-core FO cable (DAS)** |  | 2027-03-03 | 2027-05-07 |  |  |  |  |  |
| PRC-FO10 |  | [LL-02] Place PO & supplier kick-off - Outdoor 48-core FO cable - DAS (5,500 LM) | 3d | 2027-03-03 | 2027-03-07 | APR-1530, SUD-1065, APR-1307 | 12d | 0d | start on or after 2027-02-16 | SAR-OFFICE (Sun-Thu 8h) |
| PRC-FO20 |  | [LL-02] Manufacture / supply - Outdoor 48-core FO cable - DAS (5,500 LM) | 35d | 2027-03-08 | 2027-04-11 | PRC-FO10 | 22d | 0d |  | SAR-7DAY (reviews & procurement 8h) |
| FAT-FO |  | [LL-02] FAT at manufacturer - Outdoor 48-core FO cable - DAS (5,500 LM) | 2d | 2027-04-12 | 2027-04-13 | PRC-FO20, APR-1660 | 22d | 0d |  | SAR-7DAY (reviews & procurement 8h) |
| PRC-FO30 |  | [LL-02] Shipping / import - Outdoor 48-core FO cable - DAS (5,500 LM) | 14d | 2027-04-14 | 2027-04-27 | FAT-FO | 22d | 0d |  | SAR-7DAY (reviews & procurement 8h) |
| PRC-FO40 |  | [LL-02] Customs clearance & SABER conformity - Outdoor 48-core FO cable - DAS (5,500 LM) | 7d | 2027-04-28 | 2027-05-04 | PRC-FO30 | 22d | 0d |  | SAR-7DAY (reviews & procurement 8h) |
| PRC-FO50 |  | [LL-02] Delivery to site (Heet) - Outdoor 48-core FO cable - DAS (5,500 LM) | 3d | 2027-05-05 | 2027-05-07 | PRC-FO40 | 22d |  |  | SAR-7DAY (reviews & procurement 8h) |

| ID | WBS | Activity | Duration | Start | Finish | Predecessors | Total float | Free float | Constraint | Calendar |
| --- | --- | --- | --- | --- | --- | --- | --- | --- | --- | --- |
|  | 1.6.3.3 | **LL-03 TDR coaxial cable** |  | 2027-03-03 | 2027-04-30 |  |  |  |  |  |
| PRC-TDRC10 |  | [LL-03] Place PO & supplier kick-off - TDR coaxial cable (5,500 LM) | 3d | 2027-03-03 | 2027-03-07 | APR-1530, SUD-1065, APR-1307 | 25d | 0d | start on or after 2027-02-16 | SAR-OFFICE (Sun-Thu 8h) |
| PRC-TDRC20 |  | [LL-03] Manufacture / supply - TDR coaxial cable (5,500 LM) | 28d | 2027-03-08 | 2027-04-04 | PRC-TDRC10 | 40d | 0d |  | SAR-7DAY (reviews & procurement 8h) |
| FAT-TDRC |  | [LL-03] FAT at manufacturer - TDR coaxial cable (5,500 LM) | 2d | 2027-04-05 | 2027-04-06 | PRC-TDRC20, APR-1660 | 40d | 0d |  | SAR-7DAY (reviews & procurement 8h) |
| PRC-TDRC30 |  | [LL-03] Shipping / import - TDR coaxial cable (5,500 LM) | 14d | 2027-04-07 | 2027-04-20 | FAT-TDRC | 40d | 0d |  | SAR-7DAY (reviews & procurement 8h) |
| PRC-TDRC40 |  | [LL-03] Customs clearance & SABER conformity - TDR coaxial cable (5,500 LM) | 7d | 2027-04-21 | 2027-04-27 | PRC-TDRC30 | 40d | 0d |  | SAR-7DAY (reviews & procurement 8h) |
| PRC-TDRC50 |  | [LL-03] Delivery to site (Heet) - TDR coaxial cable (5,500 LM) | 3d | 2027-04-28 | 2027-04-30 | PRC-TDRC40 | 40d |  |  | SAR-7DAY (reviews & procurement 8h) |
|  | 1.6.3.4 | **LL-04 TDR system** |  | 2027-03-03 | 2027-06-14 |  |  |  |  |  |
| PRC-TDR10 |  | [LL-04] Place PO & supplier kick-off - TDR system (interrogator, antenna & accessories) | 3d | 2027-03-03 | 2027-03-07 | APR-1540, SUD-1065, APR-1307 | 56d | 0d | start on or after 2027-02-16 | SAR-OFFICE (Sun-Thu 8h) |
| PRC-TDR20 |  | [LL-04] Manufacture / supply - TDR system (interrogator, antenna & accessories) | 70d | 2027-03-08 | 2027-05-16 | PRC-TDR10 | 89d | 0d |  | SAR-7DAY (reviews & procurement 8h) |
| FAT-TDR |  | [LL-04] FAT at manufacturer - TDR system (interrogator, antenna & accessories) | 5d | 2027-05-17 | 2027-05-21 | PRC-TDR20, APR-1660 | 89d | 0d |  | SAR-7DAY (reviews & procurement 8h) |
| PRC-TDR30 |  | [LL-04] Shipping / import - TDR system (interrogator, antenna & accessories) | 14d | 2027-05-22 | 2027-06-04 | FAT-TDR | 89d | 0d |  | SAR-7DAY (reviews & procurement 8h) |
| PRC-TDR40 |  | [LL-04] Customs clearance & SABER conformity - TDR system (interrogator, antenna & accessories) | 7d | 2027-06-05 | 2027-06-11 | PRC-TDR30 | 89d | 0d |  | SAR-7DAY (reviews & procurement 8h) |
| PRC-TDR50 |  | [LL-04] Delivery to site (Heet) - TDR system (interrogator, antenna & accessories) | 3d | 2027-06-12 | 2027-06-14 | PRC-TDR40 | 89d | 0d |  | SAR-7DAY (reviews & procurement 8h) |
|  | 1.6.3.5 | **LL-05 Weather station sensors** |  | 2027-03-03 | 2027-05-07 |  |  |  |  |  |
| PRC-WX10 |  | [LL-05] Place PO & supplier kick-off - Weather station sensors | 3d | 2027-03-03 | 2027-03-07 | APR-1540, SUD-1065, APR-1307 | 86d | 0d | start on or after 2027-02-16 | SAR-OFFICE (Sun-Thu 8h) |
| PRC-WX20 |  | [LL-05] Manufacture / supply - Weather station sensors | 35d | 2027-03-08 | 2027-04-11 | PRC-WX10 | 130d | 0d |  | SAR-7DAY (reviews & procurement 8h) |
| FAT-WX |  | [LL-05] FAT at manufacturer - Weather station sensors | 2d | 2027-04-12 | 2027-04-13 | PRC-WX20, APR-1660 | 130d | 0d |  | SAR-7DAY (reviews & procurement 8h) |
| PRC-WX30 |  | [LL-05] Shipping / import - Weather station sensors | 14d | 2027-04-14 | 2027-04-27 | FAT-WX | 130d | 0d |  | SAR-7DAY (reviews & procurement 8h) |
| PRC-WX40 |  | [LL-05] Customs clearance & SABER conformity - Weather station sensors | 7d | 2027-04-28 | 2027-05-04 | PRC-WX30 | 130d | 0d |  | SAR-7DAY (reviews & procurement 8h) |
| PRC-WX50 |  | [LL-05] Delivery to site (Heet) - Weather station sensors | 3d | 2027-05-05 | 2027-05-07 | PRC-WX40 | 130d | 26d |  | SAR-7DAY (reviews & procurement 8h) |
|  | 1.6.3.6 | **LL-06 Communication modules & SIM** |  | 2027-03-03 | 2027-04-26 |  |  |  |  |  |
| PRC-COM10 |  | [LL-06] Place PO & supplier kick-off - Communication modules & SIM hardware | 3d | 2027-03-03 | 2027-03-07 | APR-1540, SUD-1065, APR-1307 | 94d | 0d | start on or after 2027-02-16 | SAR-OFFICE (Sun-Thu 8h) |
| PRC-COM20 |  | [LL-06] Manufacture / supply - Communication modules & SIM hardware | 28d | 2027-03-08 | 2027-04-04 | PRC-COM10 | 142d | 0d |  | SAR-7DAY (reviews & procurement 8h) |
| FAT-COM |  | [LL-06] FAT at manufacturer - Communication modules & SIM hardware | 2d | 2027-04-05 | 2027-04-06 | PRC-COM20, APR-1660 | 142d | 0d |  | SAR-7DAY (reviews & procurement 8h) |
| PRC-COM30 |  | [LL-06] Shipping / import - Communication modules & SIM hardware | 10d | 2027-04-07 | 2027-04-16 | FAT-COM | 142d | 0d |  | SAR-7DAY (reviews & procurement 8h) |
| PRC-COM40 |  | [LL-06] Customs clearance & SABER conformity - Communication modules & SIM hardware | 7d | 2027-04-17 | 2027-04-23 | PRC-COM30 | 142d | 0d |  | SAR-7DAY (reviews & procurement 8h) |
| PRC-COM50 |  | [LL-06] Delivery to site (Heet) - Communication modules & SIM hardware | 3d | 2027-04-24 | 2027-04-26 | PRC-COM40 | 142d | 37d |  | SAR-7DAY (reviews & procurement 8h) |

| ID | WBS | Activity | Duration | Start | Finish | Predecessors | Total float | Free float | Constraint | Calendar |
| --- | --- | --- | --- | --- | --- | --- | --- | --- | --- | --- |
|  | 1.6.3.7 | **LL-07 UPS & electrical panels** |  | 2027-03-03 | 2027-05-20 |  |  |  |  |  |
| PRC-PWR10 |  | [LL-07] Place PO & supplier kick-off - UPS (min. 4 h) & electrical panels | 3d | 2027-03-03 | 2027-03-07 | APR-1540, SUD-1065, APR-1307 | 65d | 0d | start on or after 2027-02-16 | SAR-OFFICE (Sun-Thu 8h) |
| PRC-PWR20 |  | [LL-07] Manufacture / supply - UPS (min. 4 h) & electrical panels | 56d | 2027-03-08 | 2027-05-02 | PRC-PWR10 | 101d | 0d |  | SAR-7DAY (reviews & procurement 8h) |
| FAT-PWR |  | [LL-07] FAT at manufacturer - UPS (min. 4 h) & electrical panels | 3d | 2027-05-03 | 2027-05-05 | PRC-PWR20, APR-1660 | 101d | 0d |  | SAR-7DAY (reviews & procurement 8h) |
| PRC-PWR30 |  | [LL-07] Shipping / import - UPS (min. 4 h) & electrical panels | 7d | 2027-05-06 | 2027-05-12 | FAT-PWR | 101d | 0d |  | SAR-7DAY (reviews & procurement 8h) |
| PRC-PWR40 |  | [LL-07] Customs clearance & SABER conformity - UPS (min. 4 h) & electrical panels | 5d | 2027-05-13 | 2027-05-17 | PRC-PWR30 | 101d | 0d |  | SAR-7DAY (reviews & procurement 8h) |
| PRC-PWR50 |  | [LL-07] Delivery to site (Heet) - UPS (min. 4 h) & electrical panels | 3d | 2027-05-18 | 2027-05-20 | PRC-PWR40 | 101d | 2d |  | SAR-7DAY (reviews & procurement 8h) |
|  | 1.6.3.8 | **LL-08 Local-cloud hardware (KSA)** |  | 2027-03-14 | 2027-05-06 |  |  |  |  |  |
| PRC-CLD10 |  | [LL-08] Place PO & supplier kick-off - Local-cloud hardware & licences (KSA hosted) | 3d | 2027-03-14 | 2027-03-16 | APR-1540, APR-1620, SUD-1065, APR-1307 | 78d | 0d | start on or after 2027-02-16 | SAR-OFFICE (Sun-Thu 8h) |
| PRC-CLD20 |  | [LL-08] Manufacture / supply - Local-cloud hardware & licences (KSA hosted) | 28d | 2027-03-17 | 2027-04-13 | PRC-CLD10 | 114d | 0d |  | SAR-7DAY (reviews & procurement 8h) |
| FAT-CLD |  | [LL-08] FAT at manufacturer - Local-cloud hardware & licences (KSA hosted) | 3d | 2027-04-14 | 2027-04-16 | PRC-CLD20, APR-1660 | 114d | 0d |  | SAR-7DAY (reviews & procurement 8h) |
| PRC-CLD30 |  | [LL-08] Shipping / import - Local-cloud hardware & licences (KSA hosted) | 10d | 2027-04-17 | 2027-04-26 | FAT-CLD | 114d | 0d |  | SAR-7DAY (reviews & procurement 8h) |
| PRC-CLD40 |  | [LL-08] Customs clearance & SABER conformity - Local-cloud hardware & licences (KSA hosted) | 7d | 2027-04-27 | 2027-05-03 | PRC-CLD30 | 114d | 0d |  | SAR-7DAY (reviews & procurement 8h) |
| PRC-CLD50 |  | [LL-08] Delivery to site (Heet) - Local-cloud hardware & licences (KSA hosted) | 3d | 2027-05-04 | 2027-05-06 | PRC-CLD40 | 114d | 2d |  | SAR-7DAY (reviews & procurement 8h) |
|  | 1.6.3.9 | **LL-09 FO closures & accessories** |  | 2027-03-03 | 2027-04-28 |  |  |  |  |  |
| PRC-CLS10 |  | [LL-09] Place PO & supplier kick-off - FO closures, splice trays, connectors & pigtails | 3d | 2027-03-03 | 2027-03-07 | APR-1550, SUD-1065, APR-1307 | 21d | 0d | start on or after 2027-02-16 | SAR-OFFICE (Sun-Thu 8h) |
| PRC-CLS20 |  | [LL-09] Manufacture / supply - FO closures, splice trays, connectors & pigtails | 28d | 2027-03-08 | 2027-04-04 | PRC-CLS10 | 35d | 0d |  | SAR-7DAY (reviews & procurement 8h) |
| PRC-CLS30 |  | [LL-09] Shipping / import - FO closures, splice trays, connectors & pigtails | 14d | 2027-04-05 | 2027-04-18 | PRC-CLS20 | 35d | 0d |  | SAR-7DAY (reviews & procurement 8h) |
| PRC-CLS40 |  | [LL-09] Customs clearance & SABER conformity - FO closures, splice trays, connectors & pigtails | 7d | 2027-04-19 | 2027-04-25 | PRC-CLS30 | 35d | 0d |  | SAR-7DAY (reviews & procurement 8h) |
| PRC-CLS50 |  | [LL-09] Delivery to site (Heet) - FO closures, splice trays, connectors & pigtails | 3d | 2027-04-26 | 2027-04-28 | PRC-CLS40 | 35d |  |  | SAR-7DAY (reviews & procurement 8h) |
|  | 1.6.4 | **Standard / Local Items - PO, Supply & Delivery (handholes, conduits, marker posts, sweet sand)** |  | 2027-03-03 | 2027-03-31 |  |  |  |  |  |
| PRC-CND10 |  | Place PO & supplier kick-off - Steel & rigid conduits | 3d | 2027-03-03 | 2027-03-07 | APR-1550, SUD-1065, APR-1307 | 30d | 0d | start on or after 2027-02-16 | SAR-OFFICE (Sun-Thu 8h) |
| PRC-HH10 |  | Place PO & supplier kick-off - Handholes & manholes (precast) | 3d | 2027-03-03 | 2027-03-07 | APR-1550, SUD-1065, APR-1307 | 25d | 0d | start on or after 2027-02-16 | SAR-OFFICE (Sun-Thu 8h) |
| PRC-MRK10 |  | Place PO & supplier kick-off - Marker posts, warning tape & route markers | 3d | 2027-03-03 | 2027-03-07 | APR-1550, SUD-1065, APR-1307 | 131d | 0d | start on or after 2027-02-16 | SAR-OFFICE (Sun-Thu 8h) |
| PRC-SND10 |  | Arrange sweet-sand source, approval & stockpile at site | 7d | 2027-03-03 | 2027-03-09 | APR-1550, APR-1307 | 47d | 46d | start on or after 2027-02-16 | SAR-7DAY (reviews & procurement 8h) |
| PRC-CND20 |  | Manufacture / supply - Steel & rigid conduits | 14d | 2027-03-08 | 2027-03-21 | PRC-CND10 | 48d | 0d |  | SAR-7DAY (reviews & procurement 8h) |
| PRC-HH20 |  | Manufacture / supply - Handholes & manholes (precast) | 21d | 2027-03-08 | 2027-03-28 | PRC-HH10 | 41d | 0d |  | SAR-7DAY (reviews & procurement 8h) |
| PRC-MRK20 |  | Manufacture / supply - Marker posts, warning tape & route markers | 14d | 2027-03-08 | 2027-03-21 | PRC-MRK10 | 194d | 0d |  | SAR-7DAY (reviews & procurement 8h) |
| PRC-CND50 |  | Delivery to site (Heet) - Steel & rigid conduits | 3d | 2027-03-22 | 2027-03-24 | PRC-CND20 | 48d | 47d |  | SAR-7DAY (reviews & procurement 8h) |
| PRC-MRK50 |  | Delivery to site (Heet) - Marker posts, warning tape & route markers | 3d | 2027-03-22 | 2027-03-24 | PRC-MRK20 | 194d | 84d |  | SAR-7DAY (reviews & procurement 8h) |
| PRC-HH50 |  | Delivery to site (Heet) - Handholes & manholes (precast) | 3d | 2027-03-29 | 2027-03-31 | PRC-HH20 | 41d | 40d |  | SAR-7DAY (reviews & procurement 8h) |

| ID | WBS | Activity | Duration | Start | Finish | Predecessors | Total float | Free float |
| --- | --- | --- | --- | --- | --- | --- | --- | --- |
|  | 1.7 | **CONSTRUCTION (C)** |  | 2027-04-25 | 2027-10-05 |  |  |  |
|  | 1.7.2 | **Enabling Works by Section (SoW 7): Civil, Cables, Splicing & Testing - risk-ranked** |  | 2027-04-25 | 2027-09-21 |  |  |  |
|  | 1.7.2.1 | **Section 1 (KP 0+000 to 1+100) - Civil Works, Cables Installation, Splicing & Testing** |  | 2027-04-25 | 2027-06-17 |  |  |  |
| CIV-110 |  | Section 1 - excavate trench (800x200 mm) & sweet-sand bedding, 1,100 LM | 12d | 2027-04-25 | 2027-05-10 | MOB-3010, PRC-SND10, MGT-1090 | 1d | 0d |
| CIV-120 |  | Section 1 - handholes / manholes installation | 2d | 2027-05-11 | 2027-05-12 | CIV-110, PRC-HH50 | 1d |  |
| CIV-130 |  | Section 1 - steel & rigid conduits at culverts / track crossings | 2d | 2027-05-11 | 2027-05-12 | CIV-110, PRC-CND50, PRM-2120 | 1d |  |
| CAB-110 |  | Section 1 - Layer 1: lay DSS cable, pre-installed connectors, OTDR test | 4d | 2027-05-20 | 2027-05-25 | CIV-120, CIV-130, PRC-DSS50 | 0d |  |
| CAB-120 |  | Section 1 - backfill & compaction - layer 1 | 2d | 2027-05-26 | 2027-05-27 | CAB-110 | 0d |  |
| CAB-130 |  | Section 1 - Layer 2: pull 48-core FO cable (DAS), OTDR test | 4d | 2027-05-30 | 2027-06-02 | CAB-120, PRC-FO50 | 0d |  |
| SPL-110 |  | Section 1 - fusion splicing (<=0.1 dB), FO closures & OTDR splice-loss test | 3d | 2027-06-03 | 2027-06-07 | CAB-130, PRC-CLS50 | 0d |  |
| CAB-140 |  | Section 1 - backfill & compaction - layer 2 | 2d | 2027-06-08 | 2027-06-09 | SPL-110 | 0d |  |
| CAB-150 |  | Section 1 - Layer 3: lay TDR coaxial cable, continuity test | 3d | 2027-06-10 | 2027-06-14 | CAB-140, PRC-TDRC50 | 0d |  |
| CAB-160 |  | Section 1 - final backfill, compaction & reinstatement | 2d | 2027-06-15 | 2027-06-16 | CAB-150 | 0d |  |
| CIV-140 |  | Section 1 - marker posts, warning tape & route markers | 1d | 2027-06-17 | 2027-06-17 | CAB-160, PRC-MRK50 | 77d |  |
| TST-110 |  | Section 1 - final OTDR certification & test record | 1d | 2027-06-17 | 2027-06-17 | CAB-160 | 75d | 68d |
|  | 1.7.2.2 | **Section 2 (KP 1+100 to 2+200) - Civil Works, Cables Installation, Splicing & Testing** |  | 2027-05-11 | 2027-07-04 |  |  |  |
| CIV-210 |  | Section 2 - excavate trench (800x200 mm) & sweet-sand bedding, 1,100 LM | 12d | 2027-05-11 | 2027-06-01 | CIV-110 | 19d | 0d |
| CIV-220 |  | Section 2 - handholes / manholes installation | 2d | 2027-06-02 | 2027-06-03 | CIV-210, PRC-HH50 | 19d | 0d |
| CIV-230 |  | Section 2 - steel & rigid conduits at culverts / track crossings | 2d | 2027-06-02 | 2027-06-03 | CIV-210, PRC-CND50, PRM-2120 | 19d | 0d |
| CAB-210 |  | Section 2 - Layer 1: lay DSS cable, pre-installed connectors, OTDR test | 4d | 2027-06-06 | 2027-06-09 | CIV-220, CIV-230, PRC-DSS50, CAB-110 | 19d | 0d |
| CAB-220 |  | Section 2 - backfill & compaction - layer 1 | 2d | 2027-06-10 | 2027-06-13 | CAB-210 | 19d | 0d |
| CAB-230 |  | Section 2 - Layer 2: pull 48-core FO cable (DAS), OTDR test | 4d | 2027-06-14 | 2027-06-17 | CAB-220, PRC-FO50, CAB-130 | 19d | 0d |
| SPL-210 |  | Section 2 - fusion splicing (<=0.1 dB), FO closures & OTDR splice-loss test | 3d | 2027-06-20 | 2027-06-22 | CAB-230, PRC-CLS50 | 19d | 0d |
| CAB-240 |  | Section 2 - backfill & compaction - layer 2 | 2d | 2027-06-23 | 2027-06-24 | SPL-210 | 19d | 0d |
| CAB-250 |  | Section 2 - Layer 3: lay TDR coaxial cable, continuity test | 3d | 2027-06-27 | 2027-06-29 | CAB-240, PRC-TDRC50, CAB-150 | 19d | 0d |
| CAB-260 |  | Section 2 - final backfill, compaction & reinstatement | 2d | 2027-06-30 | 2027-07-01 | CAB-250 | 19d | 0d |
| CIV-240 |  | Section 2 - marker posts, warning tape & route markers | 1d | 2027-07-04 | 2027-07-04 | CAB-260, PRC-MRK50 | 66d |  |
| TST-210 |  | Section 2 - final OTDR certification & test record | 1d | 2027-07-04 | 2027-07-04 | CAB-260 | 64d | 57d |

| ID | WBS | Activity | Duration | Start | Finish | Predecessors | Total float | Free float |
| --- | --- | --- | --- | --- | --- | --- | --- | --- |
|  | 1.7.2.3 | **Section 3 (KP 2+200 to 3+300) - Civil Works, Cables Installation, Splicing & Testing** |  | 2027-06-17 | 2027-08-04 |  |  |  |
| CIV-310 |  | Section 3 - excavate trench (800x200 mm) & sweet-sand bedding, 1,100 LM | 12d | 2027-06-17 | 2027-07-04 | CIV-110, CAB-160 | 0d |  |
| CIV-320 |  | Section 3 - handholes / manholes installation | 2d | 2027-07-05 | 2027-07-06 | CIV-310, PRC-HH50 | 0d |  |
| CIV-330 |  | Section 3 - steel & rigid conduits at culverts / track crossings | 2d | 2027-07-05 | 2027-07-06 | CIV-310, PRC-CND50, PRM-2120 | 0d |  |
| CAB-310 |  | Section 3 - Layer 1: lay DSS cable, pre-installed connectors, OTDR test | 4d | 2027-07-07 | 2027-07-12 | CIV-320, CIV-330, PRC-DSS50, CAB-210 | 0d |  |
| CAB-320 |  | Section 3 - backfill & compaction - layer 1 | 2d | 2027-07-13 | 2027-07-14 | CAB-310 | 0d |  |
| CAB-330 |  | Section 3 - Layer 2: pull 48-core FO cable (DAS), OTDR test | 4d | 2027-07-15 | 2027-07-20 | CAB-320, PRC-FO50, CAB-230 | 0d |  |
| SPL-310 |  | Section 3 - fusion splicing (<=0.1 dB), FO closures & OTDR splice-loss test | 3d | 2027-07-21 | 2027-07-25 | CAB-330, PRC-CLS50 | 0d |  |
| CAB-340 |  | Section 3 - backfill & compaction - layer 2 | 2d | 2027-07-26 | 2027-07-27 | SPL-310 | 0d |  |
| CAB-350 |  | Section 3 - Layer 3: lay TDR coaxial cable, continuity test | 3d | 2027-07-28 | 2027-08-01 | CAB-340, PRC-TDRC50, CAB-250 | 0d |  |
| CAB-360 |  | Section 3 - final backfill, compaction & reinstatement | 2d | 2027-08-02 | 2027-08-03 | CAB-350 | 0d |  |
| CIV-340 |  | Section 3 - marker posts, warning tape & route markers | 1d | 2027-08-04 | 2027-08-04 | CAB-360, PRC-MRK50 | 43d |  |
| TST-310 |  | Section 3 - final OTDR certification & test record | 1d | 2027-08-04 | 2027-08-04 | CAB-360 | 41d | 34d |
|  | 1.7.2.4 | **Section 4 (KP 3+300 to 4+400) - Civil Works, Cables Installation, Splicing & Testing** |  | 2027-07-04 | 2027-08-19 |  |  |  |
| CIV-410 |  | Section 4 - excavate trench (800x200 mm) & sweet-sand bedding, 1,100 LM | 12d | 2027-07-04 | 2027-07-19 | CIV-210, CAB-260 | 19d | 0d |
| CIV-420 |  | Section 4 - handholes / manholes installation | 2d | 2027-07-20 | 2027-07-21 | CIV-410, PRC-HH50 | 19d | 0d |
| CIV-430 |  | Section 4 - steel & rigid conduits at culverts / track crossings | 2d | 2027-07-20 | 2027-07-21 | CIV-410, PRC-CND50, PRM-2120 | 19d | 0d |
| CAB-410 |  | Section 4 - Layer 1: lay DSS cable, pre-installed connectors, OTDR test | 4d | 2027-07-22 | 2027-07-27 | CIV-420, CIV-430, PRC-DSS50, CAB-310 | 19d | 0d |
| CAB-420 |  | Section 4 - backfill & compaction - layer 1 | 2d | 2027-07-28 | 2027-07-29 | CAB-410 | 19d | 0d |
| CAB-430 |  | Section 4 - Layer 2: pull 48-core FO cable (DAS), OTDR test | 4d | 2027-08-01 | 2027-08-04 | CAB-420, PRC-FO50, CAB-330 | 19d | 0d |
| SPL-410 |  | Section 4 - fusion splicing (<=0.1 dB), FO closures & OTDR splice-loss test | 3d | 2027-08-05 | 2027-08-09 | CAB-430, PRC-CLS50 | 20d | 0d |
| CAB-440 |  | Section 4 - backfill & compaction - layer 2 | 2d | 2027-08-10 | 2027-08-11 | SPL-410 | 20d | 0d |
| CAB-450 |  | Section 4 - Layer 3: lay TDR coaxial cable, continuity test | 3d | 2027-08-12 | 2027-08-16 | CAB-440, PRC-TDRC50, CAB-350 | 20d | 0d |
| CAB-460 |  | Section 4 - final backfill, compaction & reinstatement | 2d | 2027-08-17 | 2027-08-18 | CAB-450 | 30d | 0d |
| CIV-440 |  | Section 4 - marker posts, warning tape & route markers | 1d | 2027-08-19 | 2027-08-19 | CAB-460, PRC-MRK50 | 32d |  |
| TST-410 |  | Section 4 - final OTDR certification & test record | 1d | 2027-08-19 | 2027-08-19 | CAB-460 | 30d | 23d |

| ID | WBS | Activity | Duration | Start | Finish | Predecessors | Total float | Free float | Calendar |
| --- | --- | --- | --- | --- | --- | --- | --- | --- | --- |
|  | 1.7.2.5 | **Section 5 (KP 4+400 to 5+500) - Civil Works, Cables Installation, Splicing & Testing** |  | 2027-08-04 | 2027-09-21 |  |  |  |  |
| CIV-510 |  | Section 5 - excavate trench (800x200 mm) & sweet-sand bedding, 1,100 LM | 12d | 2027-08-04 | 2027-08-19 | CIV-310, CAB-360 | 0d |  |  |
| CIV-520 |  | Section 5 - handholes / manholes installation | 2d | 2027-08-22 | 2027-08-23 | CIV-510, PRC-HH50 | 0d |  |  |
| CIV-530 |  | Section 5 - steel & rigid conduits at culverts / track crossings | 2d | 2027-08-22 | 2027-08-23 | CIV-510, PRC-CND50, PRM-2120 | 0d |  |  |
| CAB-510 |  | Section 5 - Layer 1: lay DSS cable, pre-installed connectors, OTDR test | 4d | 2027-08-24 | 2027-08-29 | CIV-520, CIV-530, PRC-DSS50, CAB-410 | 0d |  |  |
| CAB-520 |  | Section 5 - backfill & compaction - layer 1 | 2d | 2027-08-30 | 2027-08-31 | CAB-510 | 0d |  |  |
| CAB-530 |  | Section 5 - Layer 2: pull 48-core FO cable (DAS), OTDR test | 4d | 2027-09-01 | 2027-09-06 | CAB-520, PRC-FO50, CAB-430 | 0d |  |  |
| SPL-510 |  | Section 5 - fusion splicing (<=0.1 dB), FO closures & OTDR splice-loss test | 3d | 2027-09-07 | 2027-09-09 | CAB-530, PRC-CLS50 | 0d |  |  |
| CAB-540 |  | Section 5 - backfill & compaction - layer 2 | 2d | 2027-09-12 | 2027-09-13 | SPL-510 | 0d |  |  |
| CAB-550 |  | Section 5 - Layer 3: lay TDR coaxial cable, continuity test | 3d | 2027-09-14 | 2027-09-16 | CAB-540, PRC-TDRC50, CAB-450 | 0d |  |  |
| CAB-560 |  | Section 5 - final backfill, compaction & reinstatement | 2d | 2027-09-19 | 2027-09-20 | CAB-550 | 7d | 0d |  |
| CIV-540 |  | Section 5 - marker posts, warning tape & route markers | 1d | 2027-09-21 | 2027-09-21 | CAB-560, PRC-MRK50 | 9d |  |  |
| TST-510 |  | Section 5 - final OTDR certification & test record | 1d | 2027-09-21 | 2027-09-21 | CAB-560 | 7d | 0d |  |
|  | 1.7.3 | **Station Power, Shelter & Field Systems (TDR, Weather, Comms)** |  | 2027-04-25 | 2027-09-22 |  |  |  |  |
| SHL-3410 |  | Shelter expansion - civil works (if required per assessment) | 8d | 2027-04-25 | 2027-05-04 | PRM-2120, APR-1560, MOB-3010 | 79d | 8d |  |
| PWR-3420 |  | Electrical installation - panels & power upgrade | 6d | 2027-05-23 | 2027-05-30 | SHL-3410, PRC-PWR50 | 71d | 0d |  |
| PWR-3430 |  | UPS installation & 4-hour autonomy test | 3d | 2027-05-31 | 2027-06-02 | PWR-3420 | 71d | 0d |  |
| COM-3710 |  | Communication modules installation | 2d | 2027-06-03 | 2027-06-06 | PRC-COM50, PWR-3430 | 75d | 0d |  |
| WX-3610 |  | Weather station sensors installation | 3d | 2027-06-03 | 2027-06-07 | PRC-WX50, PWR-3430 | 74d | 0d |  |
| COM-3720 |  | SIM activation, alert & e-mail distribution configuration | 3d | 2027-06-07 | 2027-06-09 | COM-3710 | 75d |  |  |
| WX-3620 |  | Weather station integration with data logger | 3d | 2027-06-08 | 2027-06-10 | WX-3610 | 74d |  |  |
| TDR-3510 |  | TDR system installation - interrogator & antenna | 5d | 2027-06-15 | 2027-06-21 | PRC-TDR50, PWR-3430 | 63d |  |  |
| TDR-3520 |  | TDR configuration, calibration & pre-commissioning | 4d | 2027-09-19 | 2027-09-22 | TDR-3510, CAB-550 | 0d |  |  |
|  | 1.7.4 | **Local Cloud, Cybersecurity & Integration Installation** |  | 2027-05-09 | 2027-10-05 |  |  |  |  |
| CLD-3810 |  | Local KSA cloud infrastructure - provisioning & set-up | 8d | 2027-05-09 | 2027-05-24 | PRC-CLD50, APR-1620 | 76d | 0d | SAR-OFFICE (Sun-Thu 8h) |
| CLD-3820 |  | Local KSA cloud infrastructure - hardening & connectivity | 8d | 2027-05-25 | 2027-06-03 | CLD-3810 | 78d | 2d | SAR-OFFICE (Sun-Thu 8h) |
| CYB-3920 |  | Cybersecurity controls implementation & hardening | 10d | 2027-05-25 | 2027-06-07 | CLD-3810, APR-1620 | 76d | 0d | SAR-OFFICE (Sun-Thu 8h) |
| INT-4010 |  | Integration with existing system & iSiteCentral - interfaces & data mapping | 8d | 2027-09-26 | 2027-10-05 | CLD-3820, APR-1650, TDR-3520, COM-3720, WX-3620 | 0d |  | SAR-OFFICE (Sun-Thu 8h) |

| ID | WBS | Activity | Duration | Start | Finish | Predecessors | Total float | Free float | Calendar |
| --- | --- | --- | --- | --- | --- | --- | --- | --- | --- |
|  | 1.8 | **TESTING, COMMISSIONING & HANDOVER (TC)** |  | 2027-06-08 | 2027-11-15 |  |  |  |  |
|  | 1.8.1 | **Testing & Site Acceptance (OTDR, SAT, Integration, Cyber Audit)** |  | 2027-06-08 | 2027-10-12 |  |  |  |  |
| CYB-3930 |  | Third-party cybersecurity audit | 10d | 2027-06-08 | 2027-06-21 | CYB-3920, CLD-3820 | 76d | 0d | SAR-OFFICE (Sun-Thu 8h) |
| CYB-3940 |  | Audit findings closure & verification | 4d | 2027-06-22 | 2027-06-27 | CYB-3930 | 76d |  | SAR-OFFICE (Sun-Thu 8h) |
| TST-4110 |  | Full-route OTDR certification report & as-installed test records | 2d | 2027-09-22 | 2027-09-26 | TST-110, TST-210, TST-310, TST-410, TST-510 | 7d |  | SAR-OFFICE (Sun-Thu 8h) |
| INT-4020 |  | End-to-end integration test with existing system & iSiteCentral (part of SAT) | 5d | 2027-10-06 | 2027-10-12 | MS-070, INT-4010 | 0d |  | SAR-OFFICE (Sun-Thu 8h) |
| TST-4210 |  | SAT - site acceptance tests (sensors, power, communications, operational) | 5d | 2027-10-06 | 2027-10-12 | TST-4110, APR-1670, MS-070 | 0d |  |  |
|  | 1.8.2 | **Commissioning & Performance Validation** |  | 2027-10-13 | 2027-11-02 |  |  |  |  |
| CMS-4310 |  | System commissioning & calibration - DAS, DSS, TDR & weather station | 5d | 2027-10-13 | 2027-10-19 | TST-4210, INT-4020, CYB-3940 | 0d |  |  |
| CMS-4320 |  | Trial operation - baseline data collection & performance validation | 10d | 2027-10-20 | 2027-11-02 | CMS-4310 | 2d | 0d | SAR-OFFICE (Sun-Thu 8h) |
|  | 1.8.3 | **Documentation & Training** |  | 2027-10-20 | 2027-11-10 |  |  |  |  |
| DOC-5020 |  | As-built drawings (3 sets, hard + soft) - final revision after SAT | 6d | 2027-10-20 | 2027-10-27 | CMS-4310 | 0d |  | SAR-OFFICE (Sun-Thu 8h) |
| DOC-5030 |  | O&M manuals (3 sets) - final revision | 6d | 2027-10-20 | 2027-10-27 | CMS-4310 | 0d |  | SAR-OFFICE (Sun-Thu 8h) |
| DOC-5040 |  | User training for SAR staff (5 days) | 5d | 2027-10-20 | 2027-10-26 | CMS-4310 | 8d | 5d | SAR-OFFICE (Sun-Thu 8h) |
| DOC-5010 |  | Technical reports - TDR, DAS (seismic), DSS strain, weather data & alerts | 6d | 2027-11-03 | 2027-11-10 | MS-100 | 2d |  | SAR-OFFICE (Sun-Thu 8h) |
|  | 1.8.4 | **Handover Submittals (Contractor)** |  | 2027-10-28 | 2027-10-31 |  |  |  |  |
| DOC-5050 |  | Handover dossier - as-builts, O&M manuals, QA/QC, material test & HSE records - compile & submit | 2d | 2027-10-28 | 2027-10-31 | DOC-5020, DOC-5030 | 0d |  | SAR-OFFICE (Sun-Thu 8h) |
|  | 1.8.5 | **SAR Acceptance & Formal Handover** |  | 2027-11-01 | 2027-11-15 |  |  |  |  |
| APR-5060 |  | SAR review & acceptance of handover dossier (as-builts, O&M, reports) | 14d | 2027-11-01 | 2027-11-14 | DOC-5050 | 0d |  | SAR-7DAY (reviews & procurement 8h) |
| HND-5090 |  | Formal handover & Taking-Over certificate (SAR) | 1d | 2027-11-15 | 2027-11-15 | APR-5060, DEM-5100, DOC-5010 | 0d |  | SAR-OFFICE (Sun-Thu 8h) |
