# Extension of the Existing Rail Monitoring System in HEET

Schedule from Primavera P6, 2026-11-16 to 2027-11-15, data date 2026-11-16, costs in USD.
Must finish by 2027-11-15

## Calendars

- SAR-FIELD (Sun-Thu 8h): Mon-Thu 08:00-16:00; Fri-Sat off; Sun 08:00-16:00. Exceptions (off unless hours are given): 2027-02-22, 2027-03-08 to 2027-03-11, 2027-05-16 to 2027-05-19, 2027-09-23.
- SAR-7DAY (reviews & procurement 8h): Mon-Sun 08:00-16:00.
- SAR-OFFICE (Sun-Thu 8h): Mon-Thu 08:00-16:00; Fri-Sat off; Sun 08:00-16:00. Exceptions (off unless hours are given): 2027-02-22, 2027-03-08 to 2027-03-11, 2027-05-16 to 2027-05-19, 2027-09-23.

## Resources

| Resource | Group | Rate |
| --- | --- | --- |
| Cost Distribution | material | 1 |
| Protection Officer | labor |  |
| Civil Crew | labor |  |
| Systems Engineers | labor |  |
| Survey Crew | labor |  |
| Design Engineers | labor |  |
| Trench Crew | labor |  |
| Cable Crew | labor |  |
| Splicing & OTDR Team | labor |  |
| Electrical Crew | labor |  |
| Commissioning Team | labor |  |
| IT/OT Engineers | labor |  |
| Document Control / Tech Writers | labor |  |
| QA/QC & HSE Engineer | labor |  |

## Schedule

| ID | WBS | Activity | Type | Duration | Start | Finish | Predecessors | Total float | Free float | Constraint | Calendar | Resources | Cost | Design Stage | BoQ Section | EPC Phase | SoW Stage | Activity Category | Responsible | Section | System | BoQ Item | Basis | Risk Rank | Long Lead | LL No. | BoQ Mapping |
| --- | --- | --- | --- | --- | --- | --- | --- | --- | --- | --- | --- | --- | --- | --- | --- | --- | --- | --- | --- | --- | --- | --- | --- | --- | --- | --- | --- |
|  | 1.1 | **Project Milestones** |  |  | 2026-11-16 | 2027-11-15 |  |  |  |  |  |  |  |  |  |  |  |  |  |  |  |  |  |  |  |  |  |
| MS-001 |  | NTP - Notice to Proceed (16-Nov-2026; re-base if the actual NTP differs) | milestone | 0d | 2026-11-16 | 2026-11-16 |  | 0d |  | start on or after 2026-11-16 | SAR-OFFICE (Sun-Thu 8h) |  |  | - | - | PM - Project Managem | 1 - Mobilization & D | Milestone | Contractor | All | General | - | Planned (contractor) | - | N | - |  |
| MS-010 |  | Stage 1 complete - mobilization done, IFC approved & submittals issued | milestone | 0d | 2027-03-30 | 2027-03-30 | SUD-1010, SUD-1020, SUD-1035, MOB-1040, APR-1560, APR-1510, APR-1520, APR-1530, APR-1540, APR-1550 | 130d |  |  | SAR-OFFICE (Sun-Thu 8h) |  |  | - | - | PM - Project Managem | 2 - Procurement & Co | Milestone | Contractor | All | General | - | Planned (contractor) | - | N | - |  |
| MS-070 |  | Stage 2 complete - procurement, construction & installation complete | milestone | 0d | 2027-10-05 | 2027-10-05 | CIV-540, TDR-3520, WX-3620, COM-3720, CLD-3820, INT-4010, PWR-3430, MS-010, TST-4110, CIV-140, CIV-240, CIV-340, CIV-440 | 0d |  |  | SAR-OFFICE (Sun-Thu 8h) |  |  | - | - | PM - Project Managem | 3 - Testing & Commis | Milestone | Contractor | All | General | - | Planned (contractor) | - | N | - |  |
| MS-100 |  | Stage 3 complete - commissioning & performance validation complete | milestone | 0d | 2027-11-02 | 2027-11-02 | CMS-4320 | 2d | 0d |  | SAR-OFFICE (Sun-Thu 8h) |  |  | - | - | PM - Project Managem | 4 - Documentation & | Milestone | Contractor | All | General | - | Planned (contractor) | - | N | - |  |
| MS-120 |  | Taking-Over - planned completion (contract limit 15-Nov-2027 = NTP + 12 months) | milestone | 0d | 2027-11-15 | 2027-11-15 | HND-5090 | 0d |  |  | SAR-OFFICE (Sun-Thu 8h) |  |  | - | - | PM - Project Managem | 4 - Documentation & | Milestone | Contractor | All | General | - | Planned (contractor) | - | N | - |  |
| MS-130 |  | DLP Start - 12-month defects liability period begins at Taking-Over (BoQ item 29; no activity, no cost) | milestone | 0d | 2027-11-15 | 2027-11-15 | MS-120 | 0d |  |  | SAR-OFFICE (Sun-Thu 8h) |  |  | - | F - Documentation, T | PM - Project Managem | 4 - Documentation & | Milestone | Contractor | All | General | 29 | Planned (contractor) | - | N | - | Item 29: 100.0% = 0.00 |
|  | 1.2 | **PRELIMINARIES & GENERAL REQUIREMENTS** |  |  | 2026-11-16 | 2027-11-15 |  |  |  |  |  |  |  |  |  |  |  |  |  |  |  |  |  |  |  |  |  |
| MGT-1060 |  | Project management, QA/QC & HSE supervision and records (LOE) | level of effort | 251d | 2026-11-16 | 2027-11-15 | MOB-1010 SS, HND-5090 FF | 0d |  |  | SAR-OFFICE (Sun-Thu 8h) | Cost Distribution [3835]; QA/QC & HSE Engineer [2008 h] | 3,835 | - | F - Documentation, T | PM - Project Managem | 1 - Mobilization & D | Management | Contractor | All | General | 26 | Planned (contractor) | - | N | - | Item 26: 50.0% = 3,835.00 |
| MOB-1010 |  | Kick-off meeting & project management set-up |  | 2d | 2026-11-16 | 2026-11-17 | MS-001 | 0d |  |  | SAR-OFFICE (Sun-Thu 8h) |  |  | - | - | PM - Project Managem | 1 - Mobilization & D | Management | Contractor | All | General | - | Planned (contractor) | - | N | - |  |
| MGT-1090 |  | Obtain SAR risk scores & confirm Section priority (SAR input) |  | 3d | 2026-11-18 | 2026-11-22 | MOB-1010 | 72d | 71d |  | SAR-OFFICE (Sun-Thu 8h) |  |  | - | - | PM - Project Managem | 1 - Mobilization & D | Management | SAR | All | General | - | Planned (contractor) | - | N | - |  |
| MOB-1020 |  | Insurance (CAR / TPL) & performance bond issuance |  | 4d | 2026-11-18 | 2026-11-23 | MOB-1010 | 0d |  |  | SAR-OFFICE (Sun-Thu 8h) | Cost Distribution [188800] | 188,800 | - | A - Preliminaries & | PM - Project Managem | 1 - Mobilization & D | Management | Contractor | All | General | 04 | Planned (contractor) | - | N | - | Item 04: 80.0% = 188,800.00 |
| MOB-1030 |  | PTS training & PO induction - batch 1 (initial team) |  | 3d | 2026-11-18 | 2026-11-22 | MOB-1010 | 2d |  |  | SAR-OFFICE (Sun-Thu 8h) | Protection Officer [24 h] |  | - | - | PM - Project Managem | 1 - Mobilization & D | Management | Contractor | All | General | - | Planned (contractor) | - | N | - |  |
| MOB-1050 |  | Site security, fencing & traffic management - mobilization & design period (LOE) | level of effort | 90d | 2026-12-13 | 2027-04-22 | MOB-1040 SS, MOB-3010 FF | 0d |  |  |  | Cost Distribution [40356] | 40,356 | - | A - Preliminaries & | PM - Project Managem | 1 - Mobilization & D | Management | Contractor | All | General | 02 | Planned (contractor) | - | N | - | Item 02: 10.0% = 40,356.00 |
| MOB-1080 |  | Protection Officer on site - mobilization & design period (LOE) | level of effort | 90d | 2026-12-13 | 2027-04-22 | MOB-1040 SS, MOB-3010 FF | 0d |  |  |  | Cost Distribution [5664]; Protection Officer [720 h] | 5,664 | - | A - Preliminaries & | PM - Project Managem | 1 - Mobilization & D | Management | Contractor | All | General | 03 | Planned (contractor) | - | N | - | Item 03: 10.0% = 5,664.00 |
| MOB-3005 |  | PTS training & PO induction - batch 2 (field crews) |  | 3d | 2026-12-14 | 2026-12-16 | APR-1520 | 82d | 81d |  | SAR-OFFICE (Sun-Thu 8h) | Protection Officer [24 h] |  | - | - | PM - Project Managem | 1 - Mobilization & D | Management | Contractor | All | General | - | Planned (contractor) | - | N | - |  |
| MOB-1051 |  | Site security, fencing & traffic management - construction period (LOE) | level of effort | 103d | 2027-04-25 | 2027-09-20 | CIV-110 SS, CAB-560 FF | 0d |  |  |  | Cost Distribution [302670] | 302,670 | - | A - Preliminaries & | PM - Project Managem | 2 - Procurement & Co | Management | Contractor | All | General | 02 | Planned (contractor) | - | N | - | Item 02: 75.0% = 302,670.00 |
| MOB-1081 |  | Protection Officer on site - construction period (LOE) | level of effort | 103d | 2027-04-25 | 2027-09-20 | CIV-110 SS, CAB-560 FF | 0d |  |  |  | Cost Distribution [42480]; Protection Officer [824 h] | 42,480 | - | A - Preliminaries & | PM - Project Managem | 2 - Procurement & Co | Management | Contractor | All | General | 03 | Planned (contractor) | - | N | - | Item 03: 75.0% = 42,480.00 |
| MOB-1052 |  | Site security, fencing & traffic management - testing & commissioning period (LOE) | level of effort | 20d | 2027-10-06 | 2027-11-02 | TST-4210 SS, CMS-4320 FF | 0d |  |  |  | Cost Distribution [40356] | 40,356 | - | A - Preliminaries & | PM - Project Managem | 3 - Testing & Commis | Management | Contractor | All | General | 02 | Planned (contractor) | - | N | - | Item 02: 10.0% = 40,356.00 |
| MOB-1082 |  | Protection Officer on site - testing & commissioning period (LOE) | level of effort | 20d | 2027-10-06 | 2027-11-02 | TST-4210 SS, CMS-4320 FF | 0d |  |  |  | Cost Distribution [5664]; Protection Officer [160 h] | 5,664 | - | A - Preliminaries & | PM - Project Managem | 3 - Testing & Commis | Management | Contractor | All | General | 03 | Planned (contractor) | - | N | - | Item 03: 10.0% = 5,664.00 |
| MOB-1053 |  | Site security, fencing & traffic management - handover period (LOE) | level of effort | 9d | 2027-11-03 | 2027-11-15 | DOC-5010 SS, HND-5090 FF | 0d |  |  |  | Cost Distribution [20178] | 20,178 | - | A - Preliminaries & | PM - Project Managem | 4 - Documentation & | Management | Contractor | All | General | 02 | Planned (contractor) | - | N | - | Item 02: 5.0% = 20,178.00 |
| MOB-1083 |  | Protection Officer on site - handover period (LOE) | level of effort | 9d | 2027-11-03 | 2027-11-15 | DOC-5010 SS, HND-5090 FF | 0d |  |  |  | Cost Distribution [2832]; Protection Officer [72 h] | 2,832 | - | A - Preliminaries & | PM - Project Managem | 4 - Documentation & | Management | Contractor | All | General | 03 | Planned (contractor) | - | N | - | Item 03: 5.0% = 2,832.00 |
|  | 1.2.1 | **Site Mobilization, Establishment & Demobilization** |  |  | 2026-12-13 | 2027-11-09 |  |  |  |  |  |  |  |  |  |  |  |  |  |  |  |  |  |  |  |  |  |
| MOB-1040 |  | Site establishment - offices & temporary facilities |  | 8d | 2026-12-13 | 2026-12-22 | PRM-1120 | 78d | 65d |  |  | Cost Distribution [561680]; Civil Crew [64 h] | 561,680 | - | A - Preliminaries & | PM - Project Managem | 1 - Mobilization & D | Mobilization | Contractor | All | General | 01 | Planned (contractor) | - | N | - | Item 01: 68.0% = 561,680.00 |
| MOB-3010 |  | Mobilize plant, equipment & labour; compound & logistics set-up |  | 5d | 2027-04-18 | 2027-04-22 | PRM-2120, APR-1520, APR-1510, SUD-1055, MOB-1040, MOB-3005 | 1d | 0d |  |  | Cost Distribution [264320]; Civil Crew [40 h] | 264,320 | - | A - Preliminaries & | PM - Project Managem | 2 - Procurement & Co | Mobilization | Contractor | All | General | 01 | Planned (contractor) | - | N | - | Item 01: 32.0% = 264,320.00 |
| DEM-5100 |  | Demobilization & site clearance |  | 5d | 2027-11-03 | 2027-11-09 | DOC-5040, CMS-4320 | 3d |  |  |  | Cost Distribution [47200]; Civil Crew [40 h] | 47,200 | - | A - Preliminaries & | PM - Project Managem | 4 - Documentation & | Mobilization | Contractor | All | General | 04 | Planned (contractor) | - | N | - | Item 04: 20.0% = 47,200.00 |

| ID | WBS | Activity | Duration | Start | Finish | Predecessors | Total float | Free float | Calendar | Resources | Cost | Design Stage | BoQ Section | EPC Phase | SoW Stage | Activity Category | Responsible | Section | System | BoQ Item | Basis | Risk Rank | Long Lead | LL No. | BoQ Mapping |
| --- | --- | --- | --- | --- | --- | --- | --- | --- | --- | --- | --- | --- | --- | --- | --- | --- | --- | --- | --- | --- | --- | --- | --- | --- | --- |
|  | 1.3 | **PROJECT START-UP DOCUMENTS & APPROVALS (Contract cl. 4.2, 5, 8, 10, 13)** |  | 2026-11-16 | 2026-12-13 |  |  |  |  |  |  |  |  |  |  |  |  |  |  |  |  |  |  |  |  |
| SUD-1010 |  | Performance Security (10% on-demand bank guarantee) - confirm issue & submit to SAR (due before Effective Date) | 1d | 2026-11-16 | 2026-11-16 | MS-001 | 221d | 91d | SAR-OFFICE (Sun-Thu 8h) |  |  | - | - | PM - Project Managem | 1 - Mobilization & D | Submittal (Contracto | Contractor | All | General | - | Requirement / durati | - | N | - |  |
| SUD-1020 |  | Submit contractor licences & certificates (CR, tax, MISA) to SAR | 1d | 2026-11-16 | 2026-11-16 | MS-001 | 221d | 91d | SAR-OFFICE (Sun-Thu 8h) |  |  | - | - | PM - Project Managem | 1 - Mobilization & D | Submittal (Contracto | Contractor | All | General | - | Requirement / durati | - | N | - |  |
| SUD-1030 |  | Baseline programme (Primavera P6) - prepare & submit within 14 days of Effective Date | 8d | 2026-11-16 | 2026-11-25 | MS-001 | 205d | 0d | SAR-OFFICE (Sun-Thu 8h) |  |  | - | - | PM - Project Managem | 1 - Mobilization & D | Submittal (Contracto | Contractor | All | General | - | Requirement / durati | - | N | - |  |
| SUB-1410 |  | QA/QC Plan, HSE Plan & Project Execution Plan - prepare & submit | 5d | 2026-11-18 | 2026-11-24 | MOB-1010 | 88d | 0d | SAR-OFFICE (Sun-Thu 8h) |  |  | - | - | PM - Project Managem | 1 - Mobilization & D | Submittal (Contracto | Contractor | All | General | - | Requirement / durati | - | N | - |  |
| SUB-1420 |  | Method statements & ITPs (survey, trenching, cable laying, OTDR/splicing, track crossing, equipment) - prepare & submit | 8d | 2026-11-18 | 2026-11-29 | MOB-1010 | 73d | 0d | SAR-OFFICE (Sun-Thu 8h) |  |  | - | - | PM - Project Managem | 1 - Mobilization & D | Submittal (Contracto | Contractor | All | General | - | Requirement / durati | - | N | - |  |
| SUD-1050 |  | Key Personnel CVs, manpower & Saudization schedule - submit to SAR | 3d | 2026-11-18 | 2026-11-22 | MOB-1010 | 90d | 0d | SAR-OFFICE (Sun-Thu 8h) |  |  | - | - | PM - Project Managem | 1 - Mobilization & D | Submittal (Contracto | Contractor | All | General | - | Requirement / durati | - | N | - |  |
| SUD-1060 |  | Sub-contractor & supplier approval request (cl. 5.7.2) - prepare & submit | 5d | 2026-11-18 | 2026-11-24 | MOB-1010 | 60d | 0d | SAR-OFFICE (Sun-Thu 8h) |  |  | - | - | PM - Project Managem | 1 - Mobilization & D | Submittal (Contracto | Contractor | All | General | - | Requirement / durati | - | N | - |  |
| SUD-1055 |  | SAR approval - Key Personnel & manpower schedule | 14d | 2026-11-23 | 2026-12-06 | SUD-1050 | 133d | 132d | SAR-7DAY (reviews & procurement 8h) |  |  | - | - | PM - Project Managem | 1 - Mobilization & D | SAR Approval / Revie | SAR | All | General | - | Requirement / durati | - | N | - |  |
| SUD-1040 |  | Insurance certificates (CAR, marine cargo, professional indemnity, plant) - submit to SAR | 1d | 2026-11-24 | 2026-11-24 | MOB-1020 | 0d |  | SAR-OFFICE (Sun-Thu 8h) |  |  | - | - | PM - Project Managem | 1 - Mobilization & D | Submittal (Contracto | Contractor | All | General | - | Requirement / durati | - | N | - |  |
| APR-1510 |  | SAR review & approval - QA/QC, HSE & Execution Plans | 14d | 2026-11-25 | 2026-12-08 | SUB-1410 | 131d | 112d | SAR-7DAY (reviews & procurement 8h) |  |  | - | - | PM - Project Managem | 1 - Mobilization & D | SAR Approval / Revie | SAR | All | General | - | Requirement / durati | - | N | - |  |
| SUD-1065 |  | SAR prior written approval - sub-contractors & suppliers | 14d | 2026-11-25 | 2026-12-08 | SUD-1060 | 84d |  | SAR-7DAY (reviews & procurement 8h) |  |  | - | - | PM - Project Managem | 1 - Mobilization & D | SAR Approval / Revie | SAR | All | General | - | Requirement / durati | - | N | - |  |
| SUD-1035 |  | SAR review & approval - baseline programme | 14d | 2026-11-26 | 2026-12-09 | SUD-1030 | 300d | 111d | SAR-7DAY (reviews & procurement 8h) |  |  | - | - | PM - Project Managem | 1 - Mobilization & D | SAR Approval / Revie | SAR | All | General | - | Requirement / durati | - | N | - |  |
| APR-1520 |  | SAR review & approval - method statements & ITPs | 14d | 2026-11-30 | 2026-12-13 | SUB-1420 | 108d | 0d | SAR-7DAY (reviews & procurement 8h) |  |  | - | - | PM - Project Managem | 1 - Mobilization & D | SAR Approval / Revie | SAR | All | General | - | Requirement / durati | - | N | - |  |
|  | 1.4 | **PERMITS & AUTHORITY APPROVALS (PA)** |  | 2026-11-25 | 2027-04-15 |  |  |  |  |  |  |  |  |  |  |  |  |  |  |  |  |  |  |  |  |
|  | 1.4.1 | **Permit 1 - Site Access & Survey (before Survey)** |  | 2026-11-25 | 2026-12-10 |  |  |  |  |  |  |  |  |  |  |  |  |  |  |  |  |  |  |  |  |
| PRM-1110 |  | Permit 1 - prepare & submit work permit request for site access & survey (Work Permit Portal) | 2d | 2026-11-25 | 2026-11-26 | MOB-1020, MOB-1030, SUD-1040 | 0d |  | SAR-OFFICE (Sun-Thu 8h) |  |  | - | - | PA - Permits & Autho | 1 - Mobilization & D | Permit / Authority | Contractor | All | General | - | Requirement / durati | - | N | - |  |
| PRM-1120 |  | SAR review & issue Permit 1 (site access & survey) | 14d | 2026-11-27 | 2026-12-10 | PRM-1110 | 2d |  | SAR-7DAY (reviews & procurement 8h) |  |  | - | - | PA - Permits & Autho | 1 - Mobilization & D | Permit / Authority | SAR | All | General | - | Requirement / durati | - | N | - |  |
|  | 1.4.2 | **Permit 2 - Start of Execution (after IFC approved)** |  | 2027-03-31 | 2027-04-15 |  |  |  |  |  |  |  |  |  |  |  |  |  |  |  |  |  |  |  |  |
| PRM-2110 |  | Permit 2 - prepare & submit work permit request for execution (route works, crossings, station works; TTF02, PICOP, PTS register) | 2d | 2027-03-31 | 2027-04-01 | APR-1560, APR-1520, MOB-1030 | 1d | 0d | SAR-OFFICE (Sun-Thu 8h) |  |  | - | - | PA - Permits & Autho | 2 - Procurement & Co | Permit / Authority | Contractor | All | General | - | Requirement / durati | - | N | - |  |
| PRM-2120 |  | SAR review & issue Permit 2 (start of execution) | 14d | 2027-04-02 | 2027-04-15 | PRM-2110 | 3d | 2d | SAR-7DAY (reviews & procurement 8h) |  |  | - | - | PA - Permits & Autho | 2 - Procurement & Co | Permit / Authority | SAR | All | General | - | Requirement / durati | - | N | - |  |
|  | 1.5 | **ENGINEERING (E)** |  | 2026-11-18 | 2027-04-21 |  |  |  |  |  |  |  |  |  |  |  |  |  |  |  |  |  |  |  |  |
|  | 1.5.1 | **Survey, Survey Report & Existing System Assessment** |  | 2026-12-13 | 2027-01-25 |  |  |  |  |  |  |  |  |  |  |  |  |  |  |  |  |  |  |  |  |
| SRV-1210 |  | Existing system, power capacity & shelter assessment (incl. data correlation) | 5d | 2026-12-13 | 2026-12-17 | PRM-1120 | 2d | 0d |  | Cost Distribution [24337.5]; Systems Engineers [80 h] | 24,337.5 | - | B - Survey & Design | E - Engineering | 1 - Mobilization & D | Survey | Contractor | All | General | 05 | Planned (contractor) | - | N | - | Item 05: 15.0% = 24,337.50 |
| SRV-1220 |  | Topographic survey, GPR utilities detection & dilapidation survey (5.5 km route) | 7d | 2026-12-13 | 2026-12-21 | PRM-1120 | 0d |  |  | Cost Distribution [81125]; Survey Crew [112 h] | 81,125 | - | B - Survey & Design | E - Engineering | 1 - Mobilization & D | Survey | Contractor | All | General | 05 | Planned (contractor) | - | N | - | Item 05: 50.0% = 81,125.00 |
| SRV-1231 |  | Survey Report part A - TDR baseline report (existing system) | 20d | 2026-12-22 | 2027-01-18 | SRV-1210, SRV-1220 | 0d |  | SAR-OFFICE (Sun-Thu 8h) | Cost Distribution [8112.5]; Systems Engineers [160 h] | 8,112.5 | - | B - Survey & Design | E - Engineering | 2 - Procurement & Co | Survey | Contractor | All | General | 05 | Planned (contractor) | - | N | - | Item 05: 5.0% = 8,112.50 |
| SRV-1232 |  | Survey Report part B - DAS seismic baseline report (existing system) | 20d | 2026-12-22 | 2027-01-18 | SRV-1210, SRV-1220 | 0d |  | SAR-OFFICE (Sun-Thu 8h) | Cost Distribution [8112.5]; Systems Engineers [160 h] | 8,112.5 | - | B - Survey & Design | E - Engineering | 2 - Procurement & Co | Survey | Contractor | All | General | 05 | Planned (contractor) | - | N | - | Item 05: 5.0% = 8,112.50 |
| SRV-1233 |  | Survey Report part C - DSS strain baseline report (existing system) | 20d | 2026-12-22 | 2027-01-18 | SRV-1210, SRV-1220 | 0d |  | SAR-OFFICE (Sun-Thu 8h) | Cost Distribution [8112.5]; Systems Engineers [160 h] | 8,112.5 | - | B - Survey & Design | E - Engineering | 2 - Procurement & Co | Survey | Contractor | All | General | 05 | Planned (contractor) | - | N | - | Item 05: 5.0% = 8,112.50 |
| SRV-1234 |  | Survey Report part D - weather station data baseline report (existing system) | 20d | 2026-12-22 | 2027-01-18 | SRV-1210, SRV-1220 | 0d |  | SAR-OFFICE (Sun-Thu 8h) | Cost Distribution [8112.5]; Systems Engineers [160 h] | 8,112.5 | - | B - Survey & Design | E - Engineering | 2 - Procurement & Co | Survey | Contractor | All | General | 05 | Planned (contractor) | - | N | - | Item 05: 5.0% = 8,112.50 |
| SRV-1230 |  | Survey Report - compile baseline of existing system (topographic, GPR, dilapidation, TDR, DAS, DSS, weather) | 5d | 2027-01-19 | 2027-01-25 | SRV-1231, SRV-1232, SRV-1233, SRV-1234 | 0d |  | SAR-OFFICE (Sun-Thu 8h) | Cost Distribution [24337.5]; Design Engineers [80 h] | 24,337.5 | - | B - Survey & Design | E - Engineering | 2 - Procurement & Co | Survey | Contractor | All | General | 05 | Planned (contractor) | - | N | - | Item 05: 15.0% = 24,337.50 |

| ID | WBS | Activity | Duration | Start | Finish | Predecessors | Total float | Free float | Calendar | Resources | Cost | Design Stage | BoQ Section | EPC Phase | SoW Stage | Activity Category | Responsible | Section | System | BoQ Item | Basis | Risk Rank | Long Lead | LL No. | BoQ Mapping |
| --- | --- | --- | --- | --- | --- | --- | --- | --- | --- | --- | --- | --- | --- | --- | --- | --- | --- | --- | --- | --- | --- | --- | --- | --- | --- |
|  | 1.5.2 | **Design & Engineering (Concept / Preliminary / Detailed-IFC)** |  | 2026-11-18 | 2027-03-30 |  |  |  |  |  |  |  |  |  |  |  |  |  |  |  |  |  |  |  |  |
|  | 1.5.2.1 | **Concept Design** |  | 2026-11-18 | 2027-02-09 |  |  |  |  |  |  |  |  |  |  |  |  |  |  |  |  |  |  |  |  |
|  | 1.5.2.1.1 | **Concept - Design** |  | 2026-11-18 | 2026-11-24 |  |  |  |  |  |  |  |  |  |  |  |  |  |  |  |  |  |  |  |  |
| DSN-1305 |  | Concept design - basis of design, route, system architecture & sizing | 5d | 2026-11-18 | 2026-11-24 | MOB-1010 | 44d |  | SAR-OFFICE (Sun-Thu 8h) | Design Engineers [160 h] |  | C - Concept | - | E - Engineering | 1 - Mobilization & D | Design | Contractor | All | General | - | Planned (contractor) | - | N | - |  |
|  | 1.5.2.1.2 | **Concept - Submittal (Contractor)** |  | 2027-01-26 | 2027-01-26 |  |  |  |  |  |  |  |  |  |  |  |  |  |  |  |  |  |  |  |  |
| SUB-1305 |  | Concept design package + Survey Report - submit to SAR | 1d | 2027-01-26 | 2027-01-26 | DSN-1305, SRV-1230 | 0d |  | SAR-OFFICE (Sun-Thu 8h) | Cost Distribution [9292.5] | 9,292.5 | C - Concept | B - Survey & Design | E - Engineering | 2 - Procurement & Co | Submittal (Contracto | Contractor | All | General | 06 | Planned (contractor) | - | N | - | Item 06: 7.5% = 9,292.50 |
|  | 1.5.2.1.3 | **Concept - SAR Approval** |  | 2027-01-27 | 2027-02-09 |  |  |  |  |  |  |  |  |  |  |  |  |  |  |  |  |  |  |  |  |
| APR-1305 |  | SAR review & approval - Concept design & Survey Report | 14d | 2027-01-27 | 2027-02-09 | SUB-1305 | 0d |  | SAR-7DAY (reviews & procurement 8h) | Cost Distribution [9292.5] | 9,292.5 | C - Concept | B - Survey & Design | E - Engineering | 2 - Procurement & Co | SAR Approval / Revie | SAR | All | General | 06 | Requirement / durati | - | N | - | Item 06: 7.5% = 9,292.50 |
|  | 1.5.2.2 | **Preliminary Design** |  | 2027-02-10 | 2027-03-02 |  |  |  |  |  |  |  |  |  |  |  |  |  |  |  |  |  |  |  |  |
|  | 1.5.2.2.1 | **Preliminary - Design** |  | 2027-02-10 | 2027-02-15 |  |  |  |  |  |  |  |  |  |  |  |  |  |  |  |  |  |  |  |  |
| DSN-1307 |  | Preliminary design - route & cable layout, power/shelter sizing, interfaces, quantity check | 4d | 2027-02-10 | 2027-02-15 | APR-1305 | 0d |  | SAR-OFFICE (Sun-Thu 8h) | Design Engineers [128 h] |  | P - Preliminary | - | E - Engineering | 2 - Procurement & Co | Design | Contractor | All | General | - | Planned (contractor) | - | N | - |  |
|  | 1.5.2.2.2 | **Preliminary - Submittal (Contractor)** |  | 2027-02-16 | 2027-02-16 |  |  |  |  |  |  |  |  |  |  |  |  |  |  |  |  |  |  |  |  |
| SUB-1307 |  | Preliminary design package - submit to SAR | 1d | 2027-02-16 | 2027-02-16 | DSN-1307 | 0d |  | SAR-OFFICE (Sun-Thu 8h) | Cost Distribution [15487.5] | 15,487.5 | P - Preliminary | B - Survey & Design | E - Engineering | 2 - Procurement & Co | Submittal (Contracto | Contractor | All | General | 06 | Planned (contractor) | - | N | - | Item 06: 12.5% = 15,487.50 |
|  | 1.5.2.2.3 | **Preliminary - SAR Approval** |  | 2027-02-17 | 2027-03-02 |  |  |  |  |  |  |  |  |  |  |  |  |  |  |  |  |  |  |  |  |
| APR-1307 |  | SAR review & approval - Preliminary design | 14d | 2027-02-17 | 2027-03-02 | SUB-1307 | 0d |  | SAR-7DAY (reviews & procurement 8h) | Cost Distribution [15487.5] | 15,487.5 | P - Preliminary | B - Survey & Design | E - Engineering | 2 - Procurement & Co | SAR Approval / Revie | SAR | All | General | 06 | Requirement / durati | - | N | - | Item 06: 12.5% = 15,487.50 |
|  | 1.5.2.3 | **Detailed Design / IFC** |  | 2027-03-03 | 2027-03-30 |  |  |  |  |  |  |  |  |  |  |  |  |  |  |  |  |  |  |  |  |
|  | 1.5.2.3.1 | **Detailed / IFC - Design** |  | 2027-03-03 | 2027-03-15 |  |  |  |  |  |  |  |  |  |  |  |  |  |  |  |  |  |  |  |  |
| DSN-1310 |  | Detailed design - IFC drawings, specifications & calculations | 5d | 2027-03-03 | 2027-03-15 | APR-1307, MGT-1090 | 1d | 0d | SAR-OFFICE (Sun-Thu 8h) | Design Engineers [160 h] |  | D - Detailed / IFC | - | E - Engineering | 2 - Procurement & Co | Design | Contractor | All | General | - | Planned (contractor) | - | N | - |  |
|  | 1.5.2.3.2 | **Detailed / IFC - Submittal (Contractor)** |  | 2027-03-16 | 2027-03-16 |  |  |  |  |  |  |  |  |  |  |  |  |  |  |  |  |  |  |  |  |
| DSN-1320 |  | IFC package QA check & submission to SAR | 1d | 2027-03-16 | 2027-03-16 | DSN-1310 | 1d | 0d | SAR-OFFICE (Sun-Thu 8h) | Cost Distribution [37170] | 37,170 | D - Detailed / IFC | B - Survey & Design | E - Engineering | 2 - Procurement & Co | Submittal (Contracto | Contractor | All | General | 06 | Planned (contractor) | - | N | - | Item 06: 30.0% = 37,170.00 |
|  | 1.5.2.3.3 | **Detailed / IFC - SAR Approval** |  | 2027-03-17 | 2027-03-30 |  |  |  |  |  |  |  |  |  |  |  |  |  |  |  |  |  |  |  |  |
| APR-1560 |  | SAR review & approval - IFC package (IFC approved) | 14d | 2027-03-17 | 2027-03-30 | DSN-1320 | 1d | 0d | SAR-7DAY (reviews & procurement 8h) | Cost Distribution [37170] | 37,170 | D - Detailed / IFC | B - Survey & Design | E - Engineering | 2 - Procurement & Co | SAR Approval / Revie | SAR | All | General | 06 | Requirement / durati | - | N | - | Item 06: 30.0% = 37,170.00 |
|  | 1.5.3 | **Other Engineering Submittals (Contractor)** |  | 2026-12-10 | 2027-04-07 |  |  |  |  |  |  |  |  |  |  |  |  |  |  |  |  |  |  |  |  |
| SUB-1490 |  | FAT procedures & test plans (TDR, cables, weather, comms, UPS, cloud hardware) | 6d | 2026-12-10 | 2026-12-17 | APR-1540 | 80d | 0d | SAR-OFFICE (Sun-Thu 8h) |  |  | - | - | E - Engineering | 1 - Mobilization & D | Submittal (Contracto | Contractor | All | General | - | Planned (contractor) | - | N | - |  |
| SUB-1480 |  | Interface Control Document - existing 1.5 km system & iSiteCentral | 8d | 2026-12-20 | 2026-12-29 | SRV-1210 | 173d | 0d | SAR-OFFICE (Sun-Thu 8h) |  |  | - | - | E - Engineering | 2 - Procurement & Co | Submittal (Contracto | Contractor | All | Integration | - | Planned (contractor) | - | N | - |  |
| SUB-1470 |  | Cybersecurity (NCA ECC-1/CSCC-1/OTCC-1, SAR OT/ICS) & local-cloud architecture design package | 10d | 2027-02-10 | 2027-02-24 | SRV-1210, APR-1305 | 75d | 0d | SAR-OFFICE (Sun-Thu 8h) |  |  | - | - | E - Engineering | 2 - Procurement & Co | Submittal (Contracto | Contractor | All | Cyber | - | Planned (contractor) | - | N | - |  |
| SUB-1495 |  | SAT, commissioning & performance-validation procedures | 6d | 2027-03-31 | 2027-04-07 | APR-1560 | 115d | 0d | SAR-OFFICE (Sun-Thu 8h) |  |  | - | - | E - Engineering | 2 - Procurement & Co | Submittal (Contracto | Contractor | All | General | - | Planned (contractor) | - | N | - |  |

| ID | WBS | Activity | Duration | Start | Finish | Predecessors | Total float | Free float | Constraint | Calendar | Resources | Cost | Design Stage | BoQ Section | EPC Phase | SoW Stage | Activity Category | Responsible | Section | System | BoQ Item | Basis | Risk Rank | Long Lead | LL No. | BoQ Mapping |
| --- | --- | --- | --- | --- | --- | --- | --- | --- | --- | --- | --- | --- | --- | --- | --- | --- | --- | --- | --- | --- | --- | --- | --- | --- | --- | --- |
|  | 1.5.4 | **SAR Reviews & Approvals - Other Engineering** |  | 2026-12-18 | 2027-04-21 |  |  |  |  |  |  |  |  |  |  |  |  |  |  |  |  |  |  |  |  |  |
| APR-1660 |  | SAR review & approval - FAT procedures (SAR witness notice incl.) | 14d | 2026-12-18 | 2026-12-31 | SUB-1490 | 120d | 94d |  | SAR-7DAY (reviews & procurement 8h) |  |  | - | - | E - Engineering | 2 - Procurement & Co | SAR Approval / Revie | SAR | All | General | - | Requirement / durati | - | N | - |  |
| APR-1650 |  | SAR / system-owner review & approval - Interface Control Document | 14d | 2026-12-30 | 2027-01-12 | SUB-1480 | 256d |  |  | SAR-7DAY (reviews & procurement 8h) |  |  | - | - | E - Engineering | 2 - Procurement & Co | SAR Approval / Revie | SAR | All | Integration | - | Requirement / durati | - | N | - |  |
| APR-1620 |  | SAR IT/OT & cybersecurity review & approval - architecture design | 14d | 2027-02-25 | 2027-03-10 | SUB-1470 | 117d | 3d |  | SAR-7DAY (reviews & procurement 8h) |  |  | - | - | E - Engineering | 2 - Procurement & Co | SAR Approval / Revie | SAR | All | Cyber | - | Requirement / durati | - | N | - |  |
| APR-1670 |  | SAR review & approval - SAT/commissioning procedures | 14d | 2027-04-08 | 2027-04-21 | SUB-1495 | 167d |  |  | SAR-7DAY (reviews & procurement 8h) |  |  | - | - | E - Engineering | 2 - Procurement & Co | SAR Approval / Revie | SAR | All | General | - | Requirement / durati | - | N | - |  |
|  | 1.6 | **PROCUREMENT (P)** |  | 2026-11-18 | 2027-06-14 |  |  |  |  |  |  |  |  |  |  |  |  |  |  |  |  |  |  |  |  |  |
|  | 1.6.1 | **Material Submittals (Contractor)** |  | 2026-11-18 | 2026-11-25 |  |  |  |  |  |  |  |  |  |  |  |  |  |  |  |  |  |  |  |  |  |
| SUB-1430 |  | Material submittal - DSS cable NZS-DSS-C02, 48-core FO cable, TDR coaxial cable | 5d | 2026-11-18 | 2026-11-24 | MOB-1010 | 60d | 0d |  | SAR-OFFICE (Sun-Thu 8h) |  |  | - | - | P - Procurement | 1 - Mobilization & D | Submittal (Contracto | Contractor | All | General | - | Planned (contractor) | - | N | - |  |
| SUB-1440 |  | Material submittal - TDR system, weather station, comms modules/SIM, UPS & electrical panels, cloud hardware | 6d | 2026-11-18 | 2026-11-25 | MOB-1010 | 80d | 0d |  | SAR-OFFICE (Sun-Thu 8h) |  |  | - | - | P - Procurement | 1 - Mobilization & D | Submittal (Contracto | Contractor | All | General | - | Planned (contractor) | - | N | - |  |
| SUB-1450 |  | Material submittal - FO closures, handholes/manholes, steel & rigid conduits, marker posts, sweet sand | 5d | 2026-11-18 | 2026-11-24 | MOB-1010 | 80d | 0d |  | SAR-OFFICE (Sun-Thu 8h) |  |  | - | - | P - Procurement | 1 - Mobilization & D | Submittal (Contracto | Contractor | All | General | - | Planned (contractor) | - | N | - |  |
|  | 1.6.2 | **SAR Material Approvals** |  | 2026-11-25 | 2026-12-09 |  |  |  |  |  |  |  |  |  |  |  |  |  |  |  |  |  |  |  |  |  |
| APR-1530 |  | SAR review & approval - cable materials (DSS, FO, TDR coax) | 14d | 2026-11-25 | 2026-12-08 | SUB-1430 | 84d |  |  | SAR-7DAY (reviews & procurement 8h) |  |  | - | - | P - Procurement | 1 - Mobilization & D | SAR Approval / Revie | SAR | All | General | - | Requirement / durati | - | N | - |  |
| APR-1550 |  | SAR review & approval - civil materials (closures, handholes, conduits, markers, sand) | 14d | 2026-11-25 | 2026-12-08 | SUB-1450 | 119d | 84d |  | SAR-7DAY (reviews & procurement 8h) |  |  | - | - | P - Procurement | 1 - Mobilization & D | SAR Approval / Revie | SAR | All | General | - | Requirement / durati | - | N | - |  |
| APR-1540 |  | SAR review & approval - equipment materials (TDR, weather, comms, UPS/panels, cloud HW) | 14d | 2026-11-26 | 2026-12-09 | SUB-1440 | 119d | 0d |  | SAR-7DAY (reviews & procurement 8h) |  |  | - | - | P - Procurement | 1 - Mobilization & D | SAR Approval / Revie | SAR | All | General | - | Requirement / durati | - | N | - |  |
|  | 1.6.3 | **LONG-LEAD ITEMS (LL) - PO, Manufacture, FAT, Shipping, Customs & Delivery** |  | 2027-03-03 | 2027-06-14 |  |  |  |  |  |  |  |  |  |  |  |  |  |  |  |  |  |  |  |  |  |
|  | 1.6.3.1 | **LL-01 DSS cable NZS-DSS-C02** |  | 2027-03-03 | 2027-05-14 |  |  |  |  |  |  |  |  |  |  |  |  |  |  |  |  |  |  |  |  |  |
| PRC-DSS10 |  | [LL-01] Place PO & supplier kick-off - DSS cable NZS-DSS-C02 (5,500 LM) | 3d | 2027-03-03 | 2027-03-07 | APR-1530, SUD-1065, APR-1307 | 0d |  | start on or after 2027-02-16 | SAR-OFFICE (Sun-Thu 8h) |  |  | - | - | P - Procurement | 2 - Procurement & Co | Procurement | Supplier | All | DSS | - | Planned (contractor) | - | Y | LL-01 |  |
| PRC-DSS20 |  | [LL-01] Manufacture / supply - DSS cable NZS-DSS-C02 (5,500 LM) | 49d | 2027-03-08 | 2027-04-25 | PRC-DSS10 | 5d | 0d |  | SAR-7DAY (reviews & procurement 8h) | Cost Distribution [381774] | 381,774.25 | - | C - Materials, Civil | P - Procurement | 2 - Procurement & Co | Procurement | Supplier | All | DSS | 09 | Duration assumed - t | - | Y | LL-01 | Item 09: 65.0% = 381,774.25 |
| FAT-DSS |  | [LL-01] FAT at manufacturer - DSS cable NZS-DSS-C02 (5,500 LM) | 2d | 2027-04-26 | 2027-04-27 | PRC-DSS20, APR-1660 | 5d | 0d |  | SAR-7DAY (reviews & procurement 8h) | Cost Distribution [8850] | 8,850 | - | F - Documentation, T | P - Procurement | 2 - Procurement & Co | FAT | Supplier | All | DSS | 27 | Planned (contractor) | - | Y | LL-01 | Item 27: 5.0% = 8,850.00 |
| PRC-DSS30 |  | [LL-01] Shipping / import - DSS cable NZS-DSS-C02 (5,500 LM) | 7d | 2027-04-28 | 2027-05-04 | FAT-DSS | 5d | 0d |  | SAR-7DAY (reviews & procurement 8h) |  |  | - | - | P - Procurement | 2 - Procurement & Co | Procurement | Supplier | All | DSS | - | Duration assumed - t | - | Y | LL-01 |  |
| PRC-DSS40 |  | [LL-01] Customs clearance & SABER conformity - DSS cable NZS-DSS-C02 (5,500 LM) | 7d | 2027-05-05 | 2027-05-11 | PRC-DSS30 | 5d | 0d |  | SAR-7DAY (reviews & procurement 8h) |  |  | - | - | P - Procurement | 2 - Procurement & Co | Procurement | Authority | All | DSS | - | Duration assumed - t | - | Y | LL-01 |  |
| PRC-DSS50 |  | [LL-01] Delivery to site (Heet) - DSS cable NZS-DSS-C02 (5,500 LM) | 3d | 2027-05-12 | 2027-05-14 | PRC-DSS40 | 5d |  |  | SAR-7DAY (reviews & procurement 8h) |  |  | - | - | P - Procurement | 2 - Procurement & Co | Procurement | Supplier | All | DSS | - | Planned (contractor) | - | Y | LL-01 |  |
|  | 1.6.3.2 | **LL-02 48-core FO cable (DAS)** |  | 2027-03-03 | 2027-05-07 |  |  |  |  |  |  |  |  |  |  |  |  |  |  |  |  |  |  |  |  |  |
| PRC-FO10 |  | [LL-02] Place PO & supplier kick-off - Outdoor 48-core FO cable - DAS (5,500 LM) | 3d | 2027-03-03 | 2027-03-07 | APR-1530, SUD-1065, APR-1307 | 12d | 0d | start on or after 2027-02-16 | SAR-OFFICE (Sun-Thu 8h) |  |  | - | - | P - Procurement | 2 - Procurement & Co | Procurement | Supplier | All | DAS | - | Planned (contractor) | - | Y | LL-02 |  |
| PRC-FO20 |  | [LL-02] Manufacture / supply - Outdoor 48-core FO cable - DAS (5,500 LM) | 35d | 2027-03-08 | 2027-04-11 | PRC-FO10 | 22d | 0d |  | SAR-7DAY (reviews & procurement 8h) | Cost Distribution [398356] | 398,356.2 | - | C - Materials, Civil | P - Procurement | 2 - Procurement & Co | Procurement | Supplier | All | DAS | 08 | Duration assumed - t | - | Y | LL-02 | Item 08: 60.0% = 398,356.20 |
| FAT-FO |  | [LL-02] FAT at manufacturer - Outdoor 48-core FO cable - DAS (5,500 LM) | 2d | 2027-04-12 | 2027-04-13 | PRC-FO20, APR-1660 | 22d | 0d |  | SAR-7DAY (reviews & procurement 8h) | Cost Distribution [8850] | 8,850 | - | F - Documentation, T | P - Procurement | 2 - Procurement & Co | FAT | Supplier | All | DAS | 27 | Planned (contractor) | - | Y | LL-02 | Item 27: 5.0% = 8,850.00 |
| PRC-FO30 |  | [LL-02] Shipping / import - Outdoor 48-core FO cable - DAS (5,500 LM) | 14d | 2027-04-14 | 2027-04-27 | FAT-FO | 22d | 0d |  | SAR-7DAY (reviews & procurement 8h) |  |  | - | - | P - Procurement | 2 - Procurement & Co | Procurement | Supplier | All | DAS | - | Duration assumed - t | - | Y | LL-02 |  |
| PRC-FO40 |  | [LL-02] Customs clearance & SABER conformity - Outdoor 48-core FO cable - DAS (5,500 LM) | 7d | 2027-04-28 | 2027-05-04 | PRC-FO30 | 22d | 0d |  | SAR-7DAY (reviews & procurement 8h) |  |  | - | - | P - Procurement | 2 - Procurement & Co | Procurement | Authority | All | DAS | - | Duration assumed - t | - | Y | LL-02 |  |
| PRC-FO50 |  | [LL-02] Delivery to site (Heet) - Outdoor 48-core FO cable - DAS (5,500 LM) | 3d | 2027-05-05 | 2027-05-07 | PRC-FO40 | 22d |  |  | SAR-7DAY (reviews & procurement 8h) |  |  | - | - | P - Procurement | 2 - Procurement & Co | Procurement | Supplier | All | DAS | - | Planned (contractor) | - | Y | LL-02 |  |

| ID | WBS | Activity | Duration | Start | Finish | Predecessors | Total float | Free float | Constraint | Calendar | Resources | Cost | Design Stage | BoQ Section | EPC Phase | SoW Stage | Activity Category | Responsible | Section | System | BoQ Item | Basis | Risk Rank | Long Lead | LL No. | BoQ Mapping |
| --- | --- | --- | --- | --- | --- | --- | --- | --- | --- | --- | --- | --- | --- | --- | --- | --- | --- | --- | --- | --- | --- | --- | --- | --- | --- | --- |
|  | 1.6.3.3 | **LL-03 TDR coaxial cable** |  | 2027-03-03 | 2027-04-30 |  |  |  |  |  |  |  |  |  |  |  |  |  |  |  |  |  |  |  |  |  |
| PRC-TDRC10 |  | [LL-03] Place PO & supplier kick-off - TDR coaxial cable (5,500 LM) | 3d | 2027-03-03 | 2027-03-07 | APR-1530, SUD-1065, APR-1307 | 25d | 0d | start on or after 2027-02-16 | SAR-OFFICE (Sun-Thu 8h) |  |  | - | - | P - Procurement | 2 - Procurement & Co | Procurement | Supplier | All | TDR | - | Planned (contractor) | - | Y | LL-03 |  |
| PRC-TDRC20 |  | [LL-03] Manufacture / supply - TDR coaxial cable (5,500 LM) | 28d | 2027-03-08 | 2027-04-04 | PRC-TDRC10 | 40d | 0d |  | SAR-7DAY (reviews & procurement 8h) | Cost Distribution [352407] | 352,407 | - | C - Materials, Civil | P - Procurement | 2 - Procurement & Co | Procurement | Supplier | All | TDR | 07 | Duration assumed - t | - | Y | LL-03 | Item 07: 60.0% = 352,407.00 |
| FAT-TDRC |  | [LL-03] FAT at manufacturer - TDR coaxial cable (5,500 LM) | 2d | 2027-04-05 | 2027-04-06 | PRC-TDRC20, APR-1660 | 40d | 0d |  | SAR-7DAY (reviews & procurement 8h) | Cost Distribution [8850] | 8,850 | - | F - Documentation, T | P - Procurement | 2 - Procurement & Co | FAT | Supplier | All | TDR | 27 | Planned (contractor) | - | Y | LL-03 | Item 27: 5.0% = 8,850.00 |
| PRC-TDRC30 |  | [LL-03] Shipping / import - TDR coaxial cable (5,500 LM) | 14d | 2027-04-07 | 2027-04-20 | FAT-TDRC | 40d | 0d |  | SAR-7DAY (reviews & procurement 8h) |  |  | - | - | P - Procurement | 2 - Procurement & Co | Procurement | Supplier | All | TDR | - | Duration assumed - t | - | Y | LL-03 |  |
| PRC-TDRC40 |  | [LL-03] Customs clearance & SABER conformity - TDR coaxial cable (5,500 LM) | 7d | 2027-04-21 | 2027-04-27 | PRC-TDRC30 | 40d | 0d |  | SAR-7DAY (reviews & procurement 8h) |  |  | - | - | P - Procurement | 2 - Procurement & Co | Procurement | Authority | All | TDR | - | Duration assumed - t | - | Y | LL-03 |  |
| PRC-TDRC50 |  | [LL-03] Delivery to site (Heet) - TDR coaxial cable (5,500 LM) | 3d | 2027-04-28 | 2027-04-30 | PRC-TDRC40 | 40d |  |  | SAR-7DAY (reviews & procurement 8h) |  |  | - | - | P - Procurement | 2 - Procurement & Co | Procurement | Supplier | All | TDR | - | Planned (contractor) | - | Y | LL-03 |  |
|  | 1.6.3.4 | **LL-04 TDR system** |  | 2027-03-03 | 2027-06-14 |  |  |  |  |  |  |  |  |  |  |  |  |  |  |  |  |  |  |  |  |  |
| PRC-TDR10 |  | [LL-04] Place PO & supplier kick-off - TDR system (interrogator, antenna & accessories) | 3d | 2027-03-03 | 2027-03-07 | APR-1540, SUD-1065, APR-1307 | 56d | 0d | start on or after 2027-02-16 | SAR-OFFICE (Sun-Thu 8h) |  |  | - | - | P - Procurement | 2 - Procurement & Co | Procurement | Supplier | All | TDR | - | Planned (contractor) | - | Y | LL-04 |  |
| PRC-TDR20 |  | [LL-04] Manufacture / supply - TDR system (interrogator, antenna & accessories) | 70d | 2027-03-08 | 2027-05-16 | PRC-TDR10 | 89d | 0d |  | SAR-7DAY (reviews & procurement 8h) | Cost Distribution [283200] | 283,200 | - | D - TDR System, Equi | P - Procurement | 2 - Procurement & Co | Procurement | Supplier | All | TDR | 15 | Duration assumed - t | - | Y | LL-04 | Item 15: 80.0% = 283,200.00 |
| FAT-TDR |  | [LL-04] FAT at manufacturer - TDR system (interrogator, antenna & accessories) | 5d | 2027-05-17 | 2027-05-21 | PRC-TDR20, APR-1660 | 89d | 0d |  | SAR-7DAY (reviews & procurement 8h) | Cost Distribution [26550] | 26,550 | - | F - Documentation, T | P - Procurement | 2 - Procurement & Co | FAT | Supplier | All | TDR | 27 | Planned (contractor) | - | Y | LL-04 | Item 27: 15.0% = 26,550.00 |
| PRC-TDR30 |  | [LL-04] Shipping / import - TDR system (interrogator, antenna & accessories) | 14d | 2027-05-22 | 2027-06-04 | FAT-TDR | 89d | 0d |  | SAR-7DAY (reviews & procurement 8h) |  |  | - | - | P - Procurement | 2 - Procurement & Co | Procurement | Supplier | All | TDR | - | Duration assumed - t | - | Y | LL-04 |  |
| PRC-TDR40 |  | [LL-04] Customs clearance & SABER conformity - TDR system (interrogator, antenna & accessories) | 7d | 2027-06-05 | 2027-06-11 | PRC-TDR30 | 89d | 0d |  | SAR-7DAY (reviews & procurement 8h) |  |  | - | - | P - Procurement | 2 - Procurement & Co | Procurement | Authority | All | TDR | - | Duration assumed - t | - | Y | LL-04 |  |
| PRC-TDR50 |  | [LL-04] Delivery to site (Heet) - TDR system (interrogator, antenna & accessories) | 3d | 2027-06-12 | 2027-06-14 | PRC-TDR40 | 89d | 0d |  | SAR-7DAY (reviews & procurement 8h) |  |  | - | - | P - Procurement | 2 - Procurement & Co | Procurement | Supplier | All | TDR | - | Planned (contractor) | - | Y | LL-04 |  |
|  | 1.6.3.5 | **LL-05 Weather station sensors** |  | 2027-03-03 | 2027-05-07 |  |  |  |  |  |  |  |  |  |  |  |  |  |  |  |  |  |  |  |  |  |
| PRC-WX10 |  | [LL-05] Place PO & supplier kick-off - Weather station sensors | 3d | 2027-03-03 | 2027-03-07 | APR-1540, SUD-1065, APR-1307 | 86d | 0d | start on or after 2027-02-16 | SAR-OFFICE (Sun-Thu 8h) |  |  | - | - | P - Procurement | 2 - Procurement & Co | Procurement | Supplier | All | Weather | - | Planned (contractor) | - | Y | LL-05 |  |
| PRC-WX20 |  | [LL-05] Manufacture / supply - Weather station sensors | 35d | 2027-03-08 | 2027-04-11 | PRC-WX10 | 130d | 0d |  | SAR-7DAY (reviews & procurement 8h) | Cost Distribution [39825] | 39,825 | - | D - TDR System, Equi | P - Procurement | 2 - Procurement & Co | Procurement | Supplier | All | Weather | 16 | Duration assumed - t | - | Y | LL-05 | Item 16: 75.0% = 39,825.00 |
| FAT-WX |  | [LL-05] FAT at manufacturer - Weather station sensors | 2d | 2027-04-12 | 2027-04-13 | PRC-WX20, APR-1660 | 130d | 0d |  | SAR-7DAY (reviews & procurement 8h) | Cost Distribution [8850] | 8,850 | - | F - Documentation, T | P - Procurement | 2 - Procurement & Co | FAT | Supplier | All | Weather | 27 | Planned (contractor) | - | Y | LL-05 | Item 27: 5.0% = 8,850.00 |
| PRC-WX30 |  | [LL-05] Shipping / import - Weather station sensors | 14d | 2027-04-14 | 2027-04-27 | FAT-WX | 130d | 0d |  | SAR-7DAY (reviews & procurement 8h) |  |  | - | - | P - Procurement | 2 - Procurement & Co | Procurement | Supplier | All | Weather | - | Duration assumed - t | - | Y | LL-05 |  |
| PRC-WX40 |  | [LL-05] Customs clearance & SABER conformity - Weather station sensors | 7d | 2027-04-28 | 2027-05-04 | PRC-WX30 | 130d | 0d |  | SAR-7DAY (reviews & procurement 8h) |  |  | - | - | P - Procurement | 2 - Procurement & Co | Procurement | Authority | All | Weather | - | Duration assumed - t | - | Y | LL-05 |  |
| PRC-WX50 |  | [LL-05] Delivery to site (Heet) - Weather station sensors | 3d | 2027-05-05 | 2027-05-07 | PRC-WX40 | 130d | 26d |  | SAR-7DAY (reviews & procurement 8h) |  |  | - | - | P - Procurement | 2 - Procurement & Co | Procurement | Supplier | All | Weather | - | Planned (contractor) | - | Y | LL-05 |  |
|  | 1.6.3.6 | **LL-06 Communication modules & SIM** |  | 2027-03-03 | 2027-04-26 |  |  |  |  |  |  |  |  |  |  |  |  |  |  |  |  |  |  |  |  |  |
| PRC-COM10 |  | [LL-06] Place PO & supplier kick-off - Communication modules & SIM hardware | 3d | 2027-03-03 | 2027-03-07 | APR-1540, SUD-1065, APR-1307 | 94d | 0d | start on or after 2027-02-16 | SAR-OFFICE (Sun-Thu 8h) |  |  | - | - | P - Procurement | 2 - Procurement & Co | Procurement | Supplier | All | Comms | - | Planned (contractor) | - | Y | LL-06 |  |
| PRC-COM20 |  | [LL-06] Manufacture / supply - Communication modules & SIM hardware | 28d | 2027-03-08 | 2027-04-04 | PRC-COM10 | 142d | 0d |  | SAR-7DAY (reviews & procurement 8h) | Cost Distribution [53690] | 53,690 | - | D - TDR System, Equi | P - Procurement | 2 - Procurement & Co | Procurement | Supplier | All | Comms | 17 | Duration assumed - t | - | Y | LL-06 | Item 17: 70.0% = 53,690.00 |
| FAT-COM |  | [LL-06] FAT at manufacturer - Communication modules & SIM hardware | 2d | 2027-04-05 | 2027-04-06 | PRC-COM20, APR-1660 | 142d | 0d |  | SAR-7DAY (reviews & procurement 8h) | Cost Distribution [8850] | 8,850 | - | F - Documentation, T | P - Procurement | 2 - Procurement & Co | FAT | Supplier | All | Comms | 27 | Planned (contractor) | - | Y | LL-06 | Item 27: 5.0% = 8,850.00 |
| PRC-COM30 |  | [LL-06] Shipping / import - Communication modules & SIM hardware | 10d | 2027-04-07 | 2027-04-16 | FAT-COM | 142d | 0d |  | SAR-7DAY (reviews & procurement 8h) |  |  | - | - | P - Procurement | 2 - Procurement & Co | Procurement | Supplier | All | Comms | - | Duration assumed - t | - | Y | LL-06 |  |
| PRC-COM40 |  | [LL-06] Customs clearance & SABER conformity - Communication modules & SIM hardware | 7d | 2027-04-17 | 2027-04-23 | PRC-COM30 | 142d | 0d |  | SAR-7DAY (reviews & procurement 8h) |  |  | - | - | P - Procurement | 2 - Procurement & Co | Procurement | Authority | All | Comms | - | Duration assumed - t | - | Y | LL-06 |  |
| PRC-COM50 |  | [LL-06] Delivery to site (Heet) - Communication modules & SIM hardware | 3d | 2027-04-24 | 2027-04-26 | PRC-COM40 | 142d | 37d |  | SAR-7DAY (reviews & procurement 8h) |  |  | - | - | P - Procurement | 2 - Procurement & Co | Procurement | Supplier | All | Comms | - | Planned (contractor) | - | Y | LL-06 |  |

| ID | WBS | Activity | Duration | Start | Finish | Predecessors | Total float | Free float | Constraint | Calendar | Resources | Cost | Design Stage | BoQ Section | EPC Phase | SoW Stage | Activity Category | Responsible | Section | System | BoQ Item | Basis | Risk Rank | Long Lead | LL No. | BoQ Mapping |
| --- | --- | --- | --- | --- | --- | --- | --- | --- | --- | --- | --- | --- | --- | --- | --- | --- | --- | --- | --- | --- | --- | --- | --- | --- | --- | --- |
|  | 1.6.3.7 | **LL-07 UPS & electrical panels** |  | 2027-03-03 | 2027-05-20 |  |  |  |  |  |  |  |  |  |  |  |  |  |  |  |  |  |  |  |  |  |
| PRC-PWR10 |  | [LL-07] Place PO & supplier kick-off - UPS (min. 4 h) & electrical panels | 3d | 2027-03-03 | 2027-03-07 | APR-1540, SUD-1065, APR-1307 | 65d | 0d | start on or after 2027-02-16 | SAR-OFFICE (Sun-Thu 8h) |  |  | - | - | P - Procurement | 2 - Procurement & Co | Procurement | Supplier | All | Power | - | Planned (contractor) | - | Y | LL-07 |  |
| PRC-PWR20 |  | [LL-07] Manufacture / supply - UPS (min. 4 h) & electrical panels | 56d | 2027-03-08 | 2027-05-02 | PRC-PWR10 | 101d | 0d |  | SAR-7DAY (reviews & procurement 8h) | Cost Distribution [24544] | 24,544 | - | D - TDR System, Equi | P - Procurement | 2 - Procurement & Co | Procurement | Supplier | All | Power | 18 | Duration assumed - t | - | Y | LL-07 | Item 18: 65.0% = 24,544.00 |
| FAT-PWR |  | [LL-07] FAT at manufacturer - UPS (min. 4 h) & electrical panels | 3d | 2027-05-03 | 2027-05-05 | PRC-PWR20, APR-1660 | 101d | 0d |  | SAR-7DAY (reviews & procurement 8h) | Cost Distribution [8850] | 8,850 | - | F - Documentation, T | P - Procurement | 2 - Procurement & Co | FAT | Supplier | All | Power | 27 | Planned (contractor) | - | Y | LL-07 | Item 27: 5.0% = 8,850.00 |
| PRC-PWR30 |  | [LL-07] Shipping / import - UPS (min. 4 h) & electrical panels | 7d | 2027-05-06 | 2027-05-12 | FAT-PWR | 101d | 0d |  | SAR-7DAY (reviews & procurement 8h) |  |  | - | - | P - Procurement | 2 - Procurement & Co | Procurement | Supplier | All | Power | - | Duration assumed - t | - | Y | LL-07 |  |
| PRC-PWR40 |  | [LL-07] Customs clearance & SABER conformity - UPS (min. 4 h) & electrical panels | 5d | 2027-05-13 | 2027-05-17 | PRC-PWR30 | 101d | 0d |  | SAR-7DAY (reviews & procurement 8h) |  |  | - | - | P - Procurement | 2 - Procurement & Co | Procurement | Authority | All | Power | - | Duration assumed - t | - | Y | LL-07 |  |
| PRC-PWR50 |  | [LL-07] Delivery to site (Heet) - UPS (min. 4 h) & electrical panels | 3d | 2027-05-18 | 2027-05-20 | PRC-PWR40 | 101d | 2d |  | SAR-7DAY (reviews & procurement 8h) |  |  | - | - | P - Procurement | 2 - Procurement & Co | Procurement | Supplier | All | Power | - | Planned (contractor) | - | Y | LL-07 |  |
|  | 1.6.3.8 | **LL-08 Local-cloud hardware (KSA)** |  | 2027-03-14 | 2027-05-06 |  |  |  |  |  |  |  |  |  |  |  |  |  |  |  |  |  |  |  |  |  |
| PRC-CLD10 |  | [LL-08] Place PO & supplier kick-off - Local-cloud hardware & licences (KSA hosted) | 3d | 2027-03-14 | 2027-03-16 | APR-1540, APR-1620, SUD-1065, APR-1307 | 78d | 0d | start on or after 2027-02-16 | SAR-OFFICE (Sun-Thu 8h) |  |  | - | - | P - Procurement | 2 - Procurement & Co | Procurement | Supplier | All | Cloud | - | Planned (contractor) | - | Y | LL-08 |  |
| PRC-CLD20 |  | [LL-08] Manufacture / supply - Local-cloud hardware & licences (KSA hosted) | 28d | 2027-03-17 | 2027-04-13 | PRC-CLD10 | 114d | 0d |  | SAR-7DAY (reviews & procurement 8h) | Cost Distribution [380550] | 380,550 | - | E - Testing, Integra | P - Procurement | 2 - Procurement & Co | Procurement | Supplier | All | Cloud | 22 | Duration assumed - t | - | Y | LL-08 | Item 22: 75.0% = 380,550.00 |
| FAT-CLD |  | [LL-08] FAT at manufacturer - Local-cloud hardware & licences (KSA hosted) | 3d | 2027-04-14 | 2027-04-16 | PRC-CLD20, APR-1660 | 114d | 0d |  | SAR-7DAY (reviews & procurement 8h) | Cost Distribution [8850] | 8,850 | - | F - Documentation, T | P - Procurement | 2 - Procurement & Co | FAT | Supplier | All | Cloud | 27 | Planned (contractor) | - | Y | LL-08 | Item 27: 5.0% = 8,850.00 |
| PRC-CLD30 |  | [LL-08] Shipping / import - Local-cloud hardware & licences (KSA hosted) | 10d | 2027-04-17 | 2027-04-26 | FAT-CLD | 114d | 0d |  | SAR-7DAY (reviews & procurement 8h) |  |  | - | - | P - Procurement | 2 - Procurement & Co | Procurement | Supplier | All | Cloud | - | Duration assumed - t | - | Y | LL-08 |  |
| PRC-CLD40 |  | [LL-08] Customs clearance & SABER conformity - Local-cloud hardware & licences (KSA hosted) | 7d | 2027-04-27 | 2027-05-03 | PRC-CLD30 | 114d | 0d |  | SAR-7DAY (reviews & procurement 8h) |  |  | - | - | P - Procurement | 2 - Procurement & Co | Procurement | Authority | All | Cloud | - | Duration assumed - t | - | Y | LL-08 |  |
| PRC-CLD50 |  | [LL-08] Delivery to site (Heet) - Local-cloud hardware & licences (KSA hosted) | 3d | 2027-05-04 | 2027-05-06 | PRC-CLD40 | 114d | 2d |  | SAR-7DAY (reviews & procurement 8h) |  |  | - | - | P - Procurement | 2 - Procurement & Co | Procurement | Supplier | All | Cloud | - | Planned (contractor) | - | Y | LL-08 |  |
|  | 1.6.3.9 | **LL-09 FO closures & accessories** |  | 2027-03-03 | 2027-04-28 |  |  |  |  |  |  |  |  |  |  |  |  |  |  |  |  |  |  |  |  |  |
| PRC-CLS10 |  | [LL-09] Place PO & supplier kick-off - FO closures, splice trays, connectors & pigtails | 3d | 2027-03-03 | 2027-03-07 | APR-1550, SUD-1065, APR-1307 | 21d | 0d | start on or after 2027-02-16 | SAR-OFFICE (Sun-Thu 8h) |  |  | - | - | P - Procurement | 2 - Procurement & Co | Procurement | Supplier | All | DAS | - | Planned (contractor) | - | Y | LL-09 |  |
| PRC-CLS20 |  | [LL-09] Manufacture / supply - FO closures, splice trays, connectors & pigtails | 28d | 2027-03-08 | 2027-04-04 | PRC-CLS10 | 35d | 0d |  | SAR-7DAY (reviews & procurement 8h) | Cost Distribution [137942] | 137,942 | - | C - Materials, Civil | P - Procurement | 2 - Procurement & Co | Procurement | Supplier | All | DAS | 11 | Duration assumed - t | - | Y | LL-09 | Item 11: 70.0% = 137,942.00 |
| PRC-CLS30 |  | [LL-09] Shipping / import - FO closures, splice trays, connectors & pigtails | 14d | 2027-04-05 | 2027-04-18 | PRC-CLS20 | 35d | 0d |  | SAR-7DAY (reviews & procurement 8h) |  |  | - | - | P - Procurement | 2 - Procurement & Co | Procurement | Supplier | All | DAS | - | Duration assumed - t | - | Y | LL-09 |  |
| PRC-CLS40 |  | [LL-09] Customs clearance & SABER conformity - FO closures, splice trays, connectors & pigtails | 7d | 2027-04-19 | 2027-04-25 | PRC-CLS30 | 35d | 0d |  | SAR-7DAY (reviews & procurement 8h) |  |  | - | - | P - Procurement | 2 - Procurement & Co | Procurement | Authority | All | DAS | - | Duration assumed - t | - | Y | LL-09 |  |
| PRC-CLS50 |  | [LL-09] Delivery to site (Heet) - FO closures, splice trays, connectors & pigtails | 3d | 2027-04-26 | 2027-04-28 | PRC-CLS40 | 35d |  |  | SAR-7DAY (reviews & procurement 8h) |  |  | - | - | P - Procurement | 2 - Procurement & Co | Procurement | Supplier | All | DAS | - | Planned (contractor) | - | Y | LL-09 |  |
|  | 1.6.4 | **Standard / Local Items - PO, Supply & Delivery (handholes, conduits, marker posts, sweet sand)** |  | 2027-03-03 | 2027-03-31 |  |  |  |  |  |  |  |  |  |  |  |  |  |  |  |  |  |  |  |  |  |
| PRC-CND10 |  | Place PO & supplier kick-off - Steel & rigid conduits | 3d | 2027-03-03 | 2027-03-07 | APR-1550, SUD-1065, APR-1307 | 30d | 0d | start on or after 2027-02-16 | SAR-OFFICE (Sun-Thu 8h) |  |  | - | - | P - Procurement | 2 - Procurement & Co | Procurement | Supplier | All | Civil | - | Planned (contractor) | - | N | - |  |
| PRC-HH10 |  | Place PO & supplier kick-off - Handholes & manholes (precast) | 3d | 2027-03-03 | 2027-03-07 | APR-1550, SUD-1065, APR-1307 | 25d | 0d | start on or after 2027-02-16 | SAR-OFFICE (Sun-Thu 8h) |  |  | - | - | P - Procurement | 2 - Procurement & Co | Procurement | Supplier | All | Civil | - | Planned (contractor) | - | N | - |  |
| PRC-MRK10 |  | Place PO & supplier kick-off - Marker posts, warning tape & route markers | 3d | 2027-03-03 | 2027-03-07 | APR-1550, SUD-1065, APR-1307 | 131d | 0d | start on or after 2027-02-16 | SAR-OFFICE (Sun-Thu 8h) |  |  | - | - | P - Procurement | 2 - Procurement & Co | Procurement | Supplier | All | Civil | - | Planned (contractor) | - | N | - |  |
| PRC-SND10 |  | Arrange sweet-sand source, approval & stockpile at site | 7d | 2027-03-03 | 2027-03-09 | APR-1550, APR-1307 | 47d | 46d | start on or after 2027-02-16 | SAR-7DAY (reviews & procurement 8h) | Cost Distribution [195187] | 195,186.75 | - | C - Materials, Civil | P - Procurement | 2 - Procurement & Co | Procurement | Supplier | All | Civil | 10 | Planned (contractor) | - | N | - | Item 10: 15.0% = 195,186.75 |
| PRC-CND20 |  | Manufacture / supply - Steel & rigid conduits | 14d | 2027-03-08 | 2027-03-21 | PRC-CND10 | 48d | 0d |  | SAR-7DAY (reviews & procurement 8h) | Cost Distribution [68203.4] | 68,203.41 | - | C - Materials, Civil | P - Procurement | 2 - Procurement & Co | Procurement | Supplier | All | Civil | 13 | Duration assumed - t | - | N | - | Item 13: 55.0% = 68,203.41 |
| PRC-HH20 |  | Manufacture / supply - Handholes & manholes (precast) | 21d | 2027-03-08 | 2027-03-28 | PRC-HH10 | 41d | 0d |  | SAR-7DAY (reviews & procurement 8h) | Cost Distribution [104433] | 104,432.83 | - | C - Materials, Civil | P - Procurement | 2 - Procurement & Co | Procurement | Supplier | All | Civil | 12 | Duration assumed - t | - | N | - | Item 12: 60.0% = 104,432.83 |
| PRC-MRK20 |  | Manufacture / supply - Marker posts, warning tape & route markers | 14d | 2027-03-08 | 2027-03-21 | PRC-MRK10 | 194d | 0d |  | SAR-7DAY (reviews & procurement 8h) | Cost Distribution [21240] | 21,240 | - | C - Materials, Civil | P - Procurement | 2 - Procurement & Co | Procurement | Supplier | All | Civil | 14 | Duration assumed - t | - | N | - | Item 14: 60.0% = 21,240.00 |
| PRC-CND50 |  | Delivery to site (Heet) - Steel & rigid conduits | 3d | 2027-03-22 | 2027-03-24 | PRC-CND20 | 48d | 47d |  | SAR-7DAY (reviews & procurement 8h) |  |  | - | - | P - Procurement | 2 - Procurement & Co | Procurement | Supplier | All | Civil | - | Planned (contractor) | - | N | - |  |
| PRC-MRK50 |  | Delivery to site (Heet) - Marker posts, warning tape & route markers | 3d | 2027-03-22 | 2027-03-24 | PRC-MRK20 | 194d | 84d |  | SAR-7DAY (reviews & procurement 8h) |  |  | - | - | P - Procurement | 2 - Procurement & Co | Procurement | Supplier | All | Civil | - | Planned (contractor) | - | N | - |  |
| PRC-HH50 |  | Delivery to site (Heet) - Handholes & manholes (precast) | 3d | 2027-03-29 | 2027-03-31 | PRC-HH20 | 41d | 40d |  | SAR-7DAY (reviews & procurement 8h) |  |  | - | - | P - Procurement | 2 - Procurement & Co | Procurement | Supplier | All | Civil | - | Planned (contractor) | - | N | - |  |

| ID | WBS | Activity | Duration | Start | Finish | Predecessors | Total float | Free float | Resources | Cost | BoQ Mapping | Design Stage | BoQ Section | EPC Phase | SoW Stage | Activity Category | Responsible | Section | System | BoQ Item | Basis | Risk Rank | Long Lead | LL No. |
| --- | --- | --- | --- | --- | --- | --- | --- | --- | --- | --- | --- | --- | --- | --- | --- | --- | --- | --- | --- | --- | --- | --- | --- | --- |
|  | 1.7 | **CONSTRUCTION (C)** |  | 2027-04-25 | 2027-10-05 |  |  |  |  |  |  |  |  |  |  |  |  |  |  |  |  |  |  |  |
|  | 1.7.2 | **Enabling Works by Section (SoW 7): Civil, Cables, Splicing & Testing - risk-ranked** |  | 2027-04-25 | 2027-09-21 |  |  |  |  |  |  |  |  |  |  |  |  |  |  |  |  |  |  |  |
|  | 1.7.2.1 | **Section 1 (KP 0+000 to 1+100) - Civil Works, Cables Installation, Splicing & Testing** |  | 2027-04-25 | 2027-06-17 |  |  |  |  |  |  |  |  |  |  |  |  |  |  |  |  |  |  |  |
| CIV-110 |  | Section 1 - excavate trench (800x200 mm) & sweet-sand bedding, 1,100 LM | 12d | 2027-04-25 | 2027-05-10 | MOB-3010, PRC-SND10, MGT-1090 | 1d | 0d | Cost Distribution [143137]; Trench Crew [96 h] | 143,136.95 | Item 10: 11.0% = 143,136.95 | - | C - Materials, Civil | C - Construction | 2 - Procurement & Co | Civil Works | Contractor | S1 | Civil | 10 | Planned (contractor) | R1 | N | - |
| CIV-120 |  | Section 1 - handholes / manholes installation | 2d | 2027-05-11 | 2027-05-12 | CIV-110, PRC-HH50 | 1d |  | Cost Distribution [13924.4]; Civil Crew [16 h] | 13,924.38 | Item 12: 8.0% = 13,924.38 | - | C - Materials, Civil | C - Construction | 2 - Procurement & Co | Civil Works | Contractor | S1 | Civil | 12 | Planned (contractor) | R1 | N | - |
| CIV-130 |  | Section 1 - steel & rigid conduits at culverts / track crossings | 2d | 2027-05-11 | 2027-05-12 | CIV-110, PRC-CND50, PRM-2120 | 1d |  | Cost Distribution [11160.6]; Civil Crew [16 h] | 11,160.56 | Item 13: 9.0% = 11,160.56 | - | C - Materials, Civil | C - Construction | 2 - Procurement & Co | Civil Works | Contractor | S1 | Civil | 13 | Planned (contractor) | R1 | N | - |
| CAB-110 |  | Section 1 - Layer 1: lay DSS cable, pre-installed connectors, OTDR test | 4d | 2027-05-20 | 2027-05-25 | CIV-120, CIV-130, PRC-DSS50 | 0d |  | Cost Distribution [41114.2]; Cable Crew [32 h] | 41,114.15 | Item 09: 7.0% = 41,114.15 | - | C - Materials, Civil | C - Construction | 2 - Procurement & Co | Installation | Contractor | S1 | DSS | 09 | Planned (contractor) | R1 | N | - |
| CAB-120 |  | Section 1 - backfill & compaction - layer 1 | 2d | 2027-05-26 | 2027-05-27 | CAB-110 | 0d |  | Cost Distribution [26024.9]; Trench Crew [16 h] | 26,024.9 | Item 10: 2.0% = 26,024.90 | - | C - Materials, Civil | C - Construction | 2 - Procurement & Co | Civil Works | Contractor | S1 | Civil | 10 | Planned (contractor) | R1 | N | - |
| CAB-130 |  | Section 1 - Layer 2: pull 48-core FO cable (DAS), OTDR test | 4d | 2027-05-30 | 2027-06-02 | CAB-120, PRC-FO50 | 0d |  | Cost Distribution [53114.2]; Cable Crew [32 h] | 53,114.16 | Item 08: 8.0% = 53,114.16 | - | C - Materials, Civil | C - Construction | 2 - Procurement & Co | Installation | Contractor | S1 | DAS | 08 | Planned (contractor) | R1 | N | - |
| SPL-110 |  | Section 1 - fusion splicing (<=0.1 dB), FO closures & OTDR splice-loss test | 3d | 2027-06-03 | 2027-06-07 | CAB-130, PRC-CLS50 | 0d |  | Cost Distribution [11823.6]; Splicing & OTDR Team [24 h] | 11,823.6 | Item 11: 6.0% = 11,823.60 | - | C - Materials, Civil | C - Construction | 2 - Procurement & Co | Installation | Contractor | S1 | DAS | 11 | Planned (contractor) | R1 | N | - |
| CAB-140 |  | Section 1 - backfill & compaction - layer 2 | 2d | 2027-06-08 | 2027-06-09 | SPL-110 | 0d |  | Cost Distribution [26024.9]; Trench Crew [16 h] | 26,024.9 | Item 10: 2.0% = 26,024.90 | - | C - Materials, Civil | C - Construction | 2 - Procurement & Co | Civil Works | Contractor | S1 | Civil | 10 | Planned (contractor) | R1 | N | - |
| CAB-150 |  | Section 1 - Layer 3: lay TDR coaxial cable, continuity test | 3d | 2027-06-10 | 2027-06-14 | CAB-140, PRC-TDRC50 | 0d |  | Cost Distribution [46987.6]; Cable Crew [24 h] | 46,987.6 | Item 07: 8.0% = 46,987.60 | - | C - Materials, Civil | C - Construction | 2 - Procurement & Co | Installation | Contractor | S1 | TDR | 07 | Planned (contractor) | R1 | N | - |
| CAB-160 |  | Section 1 - final backfill, compaction & reinstatement | 2d | 2027-06-15 | 2027-06-16 | CAB-150 | 0d |  | Cost Distribution [26024.9]; Trench Crew [16 h] | 26,024.9 | Item 10: 2.0% = 26,024.90 | - | C - Materials, Civil | C - Construction | 2 - Procurement & Co | Civil Works | Contractor | S1 | Civil | 10 | Planned (contractor) | R1 | N | - |
| CIV-140 |  | Section 1 - marker posts, warning tape & route markers | 1d | 2027-06-17 | 2027-06-17 | CAB-160, PRC-MRK50 | 77d |  | Cost Distribution [2832]; Civil Crew [8 h] | 2,832 | Item 14: 8.0% = 2,832.00 | - | C - Materials, Civil | C - Construction | 2 - Procurement & Co | Civil Works | Contractor | S1 | Civil | 14 | Planned (contractor) | R1 | N | - |
| TST-110 |  | Section 1 - final OTDR certification & test record | 1d | 2027-06-17 | 2027-06-17 | CAB-160 | 75d | 68d | Cost Distribution [991.2]; Splicing & OTDR Team [8 h] | 991.2 | Item 19: 10.0% = 991.20 | - | E - Testing, Integra | C - Construction | 2 - Procurement & Co | Testing / Commission | Contractor | S1 | DAS | 19 | Planned (contractor) | R1 | N | - |
|  | 1.7.2.2 | **Section 2 (KP 1+100 to 2+200) - Civil Works, Cables Installation, Splicing & Testing** |  | 2027-05-11 | 2027-07-04 |  |  |  |  |  |  |  |  |  |  |  |  |  |  |  |  |  |  |  |
| CIV-210 |  | Section 2 - excavate trench (800x200 mm) & sweet-sand bedding, 1,100 LM | 12d | 2027-05-11 | 2027-06-01 | CIV-110 | 19d | 0d | Cost Distribution [143137]; Trench Crew [96 h] | 143,136.95 | Item 10: 11.0% = 143,136.95 | - | C - Materials, Civil | C - Construction | 2 - Procurement & Co | Civil Works | Contractor | S2 | Civil | 10 | Planned (contractor) | R2 | N | - |
| CIV-220 |  | Section 2 - handholes / manholes installation | 2d | 2027-06-02 | 2027-06-03 | CIV-210, PRC-HH50 | 19d | 0d | Cost Distribution [13924.4]; Civil Crew [16 h] | 13,924.38 | Item 12: 8.0% = 13,924.38 | - | C - Materials, Civil | C - Construction | 2 - Procurement & Co | Civil Works | Contractor | S2 | Civil | 12 | Planned (contractor) | R2 | N | - |
| CIV-230 |  | Section 2 - steel & rigid conduits at culverts / track crossings | 2d | 2027-06-02 | 2027-06-03 | CIV-210, PRC-CND50, PRM-2120 | 19d | 0d | Cost Distribution [11160.6]; Civil Crew [16 h] | 11,160.56 | Item 13: 9.0% = 11,160.56 | - | C - Materials, Civil | C - Construction | 2 - Procurement & Co | Civil Works | Contractor | S2 | Civil | 13 | Planned (contractor) | R2 | N | - |
| CAB-210 |  | Section 2 - Layer 1: lay DSS cable, pre-installed connectors, OTDR test | 4d | 2027-06-06 | 2027-06-09 | CIV-220, CIV-230, PRC-DSS50, CAB-110 | 19d | 0d | Cost Distribution [41114.2]; Cable Crew [32 h] | 41,114.15 | Item 09: 7.0% = 41,114.15 | - | C - Materials, Civil | C - Construction | 2 - Procurement & Co | Installation | Contractor | S2 | DSS | 09 | Planned (contractor) | R2 | N | - |
| CAB-220 |  | Section 2 - backfill & compaction - layer 1 | 2d | 2027-06-10 | 2027-06-13 | CAB-210 | 19d | 0d | Cost Distribution [26024.9]; Trench Crew [16 h] | 26,024.9 | Item 10: 2.0% = 26,024.90 | - | C - Materials, Civil | C - Construction | 2 - Procurement & Co | Civil Works | Contractor | S2 | Civil | 10 | Planned (contractor) | R2 | N | - |
| CAB-230 |  | Section 2 - Layer 2: pull 48-core FO cable (DAS), OTDR test | 4d | 2027-06-14 | 2027-06-17 | CAB-220, PRC-FO50, CAB-130 | 19d | 0d | Cost Distribution [53114.2]; Cable Crew [32 h] | 53,114.16 | Item 08: 8.0% = 53,114.16 | - | C - Materials, Civil | C - Construction | 2 - Procurement & Co | Installation | Contractor | S2 | DAS | 08 | Planned (contractor) | R2 | N | - |
| SPL-210 |  | Section 2 - fusion splicing (<=0.1 dB), FO closures & OTDR splice-loss test | 3d | 2027-06-20 | 2027-06-22 | CAB-230, PRC-CLS50 | 19d | 0d | Cost Distribution [11823.6]; Splicing & OTDR Team [24 h] | 11,823.6 | Item 11: 6.0% = 11,823.60 | - | C - Materials, Civil | C - Construction | 2 - Procurement & Co | Installation | Contractor | S2 | DAS | 11 | Planned (contractor) | R2 | N | - |
| CAB-240 |  | Section 2 - backfill & compaction - layer 2 | 2d | 2027-06-23 | 2027-06-24 | SPL-210 | 19d | 0d | Cost Distribution [26024.9]; Trench Crew [16 h] | 26,024.9 | Item 10: 2.0% = 26,024.90 | - | C - Materials, Civil | C - Construction | 2 - Procurement & Co | Civil Works | Contractor | S2 | Civil | 10 | Planned (contractor) | R2 | N | - |
| CAB-250 |  | Section 2 - Layer 3: lay TDR coaxial cable, continuity test | 3d | 2027-06-27 | 2027-06-29 | CAB-240, PRC-TDRC50, CAB-150 | 19d | 0d | Cost Distribution [46987.6]; Cable Crew [24 h] | 46,987.6 | Item 07: 8.0% = 46,987.60 | - | C - Materials, Civil | C - Construction | 2 - Procurement & Co | Installation | Contractor | S2 | TDR | 07 | Planned (contractor) | R2 | N | - |
| CAB-260 |  | Section 2 - final backfill, compaction & reinstatement | 2d | 2027-06-30 | 2027-07-01 | CAB-250 | 19d | 0d | Cost Distribution [26024.9]; Trench Crew [16 h] | 26,024.9 | Item 10: 2.0% = 26,024.90 | - | C - Materials, Civil | C - Construction | 2 - Procurement & Co | Civil Works | Contractor | S2 | Civil | 10 | Planned (contractor) | R2 | N | - |
| CIV-240 |  | Section 2 - marker posts, warning tape & route markers | 1d | 2027-07-04 | 2027-07-04 | CAB-260, PRC-MRK50 | 66d |  | Cost Distribution [2832]; Civil Crew [8 h] | 2,832 | Item 14: 8.0% = 2,832.00 | - | C - Materials, Civil | C - Construction | 2 - Procurement & Co | Civil Works | Contractor | S2 | Civil | 14 | Planned (contractor) | R2 | N | - |
| TST-210 |  | Section 2 - final OTDR certification & test record | 1d | 2027-07-04 | 2027-07-04 | CAB-260 | 64d | 57d | Cost Distribution [991.2]; Splicing & OTDR Team [8 h] | 991.2 | Item 19: 10.0% = 991.20 | - | E - Testing, Integra | C - Construction | 2 - Procurement & Co | Testing / Commission | Contractor | S2 | DAS | 19 | Planned (contractor) | R2 | N | - |

| ID | WBS | Activity | Duration | Start | Finish | Predecessors | Total float | Free float | Resources | Cost | BoQ Mapping | Design Stage | BoQ Section | EPC Phase | SoW Stage | Activity Category | Responsible | Section | System | BoQ Item | Basis | Risk Rank | Long Lead | LL No. |
| --- | --- | --- | --- | --- | --- | --- | --- | --- | --- | --- | --- | --- | --- | --- | --- | --- | --- | --- | --- | --- | --- | --- | --- | --- |
|  | 1.7.2.3 | **Section 3 (KP 2+200 to 3+300) - Civil Works, Cables Installation, Splicing & Testing** |  | 2027-06-17 | 2027-08-04 |  |  |  |  |  |  |  |  |  |  |  |  |  |  |  |  |  |  |  |
| CIV-310 |  | Section 3 - excavate trench (800x200 mm) & sweet-sand bedding, 1,100 LM | 12d | 2027-06-17 | 2027-07-04 | CIV-110, CAB-160 | 0d |  | Cost Distribution [143137]; Trench Crew [96 h] | 143,136.95 | Item 10: 11.0% = 143,136.95 | - | C - Materials, Civil | C - Construction | 2 - Procurement & Co | Civil Works | Contractor | S3 | Civil | 10 | Planned (contractor) | R3 | N | - |
| CIV-320 |  | Section 3 - handholes / manholes installation | 2d | 2027-07-05 | 2027-07-06 | CIV-310, PRC-HH50 | 0d |  | Cost Distribution [13924.4]; Civil Crew [16 h] | 13,924.38 | Item 12: 8.0% = 13,924.38 | - | C - Materials, Civil | C - Construction | 2 - Procurement & Co | Civil Works | Contractor | S3 | Civil | 12 | Planned (contractor) | R3 | N | - |
| CIV-330 |  | Section 3 - steel & rigid conduits at culverts / track crossings | 2d | 2027-07-05 | 2027-07-06 | CIV-310, PRC-CND50, PRM-2120 | 0d |  | Cost Distribution [11160.6]; Civil Crew [16 h] | 11,160.56 | Item 13: 9.0% = 11,160.56 | - | C - Materials, Civil | C - Construction | 2 - Procurement & Co | Civil Works | Contractor | S3 | Civil | 13 | Planned (contractor) | R3 | N | - |
| CAB-310 |  | Section 3 - Layer 1: lay DSS cable, pre-installed connectors, OTDR test | 4d | 2027-07-07 | 2027-07-12 | CIV-320, CIV-330, PRC-DSS50, CAB-210 | 0d |  | Cost Distribution [41114.2]; Cable Crew [32 h] | 41,114.15 | Item 09: 7.0% = 41,114.15 | - | C - Materials, Civil | C - Construction | 2 - Procurement & Co | Installation | Contractor | S3 | DSS | 09 | Planned (contractor) | R3 | N | - |
| CAB-320 |  | Section 3 - backfill & compaction - layer 1 | 2d | 2027-07-13 | 2027-07-14 | CAB-310 | 0d |  | Cost Distribution [26024.9]; Trench Crew [16 h] | 26,024.9 | Item 10: 2.0% = 26,024.90 | - | C - Materials, Civil | C - Construction | 2 - Procurement & Co | Civil Works | Contractor | S3 | Civil | 10 | Planned (contractor) | R3 | N | - |
| CAB-330 |  | Section 3 - Layer 2: pull 48-core FO cable (DAS), OTDR test | 4d | 2027-07-15 | 2027-07-20 | CAB-320, PRC-FO50, CAB-230 | 0d |  | Cost Distribution [53114.2]; Cable Crew [32 h] | 53,114.16 | Item 08: 8.0% = 53,114.16 | - | C - Materials, Civil | C - Construction | 2 - Procurement & Co | Installation | Contractor | S3 | DAS | 08 | Planned (contractor) | R3 | N | - |
| SPL-310 |  | Section 3 - fusion splicing (<=0.1 dB), FO closures & OTDR splice-loss test | 3d | 2027-07-21 | 2027-07-25 | CAB-330, PRC-CLS50 | 0d |  | Cost Distribution [11823.6]; Splicing & OTDR Team [24 h] | 11,823.6 | Item 11: 6.0% = 11,823.60 | - | C - Materials, Civil | C - Construction | 2 - Procurement & Co | Installation | Contractor | S3 | DAS | 11 | Planned (contractor) | R3 | N | - |
| CAB-340 |  | Section 3 - backfill & compaction - layer 2 | 2d | 2027-07-26 | 2027-07-27 | SPL-310 | 0d |  | Cost Distribution [26024.9]; Trench Crew [16 h] | 26,024.9 | Item 10: 2.0% = 26,024.90 | - | C - Materials, Civil | C - Construction | 2 - Procurement & Co | Civil Works | Contractor | S3 | Civil | 10 | Planned (contractor) | R3 | N | - |
| CAB-350 |  | Section 3 - Layer 3: lay TDR coaxial cable, continuity test | 3d | 2027-07-28 | 2027-08-01 | CAB-340, PRC-TDRC50, CAB-250 | 0d |  | Cost Distribution [46987.6]; Cable Crew [24 h] | 46,987.6 | Item 07: 8.0% = 46,987.60 | - | C - Materials, Civil | C - Construction | 2 - Procurement & Co | Installation | Contractor | S3 | TDR | 07 | Planned (contractor) | R3 | N | - |
| CAB-360 |  | Section 3 - final backfill, compaction & reinstatement | 2d | 2027-08-02 | 2027-08-03 | CAB-350 | 0d |  | Cost Distribution [26024.9]; Trench Crew [16 h] | 26,024.9 | Item 10: 2.0% = 26,024.90 | - | C - Materials, Civil | C - Construction | 2 - Procurement & Co | Civil Works | Contractor | S3 | Civil | 10 | Planned (contractor) | R3 | N | - |
| CIV-340 |  | Section 3 - marker posts, warning tape & route markers | 1d | 2027-08-04 | 2027-08-04 | CAB-360, PRC-MRK50 | 43d |  | Cost Distribution [2832]; Civil Crew [8 h] | 2,832 | Item 14: 8.0% = 2,832.00 | - | C - Materials, Civil | C - Construction | 2 - Procurement & Co | Civil Works | Contractor | S3 | Civil | 14 | Planned (contractor) | R3 | N | - |
| TST-310 |  | Section 3 - final OTDR certification & test record | 1d | 2027-08-04 | 2027-08-04 | CAB-360 | 41d | 34d | Cost Distribution [991.2]; Splicing & OTDR Team [8 h] | 991.2 | Item 19: 10.0% = 991.20 | - | E - Testing, Integra | C - Construction | 2 - Procurement & Co | Testing / Commission | Contractor | S3 | DAS | 19 | Planned (contractor) | R3 | N | - |
|  | 1.7.2.4 | **Section 4 (KP 3+300 to 4+400) - Civil Works, Cables Installation, Splicing & Testing** |  | 2027-07-04 | 2027-08-19 |  |  |  |  |  |  |  |  |  |  |  |  |  |  |  |  |  |  |  |
| CIV-410 |  | Section 4 - excavate trench (800x200 mm) & sweet-sand bedding, 1,100 LM | 12d | 2027-07-04 | 2027-07-19 | CIV-210, CAB-260 | 19d | 0d | Cost Distribution [143137]; Trench Crew [96 h] | 143,136.95 | Item 10: 11.0% = 143,136.95 | - | C - Materials, Civil | C - Construction | 2 - Procurement & Co | Civil Works | Contractor | S4 | Civil | 10 | Planned (contractor) | R4 | N | - |
| CIV-420 |  | Section 4 - handholes / manholes installation | 2d | 2027-07-20 | 2027-07-21 | CIV-410, PRC-HH50 | 19d | 0d | Cost Distribution [13924.4]; Civil Crew [16 h] | 13,924.38 | Item 12: 8.0% = 13,924.38 | - | C - Materials, Civil | C - Construction | 2 - Procurement & Co | Civil Works | Contractor | S4 | Civil | 12 | Planned (contractor) | R4 | N | - |
| CIV-430 |  | Section 4 - steel & rigid conduits at culverts / track crossings | 2d | 2027-07-20 | 2027-07-21 | CIV-410, PRC-CND50, PRM-2120 | 19d | 0d | Cost Distribution [11160.6]; Civil Crew [16 h] | 11,160.56 | Item 13: 9.0% = 11,160.56 | - | C - Materials, Civil | C - Construction | 2 - Procurement & Co | Civil Works | Contractor | S4 | Civil | 13 | Planned (contractor) | R4 | N | - |
| CAB-410 |  | Section 4 - Layer 1: lay DSS cable, pre-installed connectors, OTDR test | 4d | 2027-07-22 | 2027-07-27 | CIV-420, CIV-430, PRC-DSS50, CAB-310 | 19d | 0d | Cost Distribution [41114.2]; Cable Crew [32 h] | 41,114.15 | Item 09: 7.0% = 41,114.15 | - | C - Materials, Civil | C - Construction | 2 - Procurement & Co | Installation | Contractor | S4 | DSS | 09 | Planned (contractor) | R4 | N | - |
| CAB-420 |  | Section 4 - backfill & compaction - layer 1 | 2d | 2027-07-28 | 2027-07-29 | CAB-410 | 19d | 0d | Cost Distribution [26024.9]; Trench Crew [16 h] | 26,024.9 | Item 10: 2.0% = 26,024.90 | - | C - Materials, Civil | C - Construction | 2 - Procurement & Co | Civil Works | Contractor | S4 | Civil | 10 | Planned (contractor) | R4 | N | - |
| CAB-430 |  | Section 4 - Layer 2: pull 48-core FO cable (DAS), OTDR test | 4d | 2027-08-01 | 2027-08-04 | CAB-420, PRC-FO50, CAB-330 | 19d | 0d | Cost Distribution [53114.2]; Cable Crew [32 h] | 53,114.16 | Item 08: 8.0% = 53,114.16 | - | C - Materials, Civil | C - Construction | 2 - Procurement & Co | Installation | Contractor | S4 | DAS | 08 | Planned (contractor) | R4 | N | - |
| SPL-410 |  | Section 4 - fusion splicing (<=0.1 dB), FO closures & OTDR splice-loss test | 3d | 2027-08-05 | 2027-08-09 | CAB-430, PRC-CLS50 | 20d | 0d | Cost Distribution [11823.6]; Splicing & OTDR Team [24 h] | 11,823.6 | Item 11: 6.0% = 11,823.60 | - | C - Materials, Civil | C - Construction | 2 - Procurement & Co | Installation | Contractor | S4 | DAS | 11 | Planned (contractor) | R4 | N | - |
| CAB-440 |  | Section 4 - backfill & compaction - layer 2 | 2d | 2027-08-10 | 2027-08-11 | SPL-410 | 20d | 0d | Cost Distribution [26024.9]; Trench Crew [16 h] | 26,024.9 | Item 10: 2.0% = 26,024.90 | - | C - Materials, Civil | C - Construction | 2 - Procurement & Co | Civil Works | Contractor | S4 | Civil | 10 | Planned (contractor) | R4 | N | - |
| CAB-450 |  | Section 4 - Layer 3: lay TDR coaxial cable, continuity test | 3d | 2027-08-12 | 2027-08-16 | CAB-440, PRC-TDRC50, CAB-350 | 20d | 0d | Cost Distribution [46987.6]; Cable Crew [24 h] | 46,987.6 | Item 07: 8.0% = 46,987.60 | - | C - Materials, Civil | C - Construction | 2 - Procurement & Co | Installation | Contractor | S4 | TDR | 07 | Planned (contractor) | R4 | N | - |
| CAB-460 |  | Section 4 - final backfill, compaction & reinstatement | 2d | 2027-08-17 | 2027-08-18 | CAB-450 | 30d | 0d | Cost Distribution [26024.9]; Trench Crew [16 h] | 26,024.9 | Item 10: 2.0% = 26,024.90 | - | C - Materials, Civil | C - Construction | 2 - Procurement & Co | Civil Works | Contractor | S4 | Civil | 10 | Planned (contractor) | R4 | N | - |
| CIV-440 |  | Section 4 - marker posts, warning tape & route markers | 1d | 2027-08-19 | 2027-08-19 | CAB-460, PRC-MRK50 | 32d |  | Cost Distribution [2832]; Civil Crew [8 h] | 2,832 | Item 14: 8.0% = 2,832.00 | - | C - Materials, Civil | C - Construction | 2 - Procurement & Co | Civil Works | Contractor | S4 | Civil | 14 | Planned (contractor) | R4 | N | - |
| TST-410 |  | Section 4 - final OTDR certification & test record | 1d | 2027-08-19 | 2027-08-19 | CAB-460 | 30d | 23d | Cost Distribution [991.2]; Splicing & OTDR Team [8 h] | 991.2 | Item 19: 10.0% = 991.20 | - | E - Testing, Integra | C - Construction | 2 - Procurement & Co | Testing / Commission | Contractor | S4 | DAS | 19 | Planned (contractor) | R4 | N | - |

| ID | WBS | Activity | Duration | Start | Finish | Predecessors | Total float | Free float | Calendar | Resources | Cost | BoQ Mapping | Design Stage | BoQ Section | EPC Phase | SoW Stage | Activity Category | Responsible | Section | System | BoQ Item | Basis | Risk Rank | Long Lead | LL No. |
| --- | --- | --- | --- | --- | --- | --- | --- | --- | --- | --- | --- | --- | --- | --- | --- | --- | --- | --- | --- | --- | --- | --- | --- | --- | --- |
|  | 1.7.2.5 | **Section 5 (KP 4+400 to 5+500) - Civil Works, Cables Installation, Splicing & Testing** |  | 2027-08-04 | 2027-09-21 |  |  |  |  |  |  |  |  |  |  |  |  |  |  |  |  |  |  |  |  |
| CIV-510 |  | Section 5 - excavate trench (800x200 mm) & sweet-sand bedding, 1,100 LM | 12d | 2027-08-04 | 2027-08-19 | CIV-310, CAB-360 | 0d |  |  | Cost Distribution [143137]; Trench Crew [96 h] | 143,136.95 | Item 10: 11.0% = 143,136.95 | - | C - Materials, Civil | C - Construction | 2 - Procurement & Co | Civil Works | Contractor | S5 | Civil | 10 | Planned (contractor) | R5 | N | - |
| CIV-520 |  | Section 5 - handholes / manholes installation | 2d | 2027-08-22 | 2027-08-23 | CIV-510, PRC-HH50 | 0d |  |  | Cost Distribution [13924.4]; Civil Crew [16 h] | 13,924.37 | Item 12: 8.0% = 13,924.37 | - | C - Materials, Civil | C - Construction | 2 - Procurement & Co | Civil Works | Contractor | S5 | Civil | 12 | Planned (contractor) | R5 | N | - |
| CIV-530 |  | Section 5 - steel & rigid conduits at culverts / track crossings | 2d | 2027-08-22 | 2027-08-23 | CIV-510, PRC-CND50, PRM-2120 | 0d |  |  | Cost Distribution [11160.5]; Civil Crew [16 h] | 11,160.55 | Item 13: 9.0% = 11,160.55 | - | C - Materials, Civil | C - Construction | 2 - Procurement & Co | Civil Works | Contractor | S5 | Civil | 13 | Planned (contractor) | R5 | N | - |
| CAB-510 |  | Section 5 - Layer 1: lay DSS cable, pre-installed connectors, OTDR test | 4d | 2027-08-24 | 2027-08-29 | CIV-520, CIV-530, PRC-DSS50, CAB-410 | 0d |  |  | Cost Distribution [41114.2]; Cable Crew [32 h] | 41,114.15 | Item 09: 7.0% = 41,114.15 | - | C - Materials, Civil | C - Construction | 2 - Procurement & Co | Installation | Contractor | S5 | DSS | 09 | Planned (contractor) | R5 | N | - |
| CAB-520 |  | Section 5 - backfill & compaction - layer 1 | 2d | 2027-08-30 | 2027-08-31 | CAB-510 | 0d |  |  | Cost Distribution [26024.9]; Trench Crew [16 h] | 26,024.9 | Item 10: 2.0% = 26,024.90 | - | C - Materials, Civil | C - Construction | 2 - Procurement & Co | Civil Works | Contractor | S5 | Civil | 10 | Planned (contractor) | R5 | N | - |
| CAB-530 |  | Section 5 - Layer 2: pull 48-core FO cable (DAS), OTDR test | 4d | 2027-09-01 | 2027-09-06 | CAB-520, PRC-FO50, CAB-430 | 0d |  |  | Cost Distribution [53114.2]; Cable Crew [32 h] | 53,114.16 | Item 08: 8.0% = 53,114.16 | - | C - Materials, Civil | C - Construction | 2 - Procurement & Co | Installation | Contractor | S5 | DAS | 08 | Planned (contractor) | R5 | N | - |
| SPL-510 |  | Section 5 - fusion splicing (<=0.1 dB), FO closures & OTDR splice-loss test | 3d | 2027-09-07 | 2027-09-09 | CAB-530, PRC-CLS50 | 0d |  |  | Cost Distribution [11823.6]; Splicing & OTDR Team [24 h] | 11,823.6 | Item 11: 6.0% = 11,823.60 | - | C - Materials, Civil | C - Construction | 2 - Procurement & Co | Installation | Contractor | S5 | DAS | 11 | Planned (contractor) | R5 | N | - |
| CAB-540 |  | Section 5 - backfill & compaction - layer 2 | 2d | 2027-09-12 | 2027-09-13 | SPL-510 | 0d |  |  | Cost Distribution [26024.9]; Trench Crew [16 h] | 26,024.9 | Item 10: 2.0% = 26,024.90 | - | C - Materials, Civil | C - Construction | 2 - Procurement & Co | Civil Works | Contractor | S5 | Civil | 10 | Planned (contractor) | R5 | N | - |
| CAB-550 |  | Section 5 - Layer 3: lay TDR coaxial cable, continuity test | 3d | 2027-09-14 | 2027-09-16 | CAB-540, PRC-TDRC50, CAB-450 | 0d |  |  | Cost Distribution [46987.6]; Cable Crew [24 h] | 46,987.6 | Item 07: 8.0% = 46,987.60 | - | C - Materials, Civil | C - Construction | 2 - Procurement & Co | Installation | Contractor | S5 | TDR | 07 | Planned (contractor) | R5 | N | - |
| CAB-560 |  | Section 5 - final backfill, compaction & reinstatement | 2d | 2027-09-19 | 2027-09-20 | CAB-550 | 7d | 0d |  | Cost Distribution [26024.9]; Trench Crew [16 h] | 26,024.9 | Item 10: 2.0% = 26,024.90 | - | C - Materials, Civil | C - Construction | 3 - Testing & Commis | Civil Works | Contractor | S5 | Civil | 10 | Planned (contractor) | R5 | N | - |
| CIV-540 |  | Section 5 - marker posts, warning tape & route markers | 1d | 2027-09-21 | 2027-09-21 | CAB-560, PRC-MRK50 | 9d |  |  | Cost Distribution [2832]; Civil Crew [8 h] | 2,832 | Item 14: 8.0% = 2,832.00 | - | C - Materials, Civil | C - Construction | 3 - Testing & Commis | Civil Works | Contractor | S5 | Civil | 14 | Planned (contractor) | R5 | N | - |
| TST-510 |  | Section 5 - final OTDR certification & test record | 1d | 2027-09-21 | 2027-09-21 | CAB-560 | 7d | 0d |  | Cost Distribution [991.2]; Splicing & OTDR Team [8 h] | 991.2 | Item 19: 10.0% = 991.20 | - | E - Testing, Integra | C - Construction | 3 - Testing & Commis | Testing / Commission | Contractor | S5 | DAS | 19 | Planned (contractor) | R5 | N | - |
|  | 1.7.3 | **Station Power, Shelter & Field Systems (TDR, Weather, Comms)** |  | 2027-04-25 | 2027-09-22 |  |  |  |  |  |  |  |  |  |  |  |  |  |  |  |  |  |  |  |  |
| SHL-3410 |  | Shelter expansion - civil works (if required per assessment) | 8d | 2027-04-25 | 2027-05-04 | PRM-2120, APR-1560, MOB-3010 | 79d | 8d |  | Cost Distribution [3776]; Civil Crew [64 h] | 3,776 | Item 18: 10.0% = 3,776.00 | - | D - TDR System, Equi | C - Construction | 2 - Procurement & Co | Installation | Contractor | All | Power | 18 | Planned (contractor) | - | N | - |
| PWR-3420 |  | Electrical installation - panels & power upgrade | 6d | 2027-05-23 | 2027-05-30 | SHL-3410, PRC-PWR50 | 71d | 0d |  | Cost Distribution [5664]; Electrical Crew [48 h] | 5,664 | Item 18: 15.0% = 5,664.00 | - | D - TDR System, Equi | C - Construction | 2 - Procurement & Co | Installation | Contractor | All | Power | 18 | Planned (contractor) | - | N | - |
| PWR-3430 |  | UPS installation & 4-hour autonomy test | 3d | 2027-05-31 | 2027-06-02 | PWR-3420 | 71d | 0d |  | Cost Distribution [3776]; Electrical Crew [24 h] | 3,776 | Item 18: 10.0% = 3,776.00 | - | D - TDR System, Equi | C - Construction | 2 - Procurement & Co | Installation | Contractor | All | Power | 18 | Planned (contractor) | - | N | - |
| COM-3710 |  | Communication modules installation | 2d | 2027-06-03 | 2027-06-06 | PRC-COM50, PWR-3430 | 75d | 0d |  | Cost Distribution [11505]; Commissioning Team [32 h] | 11,505 | Item 17: 15.0% = 11,505.00 | - | D - TDR System, Equi | C - Construction | 2 - Procurement & Co | Installation | Contractor | All | Comms | 17 | Planned (contractor) | - | N | - |
| WX-3610 |  | Weather station sensors installation | 3d | 2027-06-03 | 2027-06-07 | PRC-WX50, PWR-3430 | 74d | 0d |  | Cost Distribution [7965]; Commissioning Team [48 h] | 7,965 | Item 16: 15.0% = 7,965.00 | - | D - TDR System, Equi | C - Construction | 2 - Procurement & Co | Installation | Contractor | All | Weather | 16 | Planned (contractor) | - | N | - |
| COM-3720 |  | SIM activation, alert & e-mail distribution configuration | 3d | 2027-06-07 | 2027-06-09 | COM-3710 | 75d |  |  | Cost Distribution [11505]; Commissioning Team [48 h] | 11,505 | Item 17: 15.0% = 11,505.00 | - | D - TDR System, Equi | C - Construction | 2 - Procurement & Co | Installation | Contractor | All | Comms | 17 | Planned (contractor) | - | N | - |
| WX-3620 |  | Weather station integration with data logger | 3d | 2027-06-08 | 2027-06-10 | WX-3610 | 74d |  |  | Cost Distribution [5310]; Commissioning Team [48 h] | 5,310 | Item 16: 10.0% = 5,310.00 | - | D - TDR System, Equi | C - Construction | 2 - Procurement & Co | Installation | Contractor | All | Weather | 16 | Planned (contractor) | - | N | - |
| TDR-3510 |  | TDR system installation - interrogator & antenna | 5d | 2027-06-15 | 2027-06-21 | PRC-TDR50, PWR-3430 | 63d |  |  | Cost Distribution [35400]; Commissioning Team [80 h] | 35,400 | Item 15: 10.0% = 35,400.00 | - | D - TDR System, Equi | C - Construction | 2 - Procurement & Co | Installation | Contractor | All | TDR | 15 | Planned (contractor) | - | N | - |
| TDR-3520 |  | TDR configuration, calibration & pre-commissioning | 4d | 2027-09-19 | 2027-09-22 | TDR-3510, CAB-550 | 0d |  |  | Cost Distribution [35400]; Commissioning Team [64 h] | 35,400 | Item 15: 10.0% = 35,400.00 | - | D - TDR System, Equi | C - Construction | 3 - Testing & Commis | Installation | Contractor | All | TDR | 15 | Planned (contractor) | - | N | - |
|  | 1.7.4 | **Local Cloud, Cybersecurity & Integration Installation** |  | 2027-05-09 | 2027-10-05 |  |  |  |  |  |  |  |  |  |  |  |  |  |  |  |  |  |  |  |  |
| CLD-3810 |  | Local KSA cloud infrastructure - provisioning & set-up | 8d | 2027-05-09 | 2027-05-24 | PRC-CLD50, APR-1620 | 76d | 0d | SAR-OFFICE (Sun-Thu 8h) | Cost Distribution [65962]; IT/OT Engineers [128 h] | 65,962 | Item 22: 13.0% = 65,962.00 | - | E - Testing, Integra | C - Construction | 2 - Procurement & Co | Installation | Contractor | All | Cloud | 22 | Planned (contractor) | - | N | - |
| CLD-3820 |  | Local KSA cloud infrastructure - hardening & connectivity | 8d | 2027-05-25 | 2027-06-03 | CLD-3810 | 78d | 2d | SAR-OFFICE (Sun-Thu 8h) | Cost Distribution [60888]; IT/OT Engineers [128 h] | 60,888 | Item 22: 12.0% = 60,888.00 | - | E - Testing, Integra | C - Construction | 2 - Procurement & Co | Installation | Contractor | All | Cloud | 22 | Planned (contractor) | - | N | - |
| CYB-3920 |  | Cybersecurity controls implementation & hardening | 10d | 2027-05-25 | 2027-06-07 | CLD-3810, APR-1620 | 76d | 0d | SAR-OFFICE (Sun-Thu 8h) | Cost Distribution [169920]; IT/OT Engineers [160 h] | 169,920 | Item 23: 30.0% = 169,920.00 | - | E - Testing, Integra | C - Construction | 2 - Procurement & Co | Installation | Contractor | All | Cyber | 23 | Planned (contractor) | - | N | - |
| INT-4010 |  | Integration with existing system & iSiteCentral - interfaces & data mapping | 8d | 2027-09-26 | 2027-10-05 | CLD-3820, APR-1650, TDR-3520, COM-3720, WX-3620 | 0d |  | SAR-OFFICE (Sun-Thu 8h) | Cost Distribution [177000]; IT/OT Engineers [128 h] | 177,000 | Item 21: 50.0% = 177,000.00 | - | E - Testing, Integra | C - Construction | 3 - Testing & Commis | Installation | Contractor | All | Integration | 21 | Planned (contractor) | - | N | - |

| ID | WBS | Activity | Duration | Start | Finish | Predecessors | Total float | Free float | Calendar | Resources | Cost | BoQ Mapping | Design Stage | BoQ Section | EPC Phase | SoW Stage | Activity Category | Responsible | Section | System | BoQ Item | Basis | Risk Rank | Long Lead | LL No. |
| --- | --- | --- | --- | --- | --- | --- | --- | --- | --- | --- | --- | --- | --- | --- | --- | --- | --- | --- | --- | --- | --- | --- | --- | --- | --- |
|  | 1.8 | **TESTING, COMMISSIONING & HANDOVER (TC)** |  | 2027-06-08 | 2027-11-15 |  |  |  |  |  |  |  |  |  |  |  |  |  |  |  |  |  |  |  |  |
|  | 1.8.1 | **Testing & Site Acceptance (OTDR, SAT, Integration, Cyber Audit)** |  | 2027-06-08 | 2027-10-12 |  |  |  |  |  |  |  |  |  |  |  |  |  |  |  |  |  |  |  |  |
| CYB-3930 |  | Third-party cybersecurity audit | 10d | 2027-06-08 | 2027-06-21 | CYB-3920, CLD-3820 | 76d | 0d | SAR-OFFICE (Sun-Thu 8h) | Cost Distribution [283200] | 283,200 | Item 23: 50.0% = 283,200.00 | - | E - Testing, Integra | TC - Testing, Commis | 2 - Procurement & Co | Testing / Commission | Third-party auditor | All | Cyber | 23 | Planned (contractor) | - | N | - |
| CYB-3940 |  | Audit findings closure & verification | 4d | 2027-06-22 | 2027-06-27 | CYB-3930 | 76d |  | SAR-OFFICE (Sun-Thu 8h) | Cost Distribution [113280] | 113,280 | Item 23: 20.0% = 113,280.00 | - | E - Testing, Integra | TC - Testing, Commis | 2 - Procurement & Co | Testing / Commission | Contractor | All | Cyber | 23 | Planned (contractor) | - | N | - |
| TST-4110 |  | Full-route OTDR certification report & as-installed test records | 2d | 2027-09-22 | 2027-09-26 | TST-110, TST-210, TST-310, TST-410, TST-510 | 7d |  | SAR-OFFICE (Sun-Thu 8h) | Cost Distribution [4956] | 4,956 | Item 19: 50.0% = 4,956.00 | - | E - Testing, Integra | TC - Testing, Commis | 3 - Testing & Commis | Testing / Commission | Contractor | All | DAS | 19 | Planned (contractor) | - | N | - |
| INT-4020 |  | End-to-end integration test with existing system & iSiteCentral (part of SAT) | 5d | 2027-10-06 | 2027-10-12 | MS-070, INT-4010 | 0d |  | SAR-OFFICE (Sun-Thu 8h) | Cost Distribution [177000]; IT/OT Engineers [80 h] | 177,000 | Item 21: 50.0% = 177,000.00 | - | E - Testing, Integra | TC - Testing, Commis | 3 - Testing & Commis | Testing / Commission | Contractor | All | Integration | 21 | Planned (contractor) | - | N | - |
| TST-4210 |  | SAT - site acceptance tests (sensors, power, communications, operational) | 5d | 2027-10-06 | 2027-10-12 | TST-4110, APR-1670, MS-070 | 0d |  |  | Cost Distribution [88500]; Commissioning Team [80 h] | 88,500 | Item 27: 50.0% = 88,500.00 | - | F - Documentation, T | TC - Testing, Commis | 3 - Testing & Commis | Testing / Commission | Contractor | All | General | 27 | Planned (contractor) | - | N | - |
|  | 1.8.2 | **Commissioning & Performance Validation** |  | 2027-10-13 | 2027-11-02 |  |  |  |  |  |  |  |  |  |  |  |  |  |  |  |  |  |  |  |  |
| CMS-4310 |  | System commissioning & calibration - DAS, DSS, TDR & weather station | 5d | 2027-10-13 | 2027-10-19 | TST-4210, INT-4020, CYB-3940 | 0d |  |  | Cost Distribution [47577.6]; Commissioning Team [80 h] | 47,577.6 | Item 20: 60.0% = 47,577.60 | - | E - Testing, Integra | TC - Testing, Commis | 3 - Testing & Commis | Testing / Commission | Contractor | All | General | 20 | Planned (contractor) | - | N | - |
| CMS-4320 |  | Trial operation - baseline data collection & performance validation | 10d | 2027-10-20 | 2027-11-02 | CMS-4310 | 2d | 0d | SAR-OFFICE (Sun-Thu 8h) | Cost Distribution [75968.4]; Commissioning Team [160 h] | 75,968.4 | Item 20: 40.0% = 31,718.40; Item 25: 50.0% = 44,250.00 | - | F - Documentation, T | TC - Testing, Commis | 4 - Documentation & | Testing / Commission | Contractor | All | General | 20 | Planned (contractor) | - | N | - |
|  | 1.8.3 | **Documentation & Training** |  | 2027-10-20 | 2027-11-10 |  |  |  |  |  |  |  |  |  |  |  |  |  |  |  |  |  |  |  |  |
| DOC-5020 |  | As-built drawings (3 sets, hard + soft) - final revision after SAT | 6d | 2027-10-20 | 2027-10-27 | CMS-4310 | 0d |  | SAR-OFFICE (Sun-Thu 8h) | Cost Distribution [44250]; Document Control / Tech Writers [96 h] | 44,250 | Item 24: 50.0% = 44,250.00 | - | F - Documentation, T | TC - Testing, Commis | 4 - Documentation & | Documentation / Trai | Contractor | All | General | 24 | Planned (contractor) | - | N | - |
| DOC-5030 |  | O&M manuals (3 sets) - final revision | 6d | 2027-10-20 | 2027-10-27 | CMS-4310 | 0d |  | SAR-OFFICE (Sun-Thu 8h) | Cost Distribution [44250]; Document Control / Tech Writers [96 h] | 44,250 | Item 24: 50.0% = 44,250.00 | - | F - Documentation, T | TC - Testing, Commis | 4 - Documentation & | Documentation / Trai | Contractor | All | General | 24 | Planned (contractor) | - | N | - |
| DOC-5040 |  | User training for SAR staff (5 days) | 5d | 2027-10-20 | 2027-10-26 | CMS-4310 | 8d | 5d | SAR-OFFICE (Sun-Thu 8h) | Cost Distribution [38822]; Commissioning Team [80 h] | 38,822 | Item 28: 19.0173% = 38,822.00 | - | F - Documentation, T | TC - Testing, Commis | 4 - Documentation & | Documentation / Trai | Contractor | All | General | 28 | Planned (contractor) | - | N | - |
| DOC-5010 |  | Technical reports - TDR, DAS (seismic), DSS strain, weather data & alerts | 6d | 2027-11-03 | 2027-11-10 | MS-100 | 2d |  | SAR-OFFICE (Sun-Thu 8h) | Cost Distribution [44250]; Document Control / Tech Writers [96 h] | 44,250 | Item 25: 50.0% = 44,250.00 | - | F - Documentation, T | TC - Testing, Commis | 4 - Documentation & | Documentation / Trai | Contractor | All | General | 25 | Planned (contractor) | - | N | - |
|  | 1.8.4 | **Handover Submittals (Contractor)** |  | 2027-10-28 | 2027-10-31 |  |  |  |  |  |  |  |  |  |  |  |  |  |  |  |  |  |  |  |  |
| DOC-5050 |  | Handover dossier - as-builts, O&M manuals, QA/QC, material test & HSE records - compile & submit | 2d | 2027-10-28 | 2027-10-31 | DOC-5020, DOC-5030 | 0d |  | SAR-OFFICE (Sun-Thu 8h) | Cost Distribution [3835] | 3,835 | Item 26: 50.0% = 3,835.00 | - | F - Documentation, T | TC - Testing, Commis | 4 - Documentation & | Submittal (Contracto | Contractor | All | General | 26 | Planned (contractor) | - | N | - |
|  | 1.8.5 | **SAR Acceptance & Formal Handover** |  | 2027-11-01 | 2027-11-15 |  |  |  |  |  |  |  |  |  |  |  |  |  |  |  |  |  |  |  |  |
| APR-5060 |  | SAR review & acceptance of handover dossier (as-builts, O&M, reports) | 14d | 2027-11-01 | 2027-11-14 | DOC-5050 | 0d |  | SAR-7DAY (reviews & procurement 8h) |  |  |  | - | - | TC - Testing, Commis | 4 - Documentation & | SAR Approval / Revie | SAR | All | General | - | Requirement / durati | - | N | - |
| HND-5090 |  | Formal handover & Taking-Over certificate (SAR) | 1d | 2027-11-15 | 2027-11-15 | APR-5060, DEM-5100, DOC-5010 | 0d |  | SAR-OFFICE (Sun-Thu 8h) | Cost Distribution [165318] | 165,318 | Item 28: 80.9827% = 165,318.00 | - | F - Documentation, T | TC - Testing, Commis | 4 - Documentation & | Handover | SAR | All | General | 28 | Planned (contractor) | - | N | - |

## Activity codes

| Code | Value | Meaning |
| --- | --- | --- |
| Activity Category | Documentation / Trai | Documentation / Training |
| Activity Category | SAR Approval / Revie | SAR Approval / Review |
| Activity Category | Submittal (Contracto | Submittal (Contractor) |
| Activity Category | Testing / Commission | Testing / Commissioning |
| Basis | Duration assumed - t | Duration assumed - to be confirmed |
| Basis | Requirement / durati | Requirement / duration confirmed (contract, SoW, Portal guide, SAR 14-day review) |
| BoQ Section | A - Preliminaries & | A - Preliminaries & General |
| BoQ Section | C - Materials, Civil | C - Materials, Civil & Cable Installation |
| BoQ Section | D - TDR System, Equi | D - TDR System, Equipment & Commissioning |
| BoQ Section | E - Testing, Integra | E - Testing, Integration & Cybersecurity |
| BoQ Section | F - Documentation, T | F - Documentation, Training & Handover |
| EPC Phase | PA - Permits & Autho | PA - Permits & Authority Approvals |
| EPC Phase | PM - Project Managem | PM - Project Management |
| EPC Phase | TC - Testing, Commis | TC - Testing, Commissioning & Handover |
| SoW Stage | 1 - Mobilization & D | 1 - Mobilization & Design |
| SoW Stage | 2 - Procurement & Co | 2 - Procurement & Construction |
| SoW Stage | 3 - Testing & Commis | 3 - Testing & Commissioning |
| SoW Stage | 4 - Documentation & | 4 - Documentation & Handover |
