# Station Building – Sample

Schedule from Primavera P6, 2026-03-01 to 2027-01-25, data date 2026-05-14, A marks actual dates.

## Calendars

- Standard Calendar: Mon-Thu 08:00-16:00; Fri-Sat off; Sun 08:00-16:00.

## Resources

| Resource | Group |
| --- | --- |
| Site Engineer | labor |
| Excavator | equipment |
| Helper | labor |
| Mason | labor |
| Foreman | labor |
| Electrician | labor |

## Schedule

| ID | WBS | Activity | Type | Duration | Start | Finish | Predecessors | Complete | Remaining | Planned start | Planned finish | Total float | Free float | Resources |
| --- | --- | --- | --- | --- | --- | --- | --- | --- | --- | --- | --- | --- | --- | --- |
|  | STN.1 | **Pre-construction** |  |  | 2026-03-01 | 2026-06-17 |  |  |  |  |  |  |  |  |
| A1000 |  | Notice to Proceed | milestone | 0d | 2026-03-01 A | 2026-03-01 A |  | 100% |  |  |  |  |  |  |
| A1010 |  | Mobilization & site setup |  | 10d | 2026-03-01 A | 2026-03-17 A | A1000 | 100% |  | 2026-03-01 | 2026-03-12 |  |  | Site Engineer [80 h] |
| A1020 |  | Shop drawings approval |  | 20d | 2026-03-04 A | 2026-04-01 A | A1000 | 100% |  | 2026-03-01 | 2026-03-26 |  |  |  |
| A1030 |  | Procurement – reinforcement steel |  | 25d | 2026-03-29 A | 2026-05-05 A | A1020 | 100% |  | 2026-03-29 | 2026-04-30 |  |  |  |
| A1040 |  | Procurement – MEP long-lead items |  | 60d | 2026-04-02 A | 2026-06-17 | A1020 | 58% | 25d | 2026-03-29 | 2026-06-18 | 52d | 30d |  |
|  | STN.2 | **Civil Works** |  |  | 2026-03-15 | 2026-09-09 |  |  |  |  |  |  |  |  |
|  | STN.2.1 | **Substructure** |  |  | 2026-03-15 | 2026-06-21 |  |  |  |  |  |  |  |  |
| A2000 |  | Site clearing & survey |  | 5d | 2026-03-15 A | 2026-03-24 A | A1010 | 100% |  | 2026-03-15 | 2026-03-19 |  |  | Excavator [40 h]; Helper [40 h] |
| A2010 |  | Excavation |  | 12d | 2026-03-22 A | 2026-04-10 A | A2000 | 100% |  | 2026-03-22 | 2026-04-06 |  |  | Excavator [96 h]; Helper [96 h] |
| A2020 |  | Blinding concrete |  | 4d | 2026-04-07 A | 2026-04-17 A | A2010 | 100% |  | 2026-04-07 | 2026-04-12 |  |  | Mason [32 h]; Helper [32 h] |
| A2040 |  | Footing formwork |  | 8d | 2026-04-13 A | 2026-04-27 A | A2020 | 100% |  | 2026-04-13 | 2026-04-22 |  |  | Mason [64 h]; Helper [64 h] |
| A2030 |  | Footing reinforcement |  | 10d | 2026-05-03 A | 2026-05-19 A | A2020, A1030 | 100% |  | 2026-05-03 | 2026-05-14 |  |  | Mason [80 h]; Helper [80 h] |
| A2050 |  | Pour footings |  | 6d | 2026-05-10 A | 2026-05-24 | A2030, A2040 | 50% | 3d | 2026-05-17 | 2026-05-24 | 0d |  | Mason [48 h]; Helper [48 h] |
| A2060 |  | Curing & strip footings |  | 7d | 2026-05-25 | 2026-06-02 | A2050 |  |  |  |  | 0d |  | Mason [56 h]; Helper [56 h] |
| A2070 |  | Backfilling & compaction |  | 8d | 2026-06-03 | 2026-06-14 | A2060 |  |  |  |  | 0d |  | Excavator [64 h]; Helper [64 h] |
| A6050 |  | Test activity |  | 5d | 2026-06-15 | 2026-06-21 | A2070, A2060 SS+2d |  |  |  |  | 156d |  |  |
|  | STN.2.2 | **Superstructure** |  |  | 2026-06-15 | 2026-09-09 |  |  |  |  |  |  |  |  |
| A3000 |  | Columns – ground floor |  | 15d | 2026-06-15 | 2026-07-05 | A2070 |  |  |  |  | 0d |  | Mason [120 h]; Foreman [120 h] |
| A3010 |  | Slab – first floor |  | 18d | 2026-07-06 | 2026-07-29 | A3000 |  |  |  |  | 0d |  | Mason [144 h]; Foreman [144 h] |
| A3040 |  | Structural steel – canopy |  | 20d | 2026-07-20 | 2026-08-16 | A3010 SS+10d |  |  |  |  | 116d | 18d | Mason [160 h]; Foreman [160 h] |
| A3020 |  | Columns – first floor |  | 12d | 2026-07-30 | 2026-08-16 | A3010 |  |  |  |  | 0d |  | Mason [96 h]; Foreman [96 h] |
| A3030 |  | Roof slab |  | 18d | 2026-08-17 | 2026-09-09 | A3020 |  |  |  |  | 21d | 0d | Mason [144 h]; Foreman [144 h] |
| A3050 |  | Structure complete | milestone | 0d | 2026-09-09 | 2026-09-09 | A3030, A3040 |  |  |  |  | 98d |  |  |

| ID | WBS | Activity | Type | Duration | Start | Finish | Predecessors | Total float | Free float | Resources |
| --- | --- | --- | --- | --- | --- | --- | --- | --- | --- | --- |
|  | STN.3 | **MEP Works** |  |  | 2026-07-30 | 2026-11-17 |  |  |  |  |
| A4000 |  | MEP first-fix – ground floor |  | 20d | 2026-07-30 | 2026-08-26 | A3010, A1040 | 22d | 20d | Electrician [160 h]; Helper [160 h] |
| A4010 |  | MEP first-fix – first floor |  | 20d | 2026-09-03 | 2026-09-30 | A3030 FS-5d, A4000 SS+5d | 21d | 0d | Electrician [160 h]; Helper [160 h] |
| A4020 |  | HVAC equipment installation |  | 15d | 2026-09-10 | 2026-09-30 | A3030, A1040 | 53d |  |  |
| A4030 |  | Electrical panels & cabling |  | 25d | 2026-10-01 | 2026-11-04 | A4010 | 28d | 0d | Electrician [200 h]; Helper [200 h] |
| A4040 |  | Fire fighting system |  | 18d | 2026-10-01 | 2026-10-26 | A4010 | 30d | 0d | Electrician [144 h]; Helper [144 h] |
| A4050 |  | Low-current & signage systems |  | 14d | 2026-10-29 | 2026-11-17 | A4030 FS-5d | 44d |  | Electrician [112 h]; Helper [112 h] |
|  | STN.4 | **Finishes** |  |  | 2026-08-17 | 2026-12-14 |  |  |  |  |
| A5000 |  | Masonry & blockwork |  | 30d | 2026-08-17 | 2026-09-27 | A3020 | 0d |  | Mason [240 h]; Helper [240 h] |
| A5020 |  | Waterproofing – roof |  | 8d | 2026-09-10 | 2026-09-21 | A3030 | 55d | 25d |  |
| A5010 |  | Plastering |  | 24d | 2026-09-28 | 2026-10-29 | A5000, A4000 | 0d |  | Mason [192 h]; Helper [192 h] |
| A5070 |  | External works & landscaping |  | 20d | 2026-10-27 | 2026-11-23 | A5020, A4040 | 30d |  |  |
| A5030 |  | Floor tiling & stone |  | 24d | 2026-11-01 | 2026-12-02 | A5010 | 6d |  | Mason [192 h]; Helper [192 h] |
| A5040 |  | False ceiling |  | 14d | 2026-11-01 | 2026-11-18 | A4010, A5010 | 0d |  |  |
| A5060 |  | Doors, windows & glazing |  | 16d | 2026-11-01 | 2026-11-22 | A5010 | 31d |  |  |
| A5050 |  | Painting |  | 18d | 2026-11-19 | 2026-12-14 | A5040, A5030 SS+8d | 0d |  | Mason [144 h]; Helper [144 h] |
|  | STN.5 | **Testing & Handover** |  |  | 2026-12-15 | 2027-01-25 |  |  |  |  |
| A6000 |  | Testing & commissioning |  | 15d | 2026-12-15 | 2027-01-04 | A4030, A4040, A4020, A5050 | 0d |  | Site Engineer [120 h] |
| A6020 |  | As-built drawings & O&M manuals |  | 15d | 2026-12-15 | 2027-01-04 | A5050 | 10d |  |  |
| A6010 |  | Snagging & punch list |  | 10d | 2027-01-05 | 2027-01-18 | A6000, A5060, A5070 | 0d |  | Site Engineer [80 h] |
| A6030 |  | Final inspection & handover |  | 5d | 2027-01-19 | 2027-01-25 | A6010, A6020, A4050 | 0d |  | Site Engineer [40 h] |
| A6040 |  | Project Complete | milestone | 0d | 2027-01-25 | 2027-01-25 | A6030 | 0d |  |  |
