# Northern Rail Extension (A) - Demo

Schedule from Primavera P6, 2025-01-05 to 2026-11-15, data date 2025-01-05, costs in SAR.

## Calendars

- RAIL-A Sun-Thu 8h: Mon-Thu 08:00-16:00; Fri-Sat off; Sun 08:00-16:00. Exceptions (off unless hours are given): 2025-03-30 to 2025-04-01, 2025-06-06, 2025-06-08, 2025-09-23, 2026-02-22, 2026-03-19, 2026-03-22, 2026-05-26 to 2026-05-27, 2026-09-23.

## Resources

| Resource | Group |
| --- | --- |
| DES Labour | labor |
| PRC Labour | labor |
| CIV Labour | labor |
| TRK Labour | labor |
| STN Labour | labor |
| SYS Labour | labor |
| TNC Labour | labor |
| MGT Labour | labor |

## Schedule

| ID | WBS | Activity | Type | Duration | Start | Finish | Predecessors | Total float | Free float | Resources | Cost | Location | Contractor | Work Package | Discipline |
| --- | --- | --- | --- | --- | --- | --- | --- | --- | --- | --- | --- | --- | --- | --- | --- |
|  | 0 | **Key Milestones** |  |  | 2025-01-05 | 2026-11-15 |  |  |  |  |  |  |  |  |  |
| MS-1010 |  | Notice to Proceed | milestone | 0d | 2025-01-05 | 2025-01-05 |  | 0d |  |  |  | ALL | MC | WP01 | MGT |
| MS-1020 |  | Design Complete | milestone | 0d | 2025-06-11 | 2025-06-11 | ENG-1030, ENG-1060, ENG-1090, ENG-1120, ENG-1150, ENG-1180, ENG-1220 | 365d |  |  |  | ALL | MC | WP01 | MGT |
| MS-1030 |  | Earthworks Complete | milestone | 0d | 2025-09-17 | 2025-09-17 | CNS-1020, CNS-1080, CNS-1140 | 295d |  |  |  | ALL | MC | WP03 | MGT |
| MS-1040 |  | Track Laying Complete | milestone | 0d | 2026-03-15 | 2026-03-15 | CNS-1060, CNS-1120, CNS-1180 | 130d | 0d |  |  | ALL | MC | WP03 | MGT |
| MS-1050 |  | Systems Energized | milestone | 0d | 2026-07-16 | 2026-07-16 | TST-1040 | 85d |  |  |  | ALL | MC | WP03 | MGT |
| MS-1060 |  | Project Completion | milestone | 0d | 2026-11-15 | 2026-11-15 | HND-1030, MS-1050, MS-1020 | 0d |  |  |  | ALL | MC | WP06 | MGT |
|  | 1 | **Engineering** |  |  | 2025-01-05 | 2025-07-30 |  |  |  |  |  |  |  |  |  |
|  | 1 | **Detailed Design** |  |  | 2025-01-05 | 2025-07-30 |  |  |  |  |  |  |  |  |  |
| ENG-1010 |  | Detailed Design - Section A |  | 55d | 2025-01-05 | 2025-03-20 | MS-1010 | 15d | 0d | DES Labour [880 h] | 495,000 | SEC-A | DC | WP01 | DES |
| ENG-1040 |  | Detailed Design - Section B |  | 60d | 2025-01-05 | 2025-03-27 | MS-1010 | 0d |  | DES Labour [960 h] | 540,000 | SEC-B | DC | WP01 | DES |
| ENG-1070 |  | Detailed Design - Section C |  | 65d | 2025-01-05 | 2025-04-08 | MS-1010 | 45d | 0d | DES Labour [1040 h] | 585,000 | SEC-C | DC | WP01 | DES |
| ENG-1190 |  | OCS Detailed Design |  | 80d | 2025-01-05 | 2025-04-29 | MS-1010 | 0d |  | DES Labour [1280 h] | 800,000 | ALL | DC | WP01 | DES |
| ENG-1200 |  | Signalling Detailed Design |  | 80d | 2025-01-05 | 2025-04-29 | MS-1010 | 0d |  | DES Labour [1280 h] | 800,000 | ALL | DC | WP01 | DES |
| ENG-1210 |  | Telecom Detailed Design |  | 80d | 2025-01-05 | 2025-04-29 | MS-1010 | 0d |  | DES Labour [1280 h] | 800,000 | ALL | DC | WP01 | DES |
| ENG-1100 |  | Detailed Design - North Station |  | 70d | 2025-01-19 | 2025-04-29 | MS-1010 FS+10d | 110d | 0d | DES Labour [1120 h] | 560,000 | STN-N | DC | WP01 | DES |
| ENG-1130 |  | Detailed Design - Central Station |  | 70d | 2025-01-19 | 2025-04-29 | MS-1010 FS+10d | 110d | 0d | DES Labour [1120 h] | 560,000 | STN-C | DC | WP01 | DES |
| ENG-1160 |  | Detailed Design - South Station |  | 70d | 2025-01-19 | 2025-04-29 | MS-1010 FS+10d | 110d | 0d | DES Labour [1120 h] | 560,000 | STN-S | DC | WP01 | DES |
| ENG-1230 |  | Design Material Support |  | 60d | 2025-05-07 | 2025-07-30 | ENG-1220 SS+5d | 330d |  | DES Labour [960 h] | 150,000 | ALL | DC | WP01 | DES |
|  | 2 | **Design Review & Approvals** |  |  | 2025-03-23 | 2025-06-11 |  |  |  |  |  |  |  |  |  |
| ENG-1020 |  | Design Review - Section A |  | 20d | 2025-03-23 | 2025-04-22 | ENG-1010 | 15d | 0d | DES Labour [320 h] | 120,000 | SEC-A | DC | WP01 | DES |
| ENG-1050 |  | Design Review - Section B |  | 20d | 2025-04-02 | 2025-04-29 | ENG-1040 | 0d |  | DES Labour [320 h] | 120,000 | SEC-B | DC | WP01 | DES |
| ENG-1080 |  | Design Review - Section C |  | 20d | 2025-04-09 | 2025-05-06 | ENG-1070 | 45d | 0d | DES Labour [320 h] | 120,000 | SEC-C | DC | WP01 | DES |
| ENG-1030 |  | IFC Drawings - Section A |  | 10d | 2025-04-23 | 2025-05-06 | ENG-1020 | 55d | 0d | DES Labour [160 h] | 40,000 | SEC-A | DC | WP01 | DES |
| ENG-1060 |  | IFC Drawings - Section B |  | 10d | 2025-04-30 | 2025-05-13 | ENG-1050 | 50d | 5d | DES Labour [160 h] | 40,000 | SEC-B | DC | WP01 | DES |
| ENG-1110 |  | Design Review - North Station |  | 20d | 2025-04-30 | 2025-05-27 | ENG-1100 | 110d | 0d | DES Labour [320 h] | 100,000 | STN-N | DC | WP01 | DES |
| ENG-1140 |  | Design Review - Central Station |  | 20d | 2025-04-30 | 2025-05-27 | ENG-1130 | 110d | 0d | DES Labour [320 h] | 100,000 | STN-C | DC | WP01 | DES |
| ENG-1170 |  | Design Review - South Station |  | 20d | 2025-04-30 | 2025-05-27 | ENG-1160 | 110d | 0d | DES Labour [320 h] | 100,000 | STN-S | DC | WP01 | DES |
| ENG-1220 |  | Design Review - Systems |  | 25d | 2025-04-30 | 2025-06-03 | ENG-1190, ENG-1200, ENG-1210 | 0d |  | DES Labour [400 h] | 150,000 | ALL | DC | WP01 | DES |
| ENG-1090 |  | IFC Drawings - Section C |  | 10d | 2025-05-07 | 2025-05-20 | ENG-1080 | 45d | 5d | DES Labour [160 h] | 40,000 | SEC-C | DC | WP01 | DES |
| ENG-1240 |  | Shop Drawings - Track Works |  | 25d | 2025-05-07 | 2025-06-11 | ENG-1030 | 145d |  | DES Labour [400 h] | 75,000 | ALL | MC | WP01 | DES |
| ENG-1120 |  | IFC Drawings - North Station |  | 10d | 2025-05-28 | 2025-06-11 | ENG-1110 | 110d | 0d | DES Labour [160 h] | 30,000 | STN-N | DC | WP01 | DES |
| ENG-1150 |  | IFC Drawings - Central Station |  | 10d | 2025-05-28 | 2025-06-11 | ENG-1140 | 110d | 0d | DES Labour [160 h] | 30,000 | STN-C | DC | WP01 | DES |
| ENG-1180 |  | IFC Drawings - South Station |  | 10d | 2025-05-28 | 2025-06-11 | ENG-1170 | 110d | 0d | DES Labour [160 h] | 30,000 | STN-S | DC | WP01 | DES |

| ID | WBS | Activity | Duration | Start | Finish | Predecessors | Total float | Free float | Resources | Cost | Location | Contractor | Work Package | Discipline |
| --- | --- | --- | --- | --- | --- | --- | --- | --- | --- | --- | --- | --- | --- | --- |
|  | 2 | **Procurement** |  | 2025-02-02 | 2026-03-08 |  |  |  |  |  |  |  |  |  |
|  | 1 | **Long Lead Items** |  | 2025-04-23 | 2026-03-08 |  |  |  |  |  |  |  |  |  |
| PRC-1010 |  | Rails - Technical Submittal | 15d | 2025-04-23 | 2025-05-13 | ENG-1020 | 15d | 0d | PRC Labour [240 h] | 22,500 | ALL | SUP | WP02 | PRC |
| PRC-1290 |  | Station Steel - Technical Submittal | 15d | 2025-04-23 | 2025-05-13 | ENG-1020 | 50d | 0d | PRC Labour [240 h] | 22,500 | ALL | SUP | WP02 | PRC |
| PRC-1080 |  | Turnouts - Technical Submittal | 15d | 2025-04-30 | 2025-05-20 | ENG-1050 | 0d |  | PRC Labour [240 h] | 22,500 | ALL | SUP | WP02 | PRC |
| PRC-1020 |  | Rails - Submittal Approval | 10d | 2025-05-14 | 2025-05-27 | PRC-1010 | 15d | 0d | PRC Labour [160 h] | 10,000 | ALL | SUP | WP02 | PRC |
| PRC-1300 |  | Station Steel - Submittal Approval | 10d | 2025-05-14 | 2025-05-27 | PRC-1290 | 50d | 0d | PRC Labour [160 h] | 10,000 | ALL | SUP | WP02 | PRC |
| PRC-1090 |  | Turnouts - Submittal Approval | 10d | 2025-05-21 | 2025-06-03 | PRC-1080 | 0d |  | PRC Labour [160 h] | 10,000 | ALL | SUP | WP02 | PRC |
| PRC-1030 |  | Rails - Purchase Order | 5d | 2025-05-28 | 2025-06-03 | PRC-1020 | 15d | 0d | PRC Labour [80 h] | 5,000 | ALL | SUP | WP02 | PRC |
| PRC-1310 |  | Station Steel - Purchase Order | 5d | 2025-05-28 | 2025-06-03 | PRC-1300 | 50d | 0d | PRC Labour [80 h] | 5,000 | ALL | SUP | WP02 | PRC |
| PRC-1040 |  | Rails - Manufacturing | 90d | 2025-06-04 | 2025-10-09 | PRC-1030 | 15d | 0d | PRC Labour [1440 h] | 1,800,000 | ALL | SUP | WP02 | PRC |
| PRC-1100 |  | Turnouts - Purchase Order | 5d | 2025-06-04 | 2025-06-11 | PRC-1090 | 0d |  | PRC Labour [80 h] | 5,000 | ALL | SUP | WP02 | PRC |
| PRC-1150 |  | Signalling Equipment - Technical Submittal | 15d | 2025-06-04 | 2025-06-25 | ENG-1220 | 0d |  | PRC Labour [240 h] | 22,500 | ALL | SUP | WP02 | PRC |
| PRC-1220 |  | OCS Materials - Technical Submittal | 15d | 2025-06-04 | 2025-06-25 | ENG-1220 | 45d | 0d | PRC Labour [240 h] | 22,500 | ALL | SUP | WP02 | PRC |
| PRC-1320 |  | Station Steel - Manufacturing | 60d | 2025-06-04 | 2025-08-27 | PRC-1310 | 50d | 0d | PRC Labour [960 h] | 1,200,000 | ALL | SUP | WP02 | PRC |
| PRC-1110 |  | Turnouts - Manufacturing | 100d | 2025-06-12 | 2025-10-30 | PRC-1100 | 0d |  | PRC Labour [1600 h] | 2,000,000 | ALL | SUP | WP02 | PRC |
| PRC-1160 |  | Signalling Equipment - Submittal Approval | 10d | 2025-06-26 | 2025-07-09 | PRC-1150 | 0d |  | PRC Labour [160 h] | 10,000 | ALL | SUP | WP02 | PRC |
| PRC-1230 |  | OCS Materials - Submittal Approval | 10d | 2025-06-26 | 2025-07-09 | PRC-1220 | 45d | 0d | PRC Labour [160 h] | 10,000 | ALL | SUP | WP02 | PRC |
| PRC-1170 |  | Signalling Equipment - Purchase Order | 5d | 2025-07-10 | 2025-07-16 | PRC-1160 | 0d |  | PRC Labour [80 h] | 5,000 | ALL | SUP | WP02 | PRC |
| PRC-1240 |  | OCS Materials - Purchase Order | 5d | 2025-07-10 | 2025-07-16 | PRC-1230 | 45d | 0d | PRC Labour [80 h] | 5,000 | ALL | SUP | WP02 | PRC |
| PRC-1180 |  | Signalling Equipment - Manufacturing | 120d | 2025-07-17 | 2026-01-01 | PRC-1170 | 0d |  | PRC Labour [1920 h] | 2,400,000 | ALL | SUP | WP02 | PRC |
| PRC-1250 |  | OCS Materials - Manufacturing | 80d | 2025-07-17 | 2025-11-06 | PRC-1240 | 45d | 0d | PRC Labour [1280 h] | 1,600,000 | ALL | SUP | WP02 | PRC |
| PRC-1330 |  | Station Steel - FAT | 5d | 2025-08-28 | 2025-09-03 | PRC-1320 | 50d | 0d | PRC Labour [80 h] | 15,000 | ALL | SUP | WP02 | PRC |
| PRC-1340 |  | Station Steel - Shipping | 30d | 2025-09-04 | 2025-10-16 | PRC-1330 | 50d | 0d | PRC Labour [480 h] | 120,000 | ALL | SUP | WP02 | PRC |
| PRC-1050 |  | Rails - FAT | 5d | 2025-10-12 | 2025-10-16 | PRC-1040 | 15d | 0d | PRC Labour [80 h] | 15,000 | ALL | SUP | WP02 | PRC |
| PRC-1060 |  | Rails - Shipping | 30d | 2025-10-19 | 2025-11-27 | PRC-1050 | 15d | 0d | PRC Labour [480 h] | 120,000 | ALL | SUP | WP02 | PRC |
| PRC-1350 |  | Station Steel - Delivery to Site | 10d | 2025-10-19 | 2025-10-30 | PRC-1340 | 50d | 0d | PRC Labour [160 h] | 20,000 | ALL | SUP | WP02 | PRC |
| PRC-1120 |  | Turnouts - FAT | 5d | 2025-11-02 | 2025-11-06 | PRC-1110 | 0d |  | PRC Labour [80 h] | 15,000 | ALL | SUP | WP02 | PRC |
| PRC-1130 |  | Turnouts - Shipping | 30d | 2025-11-09 | 2025-12-18 | PRC-1120 | 0d |  | PRC Labour [480 h] | 120,000 | ALL | SUP | WP02 | PRC |
| PRC-1260 |  | OCS Materials - FAT | 5d | 2025-11-09 | 2025-11-13 | PRC-1250 | 45d | 0d | PRC Labour [80 h] | 15,000 | ALL | SUP | WP02 | PRC |
| PRC-1270 |  | OCS Materials - Shipping | 30d | 2025-11-16 | 2025-12-25 | PRC-1260 | 45d | 0d | PRC Labour [480 h] | 120,000 | ALL | SUP | WP02 | PRC |
| PRC-1070 |  | Rails - Delivery to Site | 10d | 2025-11-30 | 2025-12-11 | PRC-1060 | 15d |  | PRC Labour [160 h] | 20,000 | ALL | SUP | WP02 | PRC |
| PRC-1140 |  | Turnouts - Delivery to Site | 10d | 2025-12-21 | 2026-01-01 | PRC-1130 | 0d |  | PRC Labour [160 h] | 20,000 | ALL | SUP | WP02 | PRC |
| PRC-1280 |  | OCS Materials - Delivery to Site | 10d | 2025-12-28 | 2026-01-08 | PRC-1270 | 45d |  | PRC Labour [160 h] | 20,000 | ALL | SUP | WP02 | PRC |
| PRC-1190 |  | Signalling Equipment - FAT | 5d | 2026-01-04 | 2026-01-08 | PRC-1180 | 0d |  | PRC Labour [80 h] | 15,000 | ALL | SUP | WP02 | PRC |
| PRC-1200 |  | Signalling Equipment - Shipping | 30d | 2026-01-11 | 2026-02-19 | PRC-1190 | 0d |  | PRC Labour [480 h] | 120,000 | ALL | SUP | WP02 | PRC |
| PRC-1210 |  | Signalling Equipment - Delivery to Site | 10d | 2026-02-23 | 2026-03-08 | PRC-1200 | 0d |  | PRC Labour [160 h] | 20,000 | ALL | SUP | WP02 | PRC |

| ID | WBS | Activity | Duration | Start | Finish | Predecessors | Total float | Free float | Resources | Cost | Location | Contractor | Work Package | Discipline |
| --- | --- | --- | --- | --- | --- | --- | --- | --- | --- | --- | --- | --- | --- | --- |
|  | 2 | **General Materials** |  | 2025-02-02 | 2025-06-25 |  |  |  |  |  |  |  |  |  |
| PRC-1360 |  | Concrete Supply Contract | 20d | 2025-02-02 | 2025-02-27 | MS-1010 FS+20d | 155d | 0d | PRC Labour [320 h] | 30,000 | ALL | SUP | WP02 | PRC |
| PRC-1370 |  | Ballast Supply - Batch 1 | 40d | 2025-03-02 | 2025-04-29 | PRC-1360 | 195d |  | PRC Labour [640 h] | 320,000 | ALL | SUP | WP02 | PRC |
| PRC-1380 |  | Ballast Supply - Batch 2 | 40d | 2025-04-02 | 2025-05-27 | PRC-1360 FS+20d | 175d |  | PRC Labour [640 h] | 320,000 | ALL | SUP | WP02 | PRC |
| PRC-1390 |  | Ballast Supply - Batch 3 | 40d | 2025-04-30 | 2025-06-25 | PRC-1360 FS+40d | 155d |  | PRC Labour [640 h] | 320,000 | ALL | SUP | WP02 | PRC |
|  | 3 | **Construction** |  | 2025-04-23 | 2026-05-19 |  |  |  |  |  |  |  |  |  |
|  | 1 | **Earthworks** |  | 2025-04-23 | 2025-09-17 |  |  |  |  |  |  |  |  |  |
| CNS-1010 |  | Site Mobilization - Section A | 15d | 2025-04-23 | 2025-05-13 | ENG-1030 SS | 55d | 0d | CIV Labour [240 h] | 75,000 | SEC-A | MC | WP03 | CIV |
| CNS-1070 |  | Site Mobilization - Section B | 15d | 2025-04-30 | 2025-05-20 | ENG-1060 SS | 50d | 0d | CIV Labour [240 h] | 75,000 | SEC-B | MC | WP03 | CIV |
| CNS-1130 |  | Site Mobilization - Section C | 15d | 2025-05-07 | 2025-05-27 | ENG-1090 SS | 45d | 0d | CIV Labour [240 h] | 75,000 | SEC-C | MC | WP03 | CIV |
| CNS-1020 |  | Earthworks - Section A | 80d | 2025-05-14 | 2025-09-03 | CNS-1010, ENG-1030 | 55d | 0d | CIV Labour [1280 h] | 2,400,000 | SEC-A | MC | WP03 | CIV |
| CNS-1080 |  | Earthworks - Section B | 80d | 2025-05-21 | 2025-09-10 | CNS-1070, ENG-1060 | 50d | 0d | CIV Labour [1280 h] | 2,400,000 | SEC-B | MC | WP03 | CIV |
| CNS-1140 |  | Earthworks - Section C | 80d | 2025-05-28 | 2025-09-17 | CNS-1130, ENG-1090 | 45d | 0d | CIV Labour [1280 h] | 2,400,000 | SEC-C | MC | WP03 | CIV |
| CNS-1030 |  | Drainage & Culverts - Section A | 50d | 2025-06-12 | 2025-08-20 | CNS-1020 SS+20d | 95d |  | CIV Labour [800 h] | 600,000 | SEC-A | MC | WP03 | CIV |
| CNS-1090 |  | Drainage & Culverts - Section B | 50d | 2025-06-19 | 2025-08-27 | CNS-1080 SS+20d | 90d |  | CIV Labour [800 h] | 600,000 | SEC-B | MC | WP03 | CIV |
| CNS-1150 |  | Drainage & Culverts - Section C | 50d | 2025-06-26 | 2025-09-03 | CNS-1140 SS+20d | 85d |  | CIV Labour [800 h] | 600,000 | SEC-C | MC | WP03 | CIV |
|  | 2 | **Track Works** |  | 2025-09-04 | 2026-03-31 |  |  |  |  |  |  |  |  |  |
| CNS-1040 |  | Sub-ballast - Section A | 30d | 2025-09-04 | 2025-10-16 | CNS-1020, CNS-1030 FF | 55d |  | CIV Labour [480 h] | 450,000 | SEC-A | MC | WP03 | CIV |
| CNS-1100 |  | Sub-ballast - Section B | 30d | 2025-09-11 | 2025-10-23 | CNS-1080, CNS-1090 FF | 50d |  | CIV Labour [480 h] | 450,000 | SEC-B | MC | WP03 | CIV |
| CNS-1160 |  | Sub-ballast - Section C | 30d | 2025-09-18 | 2025-10-30 | CNS-1140, CNS-1150 FF | 45d |  | CIV Labour [480 h] | 450,000 | SEC-C | MC | WP03 | CIV |
| CNS-1050 |  | Track Installation - Section A | 60d | 2026-01-04 | 2026-03-31 | CNS-1040, PRC-1070, PRC-1140, ENG-1240 | 0d |  | TRK Labour [960 h] | 2,100,000 | SEC-A | MC | WP03 | TRK |
| CNS-1110 |  | Track Installation - Section B | 60d | 2026-01-04 | 2026-03-31 | CNS-1100, PRC-1070, PRC-1140, ENG-1240 | 0d |  | TRK Labour [960 h] | 2,100,000 | SEC-B | MC | WP03 | TRK |
| CNS-1170 |  | Track Installation - Section C | 60d | 2026-01-04 | 2026-03-31 | CNS-1160, PRC-1070, PRC-1140, ENG-1240 | 0d |  | TRK Labour [960 h] | 2,100,000 | SEC-C | MC | WP03 | TRK |
| CNS-1060 |  | Ballast & Tamping - Section A | 30d | 2026-02-01 | 2026-03-15 | CNS-1050 SS+20d, PRC-1370 | 0d |  | TRK Labour [480 h] | 300,000 | SEC-A | MC | WP03 | TRK |
| CNS-1120 |  | Ballast & Tamping - Section B | 30d | 2026-02-01 | 2026-03-15 | CNS-1110 SS+20d, PRC-1380 | 0d |  | TRK Labour [480 h] | 300,000 | SEC-B | MC | WP03 | TRK |
| CNS-1180 |  | Ballast & Tamping - Section C | 30d | 2026-02-01 | 2026-03-15 | CNS-1170 SS+20d, PRC-1390 | 0d |  | TRK Labour [480 h] | 300,000 | SEC-C | MC | WP03 | TRK |

| ID | WBS | Activity | Duration | Start | Finish | Predecessors | Total float | Free float | Resources | Cost | Location | Contractor | Work Package | Discipline |
| --- | --- | --- | --- | --- | --- | --- | --- | --- | --- | --- | --- | --- | --- | --- |
|  | 3 | **Stations & Structures** |  | 2025-06-12 | 2026-05-19 |  |  |  |  |  |  |  |  |  |
| CNS-1190 |  | Foundations - North Station | 40d | 2025-06-12 | 2025-08-06 | ENG-1120, PRC-1360 | 110d | 60d | STN Labour [640 h] | 800,000 | STN-N | MC | WP04 | STN |
| CNS-1240 |  | Foundations - Central Station | 40d | 2025-06-12 | 2025-08-06 | ENG-1150, PRC-1360 | 110d | 60d | STN Labour [640 h] | 800,000 | STN-C | MC | WP04 | STN |
| CNS-1290 |  | Foundations - South Station | 40d | 2025-06-12 | 2025-08-06 | ENG-1180, PRC-1360 | 110d | 60d | STN Labour [640 h] | 800,000 | STN-S | MC | WP04 | STN |
| CNS-1200 |  | Station Structure - North Station | 80d | 2025-11-02 | 2026-02-19 | CNS-1190, PRC-1350 | 50d | 0d | STN Labour [1280 h] | 2,400,000 | STN-N | MC | WP04 | STN |
| CNS-1250 |  | Station Structure - Central Station | 80d | 2025-11-02 | 2026-02-19 | CNS-1240, PRC-1350 | 50d | 0d | STN Labour [1280 h] | 2,400,000 | STN-C | MC | WP04 | STN |
| CNS-1300 |  | Station Structure - South Station | 80d | 2025-11-02 | 2026-02-19 | CNS-1290, PRC-1350 | 50d | 0d | STN Labour [1280 h] | 2,400,000 | STN-S | MC | WP04 | STN |
| CNS-1220 |  | MEP Installation - North Station | 60d | 2025-12-28 | 2026-03-24 | CNS-1200 SS+40d | 80d |  | STN Labour [960 h] | 1,080,000 | STN-N | MC | WP04 | STN |
| CNS-1270 |  | MEP Installation - Central Station | 60d | 2025-12-28 | 2026-03-24 | CNS-1250 SS+40d | 80d |  | STN Labour [960 h] | 1,080,000 | STN-C | MC | WP04 | STN |
| CNS-1320 |  | MEP Installation - South Station | 60d | 2025-12-28 | 2026-03-24 | CNS-1300 SS+40d | 80d |  | STN Labour [960 h] | 1,080,000 | STN-S | MC | WP04 | STN |
| CNS-1210 |  | Architectural Finishes - North Station | 60d | 2026-02-23 | 2026-05-19 | CNS-1200 | 50d |  | STN Labour [960 h] | 900,000 | STN-N | MC | WP04 | STN |
| CNS-1260 |  | Architectural Finishes - Central Station | 60d | 2026-02-23 | 2026-05-19 | CNS-1250 | 50d |  | STN Labour [960 h] | 900,000 | STN-C | MC | WP04 | STN |
| CNS-1310 |  | Architectural Finishes - South Station | 60d | 2026-02-23 | 2026-05-19 | CNS-1300 | 50d |  | STN Labour [960 h] | 900,000 | STN-S | MC | WP04 | STN |
| CNS-1230 |  | Platform Finishes - North Station | 30d | 2026-03-25 | 2026-05-05 | CNS-1210 SS+20d, CNS-1220 FF | 50d |  | STN Labour [480 h] | 270,000 | STN-N | MC | WP04 | STN |
| CNS-1280 |  | Platform Finishes - Central Station | 30d | 2026-03-25 | 2026-05-05 | CNS-1260 SS+20d, CNS-1270 FF | 50d |  | STN Labour [480 h] | 270,000 | STN-C | MC | WP04 | STN |
| CNS-1330 |  | Platform Finishes - South Station | 30d | 2026-03-25 | 2026-05-05 | CNS-1310 SS+20d, CNS-1320 FF | 50d |  | STN Labour [480 h] | 270,000 | STN-S | MC | WP04 | STN |
|  | 4 | **Systems Installation** |  | 2026-02-15 | 2026-05-19 |  |  |  |  |  |  |  |  |  |
| CNS-1360 |  | Telecom Installation - Section A | 40d | 2026-02-15 | 2026-04-14 | CNS-1060 SS+10d | 25d |  | SYS Labour [640 h] | 480,000 | SEC-A | SC | WP05 | SYS |
| CNS-1390 |  | Telecom Installation - Section B | 40d | 2026-02-15 | 2026-04-14 | CNS-1120 SS+10d | 25d |  | SYS Labour [640 h] | 480,000 | SEC-B | SC | WP05 | SYS |
| CNS-1420 |  | Telecom Installation - Section C | 40d | 2026-02-15 | 2026-04-14 | CNS-1180 SS+10d | 25d |  | SYS Labour [640 h] | 480,000 | SEC-C | SC | WP05 | SYS |
| CNS-1350 |  | Signalling Installation - Section A | 50d | 2026-03-09 | 2026-05-19 | CNS-1060 SS+10d, PRC-1210 | 0d |  | SYS Labour [800 h] | 1,250,000 | SEC-A | SC | WP05 | SYS |
| CNS-1380 |  | Signalling Installation - Section B | 50d | 2026-03-09 | 2026-05-19 | CNS-1120 SS+10d, PRC-1210 | 0d |  | SYS Labour [800 h] | 1,250,000 | SEC-B | SC | WP05 | SYS |
| CNS-1410 |  | Signalling Installation - Section C | 50d | 2026-03-09 | 2026-05-19 | CNS-1180 SS+10d, PRC-1210 | 0d |  | SYS Labour [800 h] | 1,250,000 | SEC-C | SC | WP05 | SYS |
| CNS-1340 |  | OCS Installation - Section A | 45d | 2026-03-16 | 2026-05-19 | CNS-1060, PRC-1280 | 0d |  | SYS Labour [720 h] | 990,000 | SEC-A | SC | WP05 | SYS |
| CNS-1370 |  | OCS Installation - Section B | 45d | 2026-03-16 | 2026-05-19 | CNS-1120, PRC-1280 | 0d |  | SYS Labour [720 h] | 990,000 | SEC-B | SC | WP05 | SYS |
| CNS-1400 |  | OCS Installation - Section C | 45d | 2026-03-16 | 2026-05-19 | CNS-1180, PRC-1280 | 0d |  | SYS Labour [720 h] | 990,000 | SEC-C | SC | WP05 | SYS |

| ID | WBS | Activity | Type | Duration | Start | Finish | Predecessors | Total float | Resources | Cost | Location | Contractor | Work Package | Discipline |
| --- | --- | --- | --- | --- | --- | --- | --- | --- | --- | --- | --- | --- | --- | --- |
|  | 4 | **Testing & Commissioning** |  |  | 2026-05-20 | 2026-11-15 |  |  |  |  |  |  |  |  |
| TST-1010 |  | System Testing - Section A |  | 30d | 2026-05-20 | 2026-07-02 | CNS-1340, CNS-1350, CNS-1360 | 0d | TNC Labour [480 h] | 270,000 | SEC-A | SC | WP06 | TNC |
| TST-1020 |  | System Testing - Section B |  | 30d | 2026-05-20 | 2026-07-02 | CNS-1370, CNS-1380, CNS-1390 | 0d | TNC Labour [480 h] | 270,000 | SEC-B | SC | WP06 | TNC |
| TST-1030 |  | System Testing - Section C |  | 30d | 2026-05-20 | 2026-07-02 | CNS-1400, CNS-1410, CNS-1420 | 0d | TNC Labour [480 h] | 270,000 | SEC-C | SC | WP06 | TNC |
| TST-1040 |  | Energization |  | 10d | 2026-07-05 | 2026-07-16 | TST-1010, TST-1020, TST-1030 | 0d | TNC Labour [160 h] | 60,000 | ALL | SC | WP06 | TNC |
| TST-1050 |  | Integration Testing |  | 40d | 2026-07-19 | 2026-09-10 | TST-1040, CNS-1230, CNS-1280, CNS-1330 | 0d | TNC Labour [640 h] | 400,000 | ALL | SC | WP06 | TNC |
| TST-1060 |  | Trial Running |  | 45d | 2026-09-13 | 2026-11-15 | TST-1050 | 0d | TNC Labour [720 h] | 360,000 | ALL | SC | WP06 | TNC |
|  | 5 | **Handover** |  |  | 2026-03-16 | 2026-11-15 |  |  |  |  |  |  |  |  |
| HND-1010 |  | As-built Documentation |  | 40d | 2026-03-16 | 2026-05-12 | MS-1040 | 130d | MGT Labour [640 h] | 120,000 | ALL | MC | WP06 | MGT |
| HND-1020 |  | O&M Manuals & Training |  | 30d | 2026-08-02 | 2026-09-10 | TST-1050 SS+10d | 45d | MGT Labour [480 h] | 120,000 | ALL | SC | WP06 | MGT |
| HND-1030 |  | Provisional Acceptance (PAC) | milestone | 0d | 2026-11-15 | 2026-11-15 | TST-1060, HND-1010, HND-1020 | 0d |  |  | ALL | MC | WP06 | MGT |

## Activity codes

| Code | Value | Meaning |
| --- | --- | --- |
| Contractor | DC | Design Consultant |
| Contractor | MC | Main Civil Contractor |
| Contractor | SC | Systems Contractor |
| Contractor | SUP | Suppliers |
| Discipline | CIV | Civil |
| Discipline | DES | Design |
| Discipline | MGT | Management |
| Discipline | PRC | Procurement |
| Discipline | STN | Stations |
| Discipline | SYS | Systems |
| Discipline | TNC | Testing & Commissioning |
| Discipline | TRK | Track Works |
| Location | ALL | Route-wide |
| Location | SEC-A | Section A (km 0-40) |
| Location | SEC-B | Section B (km 40-85) |
| Location | SEC-C | Section C (km 85-120) |
| Location | STN-C | Central Station |
| Location | STN-N | North Station |
| Location | STN-S | South Station |
| Work Package | WP01 | WP01 Design |
| Work Package | WP02 | WP02 Supply |
| Work Package | WP03 | WP03 Civil & Track |
| Work Package | WP04 | WP04 Stations |
| Work Package | WP05 | WP05 Systems |
| Work Package | WP06 | WP06 T&C and Handover |
