# Northern Rail Extension (A) - Demo

Schedule from Primavera P6, 2025-01-05 to 2027-01-19, data date 2025-11-02, costs in SAR, A marks actual dates.
Must finish by 2026-11-15

## Calendars

- RAIL-A Sun-Thu 8h: Mon-Thu 08:00-16:00; Fri-Sat off; Sun 08:00-16:00. Exceptions (off unless hours are given): 2025-03-30 to 2025-04-01, 2025-06-06, 2025-06-08, 2025-09-23, 2026-02-22, 2026-03-19, 2026-03-22, 2026-05-26 to 2026-05-27, 2026-09-23.

## Resources

| Resource | Group |
| --- | --- |
| DES Labour | labor |
| PRC Labour | labor |
| CIV Labour | labor |
| TRK Labour | labor |
| STN Labour | labor |
| SYS Labour | labor |
| TNC Labour | labor |
| MGT Labour | labor |

## Schedule

| ID | WBS | Activity | Type | Duration | Start | Finish | Predecessors | Complete | Planned start | Planned finish | Total float | Free float | Resources | Cost | Actual cost | Location | Contractor | Work Package | Discipline |
| --- | --- | --- | --- | --- | --- | --- | --- | --- | --- | --- | --- | --- | --- | --- | --- | --- | --- | --- | --- |
|  | 0 | **Key Milestones** |  |  | 2025-01-05 | 2027-01-19 |  |  |  |  |  |  |  |  |  |  |  |  |  |
| MS-1010 |  | Notice to Proceed | milestone | 0d | 2025-01-05 A | 2025-01-05 A |  | 100% |  |  |  |  |  |  |  | ALL | MC | WP01 | MGT |
| MS-1020 |  | Design Complete | milestone | 0d | 2025-07-13 A | 2025-07-13 A | ENG-1030, ENG-1060, ENG-1090, ENG-1120, ENG-1150, ENG-1180, ENG-1220 | 100% | 2025-06-11 | 2025-06-11 |  |  |  |  |  | ALL | MC | WP01 | MGT |
| MS-1030 |  | Earthworks Complete | milestone | 0d | 2025-10-20 A | 2025-10-20 A | CNS-1020, CNS-1080, CNS-1140 | 100% | 2025-09-17 | 2025-09-17 |  |  |  |  |  | ALL | MC | WP03 | MGT |
| MS-1040 |  | Track Laying Complete | milestone | 0d | 2026-05-14 | 2026-05-14 | CNS-1060, CNS-1120, CNS-1180 |  | 2026-03-15 | 2026-03-15 | 88d | 0d |  |  |  | ALL | MC | WP03 | MGT |
| MS-1050 |  | Systems Energized | milestone | 0d | 2026-09-21 | 2026-09-21 | TST-1040 |  | 2026-07-16 | 2026-07-16 | 38d |  |  |  |  | ALL | MC | WP03 | MGT |
| MS-1060 |  | Project Completion | milestone | 0d | 2027-01-19 | 2027-01-19 | HND-1030, MS-1050, MS-1020 |  | 2026-11-15 | 2026-11-15 | -47d | 0d |  |  |  | ALL | MC | WP06 | MGT |
|  | 1 | **Engineering** |  |  | 2025-01-05 | 2025-09-16 |  |  |  |  |  |  |  |  |  |  |  |  |  |
|  | 1 | **Detailed Design** |  |  | 2025-01-05 | 2025-09-16 |  |  |  |  |  |  |  |  |  |  |  |  |  |
| ENG-1010 |  | Detailed Design - Section A |  | 55d | 2025-01-05 A | 2025-04-16 A | MS-1010 | 100% | 2025-01-05 | 2025-03-20 |  |  | DES Labour [880 h] | 495,000 | 521,999.59 | SEC-A | DC | WP01 | DES |
| ENG-1040 |  | Detailed Design - Section B |  | 60d | 2025-01-05 A | 2025-04-23 A | MS-1010 | 100% | 2025-01-05 | 2025-03-27 |  |  | DES Labour [960 h] | 540,000 | 570,365.57 | SEC-B | DC | WP01 | DES |
| ENG-1070 |  | Detailed Design - Section C |  | 65d | 2025-01-05 A | 2025-04-28 A | MS-1010 | 100% | 2025-01-05 | 2025-04-08 |  |  | DES Labour [1040 h] | 585,000 | 635,954.71 | SEC-C | DC | WP01 | DES |
| ENG-1190 |  | OCS Detailed Design |  | 80d | 2025-01-05 A | 2025-05-11 A | MS-1010 | 100% | 2025-01-05 | 2025-04-29 |  |  | DES Labour [1280 h] | 800,000 | 817,546.54 | ALL | DC | WP01 | DES |
| ENG-1200 |  | Signalling Detailed Design |  | 80d | 2025-01-05 A | 2025-05-18 A | MS-1010 | 100% | 2025-01-05 | 2025-04-29 |  |  | DES Labour [1280 h] | 800,000 | 865,105.6 | ALL | DC | WP01 | DES |
| ENG-1215 |  | Telecommunications System Detailed Design |  | 80d | 2025-01-05 A | 2025-05-22 A | MS-1010 | 100% |  |  |  |  | DES Labour [1280 h] | 800,000 | 810,152.21 | ALL | DC | WP01 | DES |
| ENG-1100 |  | Detailed Design - North Station |  | 70d | 2025-01-19 A | 2025-05-20 A | MS-1010 FS+10d | 100% | 2025-01-19 | 2025-04-29 |  |  | DES Labour [1120 h] | 560,000 | 601,455.89 | STN-N | DC | WP01 | DES |
| ENG-1130 |  | Detailed Design - Central Station |  | 70d | 2025-01-19 A | 2025-05-13 A | MS-1010 FS+10d | 100% | 2025-01-19 | 2025-04-29 |  |  | DES Labour [1120 h] | 560,000 | 584,893.45 | STN-C | DC | WP01 | DES |
| ENG-1160 |  | Detailed Design - South Station |  | 70d | 2025-01-19 A | 2025-05-18 A | MS-1010 FS+10d | 100% | 2025-01-19 | 2025-04-29 |  |  | DES Labour [1120 h] | 560,000 | 581,663.87 | STN-S | DC | WP01 | DES |
| ENG-1230 |  | Design Material Support |  | 60d | 2025-06-01 A | 2025-09-16 A | ENG-1220 SS+5d | 100% | 2025-05-07 | 2025-07-30 |  |  | DES Labour [960 h] | 150,000 | 150,766.91 | ALL | DC | WP01 | DES |
|  | 2 | **Design Review & Approvals** |  |  | 2025-04-17 | 2025-07-13 |  |  |  |  |  |  |  |  |  |  |  |  |  |
| ENG-1020 |  | Design Review - Section A |  | 20d | 2025-04-17 A | 2025-05-15 A | ENG-1010 | 100% | 2025-03-23 | 2025-04-22 |  |  | DES Labour [320 h] | 120,000 | 128,116.95 | SEC-A | DC | WP01 | DES |
| ENG-1050 |  | Design Review - Section B |  | 20d | 2025-04-24 A | 2025-05-28 A | ENG-1040 | 100% | 2025-04-02 | 2025-04-29 |  |  | DES Labour [320 h] | 120,000 | 122,349.68 | SEC-B | DC | WP01 | DES |
| ENG-1080 |  | Design Review - Section C |  | 20d | 2025-04-29 A | 2025-05-27 A | ENG-1070 | 100% | 2025-04-09 | 2025-05-06 |  |  | DES Labour [320 h] | 120,000 | 120,816.5 | SEC-C | DC | WP01 | DES |
| ENG-1140 |  | Design Review - Central Station |  | 20d | 2025-05-14 A | 2025-06-18 A | ENG-1130 | 100% | 2025-04-30 | 2025-05-27 |  |  | DES Labour [320 h] | 100,000 | 108,953.5 | STN-C | DC | WP01 | DES |
| ENG-1030 |  | IFC Drawings - Section A |  | 10d | 2025-05-18 A | 2025-06-01 A | ENG-1020 | 100% | 2025-04-23 | 2025-05-06 |  |  | DES Labour [160 h] | 40,000 | 42,603.78 | SEC-A | DC | WP01 | DES |
| ENG-1170 |  | Design Review - South Station |  | 20d | 2025-05-19 A | 2025-06-17 A | ENG-1160 | 100% | 2025-04-30 | 2025-05-27 |  |  | DES Labour [320 h] | 100,000 | 104,429.93 | STN-S | DC | WP01 | DES |
| ENG-1110 |  | Design Review - North Station |  | 20d | 2025-05-21 A | 2025-06-25 A | ENG-1100 | 100% | 2025-04-30 | 2025-05-27 |  |  | DES Labour [320 h] | 100,000 | 103,209.42 | STN-N | DC | WP01 | DES |
| ENG-1220 |  | Design Review - Systems |  | 25d | 2025-05-25 A | 2025-07-02 A | ENG-1190, ENG-1200, ENG-1215 | 100% | 2025-04-30 | 2025-06-03 |  |  | DES Labour [400 h] | 150,000 | 154,089.52 | ALL | DC | WP01 | DES |
| ENG-1090 |  | IFC Drawings - Section C |  | 10d | 2025-05-28 A | 2025-06-12 A | ENG-1080 | 100% | 2025-05-07 | 2025-05-20 |  |  | DES Labour [160 h] | 40,000 | 39,406.99 | SEC-C | DC | WP01 | DES |
| ENG-1060 |  | IFC Drawings - Section B |  | 10d | 2025-05-29 A | 2025-06-15 A | ENG-1050 | 100% | 2025-04-30 | 2025-05-13 |  |  | DES Labour [160 h] | 40,000 | 38,973.01 | SEC-B | DC | WP01 | DES |
| ENG-1240 |  | Shop Drawings - Track Works |  | 25d | 2025-06-02 A | 2025-07-09 A | ENG-1030 | 100% | 2025-05-07 | 2025-06-11 |  |  | DES Labour [400 h] | 75,000 | 80,699.41 | ALL | MC | WP01 | DES |
| ENG-1180 |  | IFC Drawings - South Station |  | 10d | 2025-06-18 A | 2025-07-02 A | ENG-1170 | 100% | 2025-05-28 | 2025-06-11 |  |  | DES Labour [160 h] | 30,000 | 29,173.46 | STN-S | DC | WP01 | DES |
| ENG-1150 |  | IFC Drawings - Central Station |  | 10d | 2025-06-19 A | 2025-07-06 A | ENG-1140 | 100% | 2025-05-28 | 2025-06-11 |  |  | DES Labour [160 h] | 30,000 | 31,074.93 | STN-C | DC | WP01 | DES |
| ENG-1120 |  | IFC Drawings - North Station |  | 10d | 2025-06-26 A | 2025-07-13 A | ENG-1110 | 100% | 2025-05-28 | 2025-06-11 |  |  | DES Labour [160 h] | 30,000 | 30,147.51 | STN-N | DC | WP01 | DES |

| ID | WBS | Activity | Duration | Start | Finish | Predecessors | Complete | Remaining | Planned start | Planned finish | Total float | Free float | Resources | Cost | Actual cost | Location | Contractor | Work Package | Discipline |
| --- | --- | --- | --- | --- | --- | --- | --- | --- | --- | --- | --- | --- | --- | --- | --- | --- | --- | --- | --- |
|  | 2 | **Procurement** |  | 2025-02-02 | 2026-05-14 |  |  |  |  |  |  |  |  |  |  |  |  |  |  |
|  | 1 | **Long Lead Items** |  | 2025-05-18 | 2026-05-14 |  |  |  |  |  |  |  |  |  |  |  |  |  |  |
| PRC-1010 |  | Rails - Technical Submittal | 15d | 2025-05-18 A | 2025-06-04 A | ENG-1020 | 100% |  | 2025-04-23 | 2025-05-13 |  |  | PRC Labour [240 h] | 22,500 | 21,844.16 | ALL | SUP | WP02 | PRC |
| PRC-1290 |  | Station Steel - Technical Submittal | 15d | 2025-05-18 A | 2025-06-11 A | ENG-1020 | 100% |  | 2025-04-23 | 2025-05-13 |  |  | PRC Labour [240 h] | 22,500 | 22,913.05 | ALL | SUP | WP02 | PRC |
| PRC-1080 |  | Turnouts - Technical Submittal | 15d | 2025-05-29 A | 2025-06-19 A | ENG-1050 | 100% |  | 2025-04-30 | 2025-05-20 |  |  | PRC Labour [240 h] | 22,500 | 21,863.25 | ALL | SUP | WP02 | PRC |
| PRC-1020 |  | Rails - Submittal Approval | 10d | 2025-06-05 A | 2025-06-22 A | PRC-1010 | 100% |  | 2025-05-14 | 2025-05-27 |  |  | PRC Labour [160 h] | 10,000 | 9,705.37 | ALL | SUP | WP02 | PRC |
| PRC-1300 |  | Station Steel - Submittal Approval | 10d | 2025-06-12 A | 2025-06-29 A | PRC-1290 | 100% |  | 2025-05-14 | 2025-05-27 |  |  | PRC Labour [160 h] | 10,000 | 9,960.95 | ALL | SUP | WP02 | PRC |
| PRC-1090 |  | Turnouts - Submittal Approval | 10d | 2025-06-22 A | 2025-07-06 A | PRC-1080 | 100% |  | 2025-05-21 | 2025-06-03 |  |  | PRC Labour [160 h] | 10,000 | 10,327.01 | ALL | SUP | WP02 | PRC |
| PRC-1030 |  | Rails - Purchase Order | 5d | 2025-06-23 A | 2025-06-29 A | PRC-1020 | 100% |  | 2025-05-28 | 2025-06-03 |  |  | PRC Labour [80 h] | 5,000 | 4,881.66 | ALL | SUP | WP02 | PRC |
| PRC-1040 |  | Rails - Manufacturing | 90d | 2025-06-30 A | 2025-11-10 | PRC-1030 | 93% | 7d | 2025-06-04 | 2025-10-09 | -7d | 0d | PRC Labour [1440 h] | 1,800,000 | 1,676,891.82 | ALL | SUP | WP02 | PRC |
| PRC-1310 |  | Station Steel - Purchase Order | 5d | 2025-06-30 A | 2025-07-07 A | PRC-1300 | 100% |  | 2025-05-28 | 2025-06-03 |  |  | PRC Labour [80 h] | 5,000 | 5,279.29 | ALL | SUP | WP02 | PRC |
| PRC-1150 |  | Signalling Equipment - Technical Submittal | 15d | 2025-07-03 A | 2025-07-22 A | ENG-1220 | 100% |  | 2025-06-04 | 2025-06-25 |  |  | PRC Labour [240 h] | 22,500 | 23,010.82 | ALL | SUP | WP02 | PRC |
| PRC-1220 |  | OCS Materials - Technical Submittal | 15d | 2025-07-03 A | 2025-07-24 A | ENG-1220 | 100% |  | 2025-06-04 | 2025-06-25 |  |  | PRC Labour [240 h] | 22,500 | 22,018.01 | ALL | SUP | WP02 | PRC |
| PRC-1100 |  | Turnouts - Purchase Order | 5d | 2025-07-07 A | 2025-07-13 A | PRC-1090 | 100% |  | 2025-06-04 | 2025-06-11 |  |  | PRC Labour [80 h] | 5,000 | 5,094.66 | ALL | SUP | WP02 | PRC |
| PRC-1320 |  | Station Steel - Manufacturing | 60d | 2025-07-08 A | 2025-10-06 A | PRC-1310 | 100% |  | 2025-06-04 | 2025-08-27 |  |  | PRC Labour [960 h] | 1,200,000 | 1,174,879.93 | ALL | SUP | WP02 | PRC |
| PRC-1110 |  | Turnouts - Manufacturing | 100d | 2025-07-14 A | 2025-12-29 | PRC-1100 | 65% | 42d | 2025-06-12 | 2025-10-30 | -42d | 0d | PRC Labour [1600 h] | 2,000,000 | 1,398,163.65 | ALL | SUP | WP02 | PRC |
| PRC-1160 |  | Signalling Equipment - Submittal Approval | 10d | 2025-07-23 A | 2025-08-06 A | PRC-1150 | 100% |  | 2025-06-26 | 2025-07-09 |  |  | PRC Labour [160 h] | 10,000 | 9,751.75 | ALL | SUP | WP02 | PRC |
| PRC-1230 |  | OCS Materials - Submittal Approval | 10d | 2025-07-27 A | 2025-08-07 A | PRC-1220 | 100% |  | 2025-06-26 | 2025-07-09 |  |  | PRC Labour [160 h] | 10,000 | 10,062.55 | ALL | SUP | WP02 | PRC |
| PRC-1170 |  | Signalling Equipment - Purchase Order | 5d | 2025-08-07 A | 2025-08-14 A | PRC-1160 | 100% |  | 2025-07-10 | 2025-07-16 |  |  | PRC Labour [80 h] | 5,000 | 4,955.81 | ALL | SUP | WP02 | PRC |
| PRC-1240 |  | OCS Materials - Purchase Order | 5d | 2025-08-10 A | 2025-08-17 A | PRC-1230 | 100% |  | 2025-07-10 | 2025-07-16 |  |  | PRC Labour [80 h] | 5,000 | 4,942.55 | ALL | SUP | WP02 | PRC |
| PRC-1180 |  | Signalling Equipment - Manufacturing | 120d | 2025-08-17 A | 2026-03-10 | PRC-1170 | 37% | 92d | 2025-07-17 | 2026-01-01 | -47d | 0d | PRC Labour [1920 h] | 2,400,000 | 952,843.39 | ALL | SUP | WP02 | PRC |
| PRC-1250 |  | OCS Materials - Manufacturing | 80d | 2025-08-18 A | 2025-12-14 | PRC-1240 | 63% | 31d | 2025-07-17 | 2025-11-06 | 19d | 0d | PRC Labour [1280 h] | 1,600,000 | 986,478.46 | ALL | SUP | WP02 | PRC |
| PRC-1330 |  | Station Steel - FAT | 5d | 2025-10-07 A | 2025-10-13 A | PRC-1320 | 100% |  | 2025-08-28 | 2025-09-03 |  |  | PRC Labour [80 h] | 15,000 | 16,306.99 | ALL | SUP | WP02 | PRC |
| PRC-1340 |  | Station Steel - Shipping | 30d | 2025-10-14 A | 2025-11-30 | PRC-1330 | 38% | 21d | 2025-09-04 | 2025-10-16 | 4d | 0d | PRC Labour [480 h] | 120,000 | 47,062.69 | ALL | SUP | WP02 | PRC |
| PRC-1050 |  | Rails - FAT | 5d | 2025-11-11 | 2025-11-17 | PRC-1040 |  |  | 2025-10-12 | 2025-10-16 | -7d | 0d | PRC Labour [80 h] | 15,000 |  | ALL | SUP | WP02 | PRC |
| PRC-1060 |  | Rails - Shipping | 30d | 2025-11-18 | 2025-12-29 | PRC-1050 |  |  | 2025-10-19 | 2025-11-27 | -7d | 0d | PRC Labour [480 h] | 120,000 |  | ALL | SUP | WP02 | PRC |
| PRC-1350 |  | Station Steel - Delivery to Site | 10d | 2025-12-01 | 2025-12-14 | PRC-1340 |  |  | 2025-10-19 | 2025-10-30 | 4d | 0d | PRC Labour [160 h] | 20,000 |  | ALL | SUP | WP02 | PRC |
| PRC-1260 |  | OCS Materials - FAT | 5d | 2025-12-15 | 2025-12-21 | PRC-1250 |  |  | 2025-11-09 | 2025-11-13 | 19d | 0d | PRC Labour [80 h] | 15,000 |  | ALL | SUP | WP02 | PRC |
| PRC-1270 |  | OCS Materials - Shipping | 30d | 2025-12-22 | 2026-02-01 | PRC-1260 |  |  | 2025-11-16 | 2025-12-25 | 19d | 0d | PRC Labour [480 h] | 120,000 |  | ALL | SUP | WP02 | PRC |
| PRC-1070 |  | Rails - Delivery to Site | 10d | 2025-12-30 | 2026-01-12 | PRC-1060 |  |  | 2025-11-30 | 2025-12-11 | -7d | 0d | PRC Labour [160 h] | 20,000 |  | ALL | SUP | WP02 | PRC |
| PRC-1120 |  | Turnouts - FAT | 5d | 2025-12-30 | 2026-01-05 | PRC-1110 |  |  | 2025-11-02 | 2025-11-06 | -42d | 0d | PRC Labour [80 h] | 15,000 |  | ALL | SUP | WP02 | PRC |
| PRC-1130 |  | Turnouts - Shipping | 30d | 2026-01-06 | 2026-02-16 | PRC-1120 |  |  | 2025-11-09 | 2025-12-18 | -42d | 0d | PRC Labour [480 h] | 120,000 |  | ALL | SUP | WP02 | PRC |
| PRC-1280 |  | OCS Materials - Delivery to Site | 10d | 2026-02-02 | 2026-02-15 | PRC-1270 |  |  | 2025-12-28 | 2026-01-08 | 19d |  | PRC Labour [160 h] | 20,000 |  | ALL | SUP | WP02 | PRC |
| PRC-1140 |  | Turnouts - Delivery to Site | 10d | 2026-02-17 | 2026-03-03 | PRC-1130 |  |  | 2025-12-21 | 2026-01-01 | -42d | 0d | PRC Labour [160 h] | 20,000 |  | ALL | SUP | WP02 | PRC |
| PRC-1190 |  | Signalling Equipment - FAT | 5d | 2026-03-11 | 2026-03-17 | PRC-1180 |  |  | 2026-01-04 | 2026-01-08 | -47d | 0d | PRC Labour [80 h] | 15,000 |  | ALL | SUP | WP02 | PRC |
| PRC-1200 |  | Signalling Equipment - Shipping | 30d | 2026-03-18 | 2026-04-30 | PRC-1190 |  |  | 2026-01-11 | 2026-02-19 | -47d | 0d | PRC Labour [480 h] | 120,000 |  | ALL | SUP | WP02 | PRC |
| PRC-1210 |  | Signalling Equipment - Delivery to Site | 10d | 2026-05-03 | 2026-05-14 | PRC-1200 |  |  | 2026-02-23 | 2026-03-08 | -47d | 0d | PRC Labour [160 h] | 20,000 |  | ALL | SUP | WP02 | PRC |

| ID | WBS | Activity | Duration | Start | Finish | Predecessors | Complete | Remaining | Planned start | Planned finish | Total float | Free float | Resources | Cost | Actual cost | Location | Contractor | Work Package | Discipline |
| --- | --- | --- | --- | --- | --- | --- | --- | --- | --- | --- | --- | --- | --- | --- | --- | --- | --- | --- | --- |
|  | 2 | **General Materials** |  | 2025-02-02 | 2025-06-10 |  |  |  |  |  |  |  |  |  |  |  |  |  |  |
| PRC-1360 |  | Concrete Supply Contract | 20d | 2025-02-02 A | 2025-03-04 A | MS-1010 FS+20d | 100% |  | 2025-02-02 | 2025-02-27 |  |  | PRC Labour [320 h] | 30,000 | 30,700.2 | ALL | SUP | WP02 | PRC |
| PRC-1370 |  | Ballast Supply - Batch 1 | 40d | 2025-03-05 A | 2025-05-04 A | PRC-1360 | 100% |  | 2025-03-02 | 2025-04-29 |  |  | PRC Labour [640 h] | 320,000 | 339,806.89 | ALL | SUP | WP02 | PRC |
| PRC-1380 |  | Ballast Supply - Batch 2 | 40d | 2025-04-07 A | 2025-06-10 A | PRC-1360 FS+20d | 100% |  | 2025-04-02 | 2025-05-27 |  |  | PRC Labour [640 h] | 320,000 | 343,721.75 | ALL | SUP | WP02 | PRC |
|  | 3 | **Construction** |  | 2025-05-18 | 2026-07-27 |  |  |  |  |  |  |  |  |  |  |  |  |  |  |
|  | 1 | **Earthworks** |  | 2025-05-18 | 2025-10-20 |  |  |  |  |  |  |  |  |  |  |  |  |  |  |
| CNS-1010 |  | Site Mobilization - Section A | 15d | 2025-05-18 A | 2025-06-04 A | ENG-1030 SS | 100% |  | 2025-04-23 | 2025-05-13 |  |  | CIV Labour [240 h] | 75,000 | 81,273.7 | SEC-A | MC | WP03 | CIV |
| CNS-1130 |  | Site Mobilization - Section C | 15d | 2025-05-28 A | 2025-06-19 A | ENG-1090 SS | 100% |  | 2025-05-07 | 2025-05-27 |  |  | CIV Labour [240 h] | 75,000 | 80,396.95 | SEC-C | MC | WP03 | CIV |
| CNS-1070 |  | Site Mobilization - Section B | 15d | 2025-05-29 A | 2025-06-18 A | ENG-1060 SS | 100% |  | 2025-04-30 | 2025-05-20 |  |  | CIV Labour [240 h] | 75,000 | 79,842.21 | SEC-B | MC | WP03 | CIV |
| CNS-1020 |  | Earthworks - Section A | 80d | 2025-06-05 A | 2025-10-13 A | CNS-1010, ENG-1030 | 100% |  | 2025-05-14 | 2025-09-03 |  |  | CIV Labour [1280 h] | 2,400,000 | 2,424,600.47 | SEC-A | MC | WP03 | CIV |
| CNS-1080 |  | Earthworks - Section B | 95d | 2025-06-19 A | 2025-10-20 A | CNS-1070, ENG-1060 | 100% |  | 2025-05-21 | 2025-09-10 |  |  | CIV Labour [1520 h] | 2,850,000 | 2,987,680.66 | SEC-B | MC | WP03 | CIV |
| CNS-1140 |  | Earthworks - Section C | 80d | 2025-06-22 A | 2025-10-01 A | CNS-1130, ENG-1090 | 100% |  | 2025-05-28 | 2025-09-17 |  |  | CIV Labour [1280 h] | 2,400,000 | 2,460,263.02 | SEC-C | MC | WP03 | CIV |
| CNS-1030 |  | Drainage & Culverts - Section A | 50d | 2025-07-06 A | 2025-09-16 A | CNS-1020 SS+20d | 100% |  | 2025-06-12 | 2025-08-20 |  |  | CIV Labour [800 h] | 600,000 | 603,842.02 | SEC-A | MC | WP03 | CIV |
| CNS-1090 |  | Drainage & Culverts - Section B | 50d | 2025-07-17 A | 2025-09-29 A | CNS-1080 SS+20d | 100% |  | 2025-06-19 | 2025-08-27 |  |  | CIV Labour [800 h] | 600,000 | 644,252.98 | SEC-B | MC | WP03 | CIV |
| CNS-1150 |  | Drainage & Culverts - Section C | 50d | 2025-07-20 A | 2025-09-25 A | CNS-1140 SS+20d | 100% |  | 2025-06-26 | 2025-09-03 |  |  | CIV Labour [800 h] | 600,000 | 602,013.06 | SEC-C | MC | WP03 | CIV |
| CNS-1995 |  | Additional Drainage Works - Section B | 25d | 2025-07-31 A | 2025-09-08 A | CNS-1080 SS+30d | 100% |  |  |  |  |  | CIV Labour [400 h] | 225,000 | 236,416.75 | SEC-B | MC | WP03 | CIV |
|  | 2 | **Track Works** |  | 2025-10-02 | 2026-06-01 |  |  |  |  |  |  |  |  |  |  |  |  |  |  |
| CNS-1160 |  | Sub-ballast - Section C | 30d | 2025-10-02 A | 2025-11-16 | CNS-1140, CNS-1150 FF | 66% | 11d | 2025-09-18 | 2025-10-30 | 34d |  | CIV Labour [480 h] | 450,000 | 290,149.33 | SEC-C | MC | WP03 | CIV |
| CNS-1040 |  | Sub-ballast - Section A | 30d | 2025-10-14 A | 2025-11-24 | CNS-1020, CNS-1030 FF | 43% | 17d | 2025-09-04 | 2025-10-16 | 28d |  | CIV Labour [480 h] | 450,000 | 203,816.98 | SEC-A | MC | WP03 | CIV |
| CNS-1100 |  | Sub-ballast - Section B | 30d | 2025-10-21 A | 2025-11-26 | CNS-1080, CNS-1090 FF, CNS-1995 | 30% | 19d | 2025-09-11 | 2025-10-23 | 26d |  | CIV Labour [480 h] | 450,000 | 142,439.52 | SEC-B | MC | WP03 | CIV |
| CNS-1050 |  | Track Installation - Section A | 60d | 2026-03-04 | 2026-06-01 | CNS-1040, PRC-1070, PRC-1140, ENG-1240 |  |  | 2026-01-04 | 2026-03-31 | -42d | 0d | TRK Labour [960 h] | 2,100,000 |  | SEC-A | MC | WP03 | TRK |
| CNS-1110 |  | Track Installation - Section B | 60d | 2026-03-04 | 2026-06-01 | CNS-1100, PRC-1070, PRC-1140, ENG-1240 |  |  | 2026-01-04 | 2026-03-31 | -42d | 0d | TRK Labour [960 h] | 2,100,000 |  | SEC-B | MC | WP03 | TRK |
| CNS-1170 |  | Track Installation - Section C | 60d | 2026-03-04 | 2026-06-01 | CNS-1160, PRC-1070, PRC-1140, ENG-1240 |  |  | 2026-01-04 | 2026-03-31 | -42d | 0d | TRK Labour [960 h] | 2,100,000 |  | SEC-C | MC | WP03 | TRK |
| CNS-1060 |  | Ballast & Tamping - Section A | 30d | 2026-04-05 | 2026-05-14 | CNS-1050 SS+20d, PRC-1370 |  |  | 2026-02-01 | 2026-03-15 | -42d | 0d | TRK Labour [480 h] | 300,000 |  | SEC-A | MC | WP03 | TRK |
| CNS-1120 |  | Ballast & Tamping - Section B | 30d | 2026-04-05 | 2026-05-14 | CNS-1110 SS+20d, PRC-1380 |  |  | 2026-02-01 | 2026-03-15 | -42d | 0d | TRK Labour [480 h] | 300,000 |  | SEC-B | MC | WP03 | TRK |
| CNS-1180 |  | Ballast & Tamping - Section C | 30d | 2026-04-05 | 2026-05-14 | CNS-1170 SS+20d, PRC-1380 |  |  | 2026-02-01 | 2026-03-15 | -42d | 0d | TRK Labour [480 h] | 300,000 |  | SEC-C | MC | WP03 | TRK |

| ID | WBS | Activity | Duration | Start | Finish | Predecessors | Complete | Planned start | Planned finish | Total float | Free float | Resources | Cost | Actual cost | Location | Contractor | Work Package | Discipline |
| --- | --- | --- | --- | --- | --- | --- | --- | --- | --- | --- | --- | --- | --- | --- | --- | --- | --- | --- |
|  | 3 | **Stations & Structures** |  | 2025-07-03 | 2026-07-19 |  |  |  |  |  |  |  |  |  |  |  |  |  |
| CNS-1290 |  | Foundations - South Station | 40d | 2025-07-03 A | 2025-09-03 A | ENG-1180, PRC-1360 | 100% | 2025-06-12 | 2025-08-06 |  |  | STN Labour [640 h] | 800,000 | 787,269.45 | STN-S | MC | WP04 | STN |
| CNS-1240 |  | Foundations - Central Station | 40d | 2025-07-07 A | 2025-08-27 A | ENG-1150, PRC-1360 | 100% | 2025-06-12 | 2025-08-06 |  |  | STN Labour [640 h] | 800,000 | 785,630.6 | STN-C | MC | WP04 | STN |
| CNS-1190 |  | Foundations - North Station | 40d | 2025-07-14 A | 2025-09-02 A | ENG-1120, PRC-1360 | 100% | 2025-06-12 | 2025-08-06 |  |  | STN Labour [640 h] | 800,000 | 828,196.08 | STN-N | MC | WP04 | STN |
| CNS-1200 |  | Station Structure - North Station | 80d | 2025-12-15 | 2026-04-08 | CNS-1190, PRC-1350 |  | 2025-11-02 | 2026-02-19 | 19d | 0d | STN Labour [1280 h] | 2,400,000 |  | STN-N | MC | WP04 | STN |
| CNS-1251 |  | Station Structure - Central Station - Part 1 | 45d | 2025-12-15 | 2026-02-15 | CNS-1240, PRC-1350 |  |  |  | 4d | 0d | STN Labour [720 h] | 1,350,000 |  | STN-C | MC | WP04 | STN |
| CNS-1300 |  | Station Structure - South Station | 80d | 2025-12-15 | 2026-04-08 | CNS-1290, PRC-1350 |  | 2025-11-02 | 2026-02-19 | 19d | 0d | STN Labour [1280 h] | 2,400,000 |  | STN-S | MC | WP04 | STN |
| CNS-1220 |  | MEP Installation - North Station | 60d | 2026-02-09 | 2026-05-06 | CNS-1200 SS+40d |  | 2025-12-28 | 2026-03-24 | 49d |  | STN Labour [960 h] | 1,080,000 |  | STN-N | MC | WP04 | STN |
| CNS-1320 |  | MEP Installation - South Station | 60d | 2026-02-09 | 2026-05-06 | CNS-1300 SS+40d |  | 2025-12-28 | 2026-03-24 | 49d |  | STN Labour [960 h] | 1,080,000 |  | STN-S | MC | WP04 | STN |
| CNS-1252 |  | Station Structure - Central Station - Part 2 | 45d | 2026-02-16 | 2026-04-22 | CNS-1251 |  |  |  | 4d | 0d | STN Labour [720 h] | 1,350,000 |  | STN-C | MC | WP04 | STN |
| CNS-1210 |  | Architectural Finishes - North Station | 60d | 2026-04-09 | 2026-07-05 | CNS-1200 |  | 2026-02-23 | 2026-05-19 | 19d |  | STN Labour [960 h] | 900,000 |  | STN-N | MC | WP04 | STN |
| CNS-1310 |  | Architectural Finishes - South Station | 60d | 2026-04-09 | 2026-07-05 | CNS-1300 |  | 2026-02-23 | 2026-05-19 | 19d |  | STN Labour [960 h] | 900,000 |  | STN-S | MC | WP04 | STN |
| CNS-1270 |  | MEP Installation - Central Station | 60d | 2026-04-16 | 2026-07-12 | CNS-1252 SS+40d |  | 2025-12-28 | 2026-03-24 | 4d |  | STN Labour [960 h] | 1,080,000 |  | STN-C | MC | WP04 | STN |
| CNS-1260 |  | Architectural Finishes - Central Station | 60d | 2026-04-23 | 2026-07-19 | CNS-1252 |  | 2026-02-23 | 2026-05-19 | 9d |  | STN Labour [960 h] | 900,000 |  | STN-C | MC | WP04 | STN |
| CNS-1230 |  | Platform Finishes - North Station | 30d | 2026-05-07 | 2026-06-21 | CNS-1210 SS+20d, CNS-1220 FF |  | 2026-03-25 | 2026-05-05 | 19d |  | STN Labour [480 h] | 270,000 |  | STN-N | MC | WP04 | STN |
| CNS-1330 |  | Platform Finishes - South Station | 30d | 2026-05-07 | 2026-06-21 | CNS-1310 SS+20d, CNS-1320 FF |  | 2026-03-25 | 2026-05-05 | 19d |  | STN Labour [480 h] | 270,000 |  | STN-S | MC | WP04 | STN |
| CNS-1280 |  | Platform Finishes - Central Station | 30d | 2026-06-01 | 2026-07-12 | CNS-1260 SS+20d, CNS-1270 FF |  | 2026-03-25 | 2026-05-05 | 4d |  | STN Labour [480 h] | 270,000 |  | STN-C | MC | WP04 | STN |
|  | 4 | **Systems Installation** |  | 2026-04-19 | 2026-07-27 |  |  |  |  |  |  |  |  |  |  |  |  |  |
| CNS-1360 |  | Telecom Installation - Section A | 40d | 2026-04-19 | 2026-06-15 | CNS-1060 SS+10d |  | 2026-02-15 | 2026-04-14 | -17d | 0d | SYS Labour [640 h] | 480,000 |  | SEC-A | SC | WP05 | SYS |
| CNS-1390 |  | Telecom Installation - Section B | 40d | 2026-04-19 | 2026-06-15 | CNS-1120 SS+10d |  | 2026-02-15 | 2026-04-14 | -17d | 0d | SYS Labour [640 h] | 480,000 |  | SEC-B | SC | WP05 | SYS |
| CNS-1420 |  | Telecom Installation - Section C | 40d | 2026-04-19 | 2026-06-15 | CNS-1180 SS+10d |  | 2026-02-15 | 2026-04-14 | -17d | 0d | SYS Labour [640 h] | 480,000 |  | SEC-C | SC | WP05 | SYS |
| CNS-1340 |  | OCS Installation - Section A | 45d | 2026-05-17 | 2026-07-20 | CNS-1060, PRC-1280 |  | 2026-03-16 | 2026-05-19 | -42d | 0d | SYS Labour [720 h] | 990,000 |  | SEC-A | SC | WP05 | SYS |
| CNS-1350 |  | Signalling Installation - Section A | 50d | 2026-05-17 | 2026-07-27 | CNS-1060 SS+10d, PRC-1210 |  | 2026-03-09 | 2026-05-19 | -47d | 0d | SYS Labour [800 h] | 1,250,000 |  | SEC-A | SC | WP05 | SYS |
| CNS-1370 |  | OCS Installation - Section B | 45d | 2026-05-17 | 2026-07-20 | CNS-1120, PRC-1280 |  | 2026-03-16 | 2026-05-19 | -42d | 0d | SYS Labour [720 h] | 990,000 |  | SEC-B | SC | WP05 | SYS |
| CNS-1380 |  | Signalling Installation - Section B | 50d | 2026-05-17 | 2026-07-27 | CNS-1120 SS+10d, PRC-1210 |  | 2026-03-09 | 2026-05-19 | -47d | 0d | SYS Labour [800 h] | 1,250,000 |  | SEC-B | SC | WP05 | SYS |
| CNS-1400 |  | OCS Installation - Section C | 45d | 2026-05-17 | 2026-07-20 | CNS-1180, PRC-1280 |  | 2026-03-16 | 2026-05-19 | -42d | 0d | SYS Labour [720 h] | 990,000 |  | SEC-C | SC | WP05 | SYS |
| CNS-1410 |  | Signalling Installation - Section C | 50d | 2026-05-17 | 2026-07-27 | CNS-1180 SS+10d, PRC-1210 |  | 2026-03-09 | 2026-05-19 | -47d | 0d | SYS Labour [800 h] | 1,250,000 |  | SEC-C | SC | WP05 | SYS |

| ID | WBS | Activity | Type | Duration | Start | Finish | Predecessors | Planned start | Planned finish | Total float | Free float | Resources | Cost | Location | Contractor | Work Package | Discipline |
| --- | --- | --- | --- | --- | --- | --- | --- | --- | --- | --- | --- | --- | --- | --- | --- | --- | --- |
|  | 4 | **Testing & Commissioning** |  |  | 2026-07-28 | 2027-01-19 |  |  |  |  |  |  |  |  |  |  |  |
| TST-1010 |  | System Testing - Section A |  | 30d | 2026-07-28 | 2026-09-07 | CNS-1340, CNS-1350, CNS-1360 | 2026-05-20 | 2026-07-02 | -47d | 0d | TNC Labour [480 h] | 270,000 | SEC-A | SC | WP06 | TNC |
| TST-1020 |  | System Testing - Section B |  | 30d | 2026-07-28 | 2026-09-07 | CNS-1370, CNS-1380, CNS-1390 | 2026-05-20 | 2026-07-02 | -47d | 0d | TNC Labour [480 h] | 270,000 | SEC-B | SC | WP06 | TNC |
| TST-1030 |  | System Testing - Section C |  | 30d | 2026-07-28 | 2026-09-07 | CNS-1400, CNS-1410, CNS-1420 | 2026-05-20 | 2026-07-02 | -47d | 0d | TNC Labour [480 h] | 270,000 | SEC-C | SC | WP06 | TNC |
| TST-1040 |  | Energization |  | 10d | 2026-09-08 | 2026-09-21 | TST-1010, TST-1020, TST-1030 | 2026-07-05 | 2026-07-16 | -47d | 0d | TNC Labour [160 h] | 60,000 | ALL | SC | WP06 | TNC |
| TST-1050 |  | Integration Testing |  | 40d | 2026-09-22 | 2026-11-17 | TST-1040, CNS-1230, CNS-1280, CNS-1330 | 2026-07-19 | 2026-09-10 | -47d | 0d | TNC Labour [640 h] | 400,000 | ALL | SC | WP06 | TNC |
| TST-1060 |  | Trial Running |  | 45d | 2026-11-18 | 2027-01-19 | TST-1050 | 2026-09-13 | 2026-11-15 | -47d | 0d | TNC Labour [720 h] | 360,000 | ALL | SC | WP06 | TNC |
|  | 5 | **Handover** |  |  | 2026-05-17 | 2027-01-19 |  |  |  |  |  |  |  |  |  |  |  |
| HND-1010 |  | As-built Documentation |  | 40d | 2026-05-17 | 2026-07-13 | MS-1040 | 2026-03-16 | 2026-05-12 | 88d |  | MGT Labour [640 h] | 120,000 | ALL | MC | WP06 | MGT |
| HND-1020 |  | O&M Manuals & Training |  | 30d | 2026-10-07 | 2026-11-17 | TST-1050 SS+10d | 2026-08-02 | 2026-09-10 | -2d | 0d | MGT Labour [480 h] | 120,000 | ALL | SC | WP06 | MGT |
| HND-1030 |  | Provisional Acceptance (PAC) | milestone | 0d | 2027-01-19 | 2027-01-19 | TST-1060, HND-1010, HND-1020 | 2026-11-15 | 2026-11-15 | -47d | 0d |  |  | ALL | MC | WP06 | MGT |

## Activity codes

| Code | Value | Meaning |
| --- | --- | --- |
| Contractor | DC | Design Consultant |
| Contractor | MC | Main Civil Contractor |
| Contractor | SC | Systems Contractor |
| Contractor | SUP | Suppliers |
| Discipline | CIV | Civil |
| Discipline | DES | Design |
| Discipline | MGT | Management |
| Discipline | PRC | Procurement |
| Discipline | STN | Stations |
| Discipline | SYS | Systems |
| Discipline | TNC | Testing & Commissioning |
| Discipline | TRK | Track Works |
| Location | ALL | Route-wide |
| Location | SEC-A | Section A (km 0-40) |
| Location | SEC-B | Section B (km 40-85) |
| Location | SEC-C | Section C (km 85-120) |
| Location | STN-C | Central Station |
| Location | STN-N | North Station |
| Location | STN-S | South Station |
| Work Package | WP01 | WP01 Design |
| Work Package | WP02 | WP02 Supply |
| Work Package | WP03 | WP03 Civil & Track |
| Work Package | WP04 | WP04 Stations |
| Work Package | WP05 | WP05 Systems |
| Work Package | WP06 | WP06 T&C and Handover |
