# Zulfi Passenger Railway Station - Baseline Programme (Revision 01: TGA Process and SAR Permits)

Schedule from Primavera P6, 2026-11-01 to 2028-12-31, data date 2026-11-01, costs in SAR.

## Calendars

- SAR-7D Design & Procurement (7-day, public holidays off): Mon-Sun 08:00-16:00. Exceptions (off unless hours are given): 2027-02-22, 2027-03-09 to 2027-03-14, 2027-05-15 to 2027-05-20, 2027-09-23, 2028-02-22, 2028-02-24 to 2028-03-01, 2028-05-02 to 2028-05-08, 2028-09-23.
- SAR-6D Construction (Fri off, public holidays off): Mon-Thu 08:00-16:00; Fri off; Sat-Sun 08:00-16:00. Exceptions (off unless hours are given): 2027-02-22, 2027-03-09 to 2027-03-14, 2027-05-15 to 2027-05-20, 2027-09-23, 2028-02-22, 2028-02-24 to 2028-03-01, 2028-05-02 to 2028-05-08, 2028-09-23.
- SAR-24/7 Manufacturing & Shipping (calendar days): Mon-Sun 08:00-16:00.

## Resources

| Resource | Group | Unit | Rate |
| --- | --- | --- | --- |
| PERFORMANCE - Progress Value (SAR, planned earned value) | material | SAR | 1 |
| CASH FLOW - Invoiced Cash (SAR, net of advance recovery) | material | SAR | 1 |
| Site Engineer / Supervisor | labor |  |  |
| Foreman | labor |  |  |
| General Labourer | labor |  |  |
| Wheel Loader / Backhoe | equipment |  |  |
| Dump Truck / Tipper | equipment |  |  |
| Surveyor / Setting-out Crew | labor |  |  |
| Excavator | equipment |  |  |
| Architect / Building Design Engineer | labor |  |  |
| Structural Engineer | labor |  |  |
| MEP Design Engineer | labor |  |  |
| CAD / BIM Technician | labor |  |  |
| Signalling & Telecom Engineer | labor |  |  |
| Civil / Roads / Drainage Engineer | labor |  |  |
| Railway Track & Systems Engineer | labor |  |  |
| Procurement / Contracts Engineer | labor |  |  |
| Plant Operator / Driver | labor |  |  |
| Vibratory Roller / Compactor | equipment |  |  |
| Water Tanker | equipment |  |  |
| Carpenter (Formwork) | labor |  |  |
| Steel Fixer | labor |  |  |
| Concrete / Mason Gang | labor |  |  |
| Concrete Pump | equipment |  |  |
| Transit Mixer | equipment |  |  |
| Mobile Crane (50-100 t) | equipment |  |  |
| Scissor Lift / Scaffolding Set | equipment |  |  |
| Plumber / Pipe Fitter | labor |  |  |
| HVAC Technician | labor |  |  |
| Electrician / Cable Technician | labor |  |  |
| Cable Drum Trailer / Pulling Winch | equipment |  |  |
| Finishing Trades (Plaster, Tile, Paint, Ceiling) | labor |  |  |
| Welding / Generator Set | equipment |  |  |
| Steel Erector / Welder | labor |  |  |
| Signalling & Telecom Technician / Fibre Splicer | labor |  |  |
| Fibre Splicing & OTDR Test Kit | equipment |  |  |
| Hi-rail Truck / Locomotive & Wagons | equipment |  |  |
| HV / Substation Technician & Jointer | labor |  |  |
| Paving & Road Crew | labor |  |  |
| Motor Grader | equipment |  |  |
| Asphalt Paver | equipment |  |  |
| Bitumen Sprayer / Road Marking Machine | equipment |  |  |
| Landscape Gardener | labor |  |  |
| Track Gang (Track Layers & Rail Welders) | labor |  |  |
| Track Laying Machine / Rail Crane | equipment |  |  |
| Ballast Regulator & Tamping Machine | equipment |  |  |
| Commissioning / Test Engineer | labor |  |  |
| Testing & Commissioning Instruments | equipment |  |  |

## Schedule

| ID | WBS | Activity | Type | Duration | Start | Finish | Predecessors | Total float | Free float | Constraint | Resources | Cost | Phase | Contract Phase | BOQ Ref | Stage | Lead Class | Responsibility | Package Group | Discipline | Design Stage | Procurement Step | Milestone Type | Cost Component | Payment Basis | Path Class | Critical Driver | Risk Flag | Work Zone | Crew Size Class | Start Month | Finish Month | Start Quarter | TGA Process | Duration Basis | Submit / Review |
| --- | --- | --- | --- | --- | --- | --- | --- | --- | --- | --- | --- | --- | --- | --- | --- | --- | --- | --- | --- | --- | --- | --- | --- | --- | --- | --- | --- | --- | --- | --- | --- | --- | --- | --- | --- | --- |
|  | 01 | **Project Milestones** |  |  | 2026-11-01 | 2028-12-31 |  |  |  |  |  |  |  |  |  |  |  |  |  |  |  |  |  |  |  |  |  |  |  |  |  |  |  |  |  |  |
| MS-0010 |  | Notice to Proceed (Project Start) - 1 Nov 2026 | milestone | 0d | 2026-11-01 | 2026-11-01 |  | 0d |  | start on 2026-11-01 |  |  | Phase 1 | Phase 1 (Billing) | N/A | Milestones | N/A | Contractor | General | Management & General | N/A | N/A | Contract Gate | No cost | None | Critical (0 d) | Longest path | None | General | No site crew | 2026-11 | 2026-11 | 2026-Q4 | Not TGA process | Baseline | Not applicable |
| MS-0020 |  | Access Permits Obtained (Month 1) | milestone | 0d | 2026-11-30 | 2026-11-30 | PR-0100 | 732d | 0d |  |  |  | Phase 1 | Phase 1 (Billing) | N/A | Milestones | N/A | Contractor | General | Management & General | N/A | N/A | Permit & Approval | No cost | None | Float > 90 d | Other | None | General | No site crew | 2026-11 | 2026-11 | 2026-Q4 | Not TGA process | Baseline | Not applicable |
| MS-0030 |  | Concept Design Approved - Gate 1 | milestone | 0d | 2027-01-30 | 2027-01-30 | DS-0020 | 671d | 0d |  |  |  | Phase 1 | Phase 1 (Billing) | N/A | Milestones | N/A | Contractor | General | Management & General | N/A | N/A | Design Gate | No cost | None | Float > 90 d | Other | None | General | No site crew | 2027-01 | 2027-01 | 2027-Q1 | Not TGA process | Baseline | Not applicable |
| MS-0040 |  | Preliminary Design Approved - Gate 2 | milestone | 0d | 2027-04-28 | 2027-04-28 | DS-0360 | 113d | 0d |  |  |  | Phase 1 | Phase 1 (Billing) | N/A | Milestones | N/A | Contractor | General | Management & General | N/A | N/A | Design Gate | No cost | None | Float > 90 d | Other | None | General | No site crew | 2027-04 | 2027-04 | 2027-Q2 | Not TGA process | Baseline | Not applicable |
| MS-0050 |  | Phase 1 Procurement Start (Prequalification) | milestone | 0d | 2027-05-14 | 2027-05-14 | MS-0040 FS+15d | 113d | 0d |  |  |  | Phase 1 | Phase 1 (Billing) | N/A | Milestones | N/A | Contractor | General | Management & General | N/A | N/A | Contract Gate | No cost | None | Float > 90 d | Other | None | General | No site crew | 2027-05 | 2027-05 | 2027-Q2 | Not TGA process | Baseline | Not applicable |
| MS-0075 |  | Environmental Permit & Authority Approvals Obtained | milestone | 0d | 2027-07-23 | 2027-07-23 | PR-0110, PR-0111, PR-0112, PR-0113, PR-0114, PR-2270, TG-2520 | 250d | 0d |  |  |  | Phase 1 | Phase 1 (Billing) | N/A | Milestones | N/A | Contractor | General | Management & General | N/A | N/A | Permit & Approval | No cost | None | Float > 90 d | Other | None | General | No site crew | 2027-07 | 2027-07 | 2027-Q3 | Authority Design Approvals | Baseline | Not applicable |
| MS-0060 |  | Detailed Design (IFC) Approved - Gate 3 | milestone | 0d | 2027-09-21 | 2027-09-21 | DS-0700 | 0d |  |  |  |  | Phase 1 | Phase 1 (Billing) | N/A | Milestones | N/A | Contractor | General | Management & General | N/A | N/A | Design Gate | No cost | None | Critical (0 d) | Longest path | None | General | No site crew | 2027-09 | 2027-09 | 2027-Q3 | Not TGA process | Baseline | Not applicable |
| MS-0080 |  | Phase 2 Procurement Start (Prequalification) | milestone | 0d | 2027-09-22 | 2027-09-22 | MS-0060 | 0d |  |  |  |  | Phase 1 | Phase 1 (Billing) | N/A | Milestones | N/A | Contractor | General | Management & General | N/A | N/A | Contract Gate | No cost | None | Critical (0 d) | Longest path | None | General | No site crew | 2027-09 | 2027-09 | 2027-Q3 | Not TGA process | Baseline | Not applicable |
| MS-0070 |  | Work Permit Issued | milestone | 0d | 2027-10-06 | 2027-10-06 | PR-0120 | 190d | 0d |  |  |  | Phase 1 | Phase 1 (Billing) | N/A | Milestones | N/A | Contractor | General | Management & General | N/A | N/A | Permit & Approval | No cost | None | Float > 90 d | Other | None | General | No site crew | 2027-10 | 2027-10 | 2027-Q4 | SAR Work Permit and Possession | Baseline | Not applicable |
| MS-0090 |  | Construction Start | milestone | 0d | 2027-10-07 | 2027-10-07 | MS-0070, TG-2720 | 190d | 0d |  |  |  | Phase 1 | Phase 1 (Billing) | N/A | Milestones | N/A | Contractor | General | Management & General | N/A | N/A | Contract Gate | No cost | None | Float > 90 d | Other | None | General | No site crew | 2027-10 | 2027-10 | 2027-Q4 | Not TGA process | Baseline | Not applicable |
| MS-0100 |  | Signalling & Turnout Materials Delivered to Site | milestone | 0d | 2028-04-05 | 2028-04-05 | PC-0650, PC-0690 | 251d | 0d |  |  |  | Phase 1 | Phase 1 (Billing) | N/A | Milestones | N/A | Contractor | General | Management & General | N/A | N/A | Delivery | No cost | None | Float > 90 d | Other | None | General | No site crew | 2028-04 | 2028-04 | 2028-Q2 | Not TGA process | Baseline | Not applicable |
| MS-0110 |  | Track Materials Delivered to Site | milestone | 0d | 2028-08-09 | 2028-08-09 | PC-0670 | 132d | 0d |  |  |  | Phase 1 | Phase 1 (Billing) | N/A | Milestones | N/A | Contractor | General | Management & General | N/A | N/A | Delivery | No cost | None | Float > 90 d | Other | None | General | No site crew | 2028-08 | 2028-08 | 2028-Q3 | Not TGA process | Baseline | Not applicable |
| MS-0120 |  | All Construction Works Complete | milestone | 0d | 2028-10-21 | 2028-10-21 | MS-0100, MS-0110, CN-0010, CN-0020, CN-0030, CN-0040, CN-0050, CN-0060, CN-0070, CN-0080, CN-0090, CN-0100, CN-0110, CN-0120, CN-0130, CN-0140, CN-0150, CN-0160, CN-0170, CN-0180, CN-0190, CN-0200, CN-0210, CN-0220, CN-0230, CN-0240, CN-0250, CN-0260, CN-0270, CN-0280, CN-0290, CN-0300, CN-0310, CN-0320, CN-0330, CN-0340, CN-0350, CN-0360, CN-0370, CN-0380, CN-0390, CN-0400, CN-0410, CN-0420, CN-0430, CN-0440, CN-0450, CN-0460, CN-0470, CN-0480, CN-0490, CN-0500, CN-0510, CN-0520, CN-0530, CN-0540, CN-0550, CN-0560, CN-0570, CN-0580, CN-0590, CN-0600, CN-0610, CN-0620, CN-0630, CN-0640, CN-0650, CN-0660, CN-0670, CN-0680, CN-0690, CN-0700, CN-0710, CN-0720, CN-0730, CN-0740, CN-0750, CN-0760, CN-0770, CN-0780, CN-0790, CN-0800, CN-0810, CN-0820, CN-0830, CN-0840, CN-0850, CN-0860, CN-0870, CN-0880, CN-0890, CN-0900, CN-0910, CN-0920, CN-0930, CN-0940, CN-0950, CN-0960, CN-0970, CN-0980, CN-0990, CN-1000, CN-1010, CN-1020, CN-1030, CN-1040, CN-1050, CN-1060, CN-1070, CN-1080, CN-1090, CN-1100, CN-1110, CN-1120, CN-1130, CN-1140, CN-1150, CN-1160, CN-1170, CN-1180, CN-1190, CN-1200, CN-1210, CN-1220, CN-1230, CN-1240, CN-1250, CN-1260, CN-1270, CN-1280, CN-1290, CN-1300, CN-1310, CN-1320, CN-1330, CN-1340, CN-1350, CN-1360, CN-1370, CN-1380, CN-1390, CN-1400, CN-1410, CN-1420, CN-1430, CN-1440, CN-1450, CN-1460, CN-1470, CN-1480, CN-1490, CN-1500, CN-1510, CN-1520, CN-1530, CN-1540, CN-1550, CN-1560, CN-1570, CN-1580, CN-1590, CN-1600, CN-1610, CN-1620, CN-1630, CN-1640, CN-1650, CN-1660, CN-1670, CN-1680, CN-1690, CN-1700, CN-1710, CN-1720, CN-1730, CN-1740, TG-0730 FF | 60d | 0d |  |  |  | Phase 1 | Phase 1 (Billing) | N/A | Milestones | N/A | Contractor | General | Management & General | N/A | N/A | Completion | No cost | None | Float 31-90 d | Other | None | General | No site crew | 2028-10 | 2028-10 | 2028-Q4 | Not TGA process | Baseline | Not applicable |
| MS-0130 |  | Taking-Over of All Works (Handing Over) | milestone | 0d | 2028-12-20 | 2028-12-20 | CO-0020 | 11d | 0d |  |  |  | Phase 1 | Phase 1 (Billing) | N/A | Milestones | N/A | Contractor | General | Management & General | N/A | N/A | Completion | No cost | None | Near-critical (1-30 d) | Other | None | General | No site crew | 2028-12 | 2028-12 | 2028-Q4 | Not TGA process | Baseline | Not applicable |
| MS-0140 |  | Contract Completion Date (26 months from NTP) | milestone | 0d | 2028-12-31 | 2028-12-31 | MS-0130, PR-0210 FF | 0d |  | finish on 2028-12-31 |  |  | Phase 1 | Phase 1 (Billing) | N/A | Milestones | N/A | Contractor | General | Management & General | N/A | N/A | Contract Gate | No cost | None | Critical (0 d) | Longest path | None | General | No site crew | 2028-12 | 2028-12 | 2028-Q4 | Not TGA process | Baseline | Not applicable |
|  | 02 | **Preliminaries and Mobilisation** |  |  | 2026-11-01 | 2028-12-31 |  |  |  |  |  |  |  |  |  |  |  |  |  |  |  |  |  |  |  |  |  |  |  |  |  |  |  |  |  |  |
|  | 01 | **Commencement and Project Organisation** |  |  | 2026-11-01 | 2026-11-15 |  |  |  |  |  |  |  |  |  |  |  |  |  |  |  |  |  |  |  |  |  |  |  |  |  |  |  |  |  |  |
| PR-0010 |  | Notice to Proceed / Contract Commencement |  | 1d | 2026-11-01 | 2026-11-01 | MS-0010 SS | 0d |  |  |  |  | Phase 1 | Phase 1 (Billing) | 1.1 | Preliminaries | N/A | Contractor | General | Management & General | N/A | N/A | N/A | No cost | None | Critical (0 d) | Longest path | None | General | No site crew | 2026-11 | 2026-11 | 2026-Q4 | Not TGA process | Baseline | Not applicable |
| PR-0020 |  | Mobilise Project Management Team & Issue Project Organisation Chart |  | 14d | 2026-11-02 | 2026-11-15 | PR-0010 | 447d | 0d |  | PERFORMANCE - Progress Value (SAR, planned earned value) [128665 SAR]; CASH FLOW - Invoiced Cash (SAR, net of advance recovery) [115799 SAR] | 244,463.9 | Phase 1 | Phase 1 (Billing) | 1.1 | Preliminaries | N/A | Contractor | General | Management & General | N/A | N/A | N/A | Preliminaries | Time-related / lump | Float > 90 d | Other | None | General | No site crew | 2026-11 | 2026-11 | 2026-Q4 | Not TGA process | Baseline | Review / Approval |
| PR-0030 |  | Project Kick-off Meeting with SAR / Employer |  | 3d | 2026-11-02 | 2026-11-04 | PR-0020 SS | 458d | 0d |  | PERFORMANCE - Progress Value (SAR, planned earned value) [21444.2 SAR]; CASH FLOW - Invoiced Cash (SAR, net of advance recovery) [19299.8 SAR] | 40,743.98 | Phase 1 | Phase 1 (Billing) | 1.1 | Preliminaries | N/A | Contractor | General | Management & General | N/A | N/A | N/A | Preliminaries | Time-related / lump | Float > 90 d | Other | None | General | No site crew | 2026-11 | 2026-11 | 2026-Q4 | Not TGA process | Baseline | Not applicable |
|  | 02 | **Insurances, Bonds and Guarantees** |  |  | 2026-11-02 | 2026-11-22 |  |  |  |  |  |  |  |  |  |  |  |  |  |  |  |  |  |  |  |  |  |  |  |  |  |  |  |  |  |  |
| PR-0040 |  | Performance Bond & Advance Payment Guarantee - Issue and Submit |  | 21d | 2026-11-02 | 2026-11-22 | PR-0010 | 467d | 0d |  | PERFORMANCE - Progress Value (SAR, planned earned value) [428884 SAR]; CASH FLOW - Invoiced Cash (SAR, net of advance recovery) [385996 SAR] | 814,879.66 | Phase 1 | Phase 1 (Billing) | 1.1 | Preliminaries | N/A | Contractor | General | Management & General | N/A | N/A | N/A | Preliminaries | Time-related / lump | Float > 90 d | Other | None | General | No site crew | 2026-11 | 2026-11 | 2026-Q4 | Not TGA process | Baseline | Submission |
| PR-0050 |  | Insurances (CAR, Third Party, Workmen Compensation) - Procure and Submit |  | 21d | 2026-11-02 | 2026-11-22 | PR-0010 | 467d | 0d |  | PERFORMANCE - Progress Value (SAR, planned earned value) [343107 SAR]; CASH FLOW - Invoiced Cash (SAR, net of advance recovery) [308796 SAR] | 651,903.72 | Phase 1 | Phase 1 (Billing) | 1.1 | Preliminaries | N/A | Contractor | General | Management & General | N/A | N/A | N/A | Preliminaries | Time-related / lump | Float > 90 d | Other | None | General | No site crew | 2026-11 | 2026-11 | 2026-Q4 | Not TGA process | Baseline | Submission |

| ID | WBS | Activity | Duration | Start | Finish | Predecessors | Total float | Free float | Resources | Cost | Phase | Contract Phase | BOQ Ref | Stage | Lead Class | Responsibility | Package Group | Discipline | Design Stage | Procurement Step | Milestone Type | Cost Component | Payment Basis | Path Class | Critical Driver | Risk Flag | Work Zone | Crew Size Class | Start Month | Finish Month | Start Quarter | TGA Process | Duration Basis | Submit / Review | Work Package |
| --- | --- | --- | --- | --- | --- | --- | --- | --- | --- | --- | --- | --- | --- | --- | --- | --- | --- | --- | --- | --- | --- | --- | --- | --- | --- | --- | --- | --- | --- | --- | --- | --- | --- | --- | --- |
|  | 03 | **Management Plans and Procedures** |  | 2026-11-16 | 2026-12-25 |  |  |  |  |  |  |  |  |  |  |  |  |  |  |  |  |  |  |  |  |  |  |  |  |  |  |  |  |  |  |
| PR-0060 |  | Project Execution Plan & Methodology Statements - Submit | 14d | 2026-11-16 | 2026-11-29 | PR-0020, PR-0030 | 447d | 0d | PERFORMANCE - Progress Value (SAR, planned earned value) [85776.8 SAR]; CASH FLOW - Invoiced Cash (SAR, net of advance recovery) [77199.1 SAR] | 162,975.94 | Phase 1 | Phase 1 (Billing) | 1.1 | Preliminaries | N/A | Contractor | General | Management & General | N/A | N/A | N/A | Preliminaries | Time-related / lump | Float > 90 d | Other | None | General | No site crew | 2026-11 | 2026-11 | 2026-Q4 | Not TGA process | Baseline | Submission |  |
| PR-0070 |  | HSE Plan & Risk Assessments - Submit to SAR | 5d | 2026-11-16 | 2026-11-20 | PR-0020 | 461d | 0d | PERFORMANCE - Progress Value (SAR, planned earned value) [85776.8 SAR]; CASH FLOW - Invoiced Cash (SAR, net of advance recovery) [77199.1 SAR] | 162,975.94 | Phase 1 | Phase 1 (Billing) | 1.1 | Preliminaries | N/A | Contractor | General | Management & General | N/A | N/A | N/A | Preliminaries | Time-related / lump | Float > 90 d | Other | None | General | No site crew | 2026-11 | 2026-11 | 2026-Q4 | Not TGA process | Baseline | Submission |  |
| PR-0080 |  | Quality Plan, ITPs & Material Approval Procedure - Submit to SAR | 5d | 2026-11-16 | 2026-11-20 | PR-0020 | 461d | 0d | PERFORMANCE - Progress Value (SAR, planned earned value) [85776.8 SAR]; CASH FLOW - Invoiced Cash (SAR, net of advance recovery) [77199.1 SAR] | 162,975.94 | Phase 1 | Phase 1 (Billing) | 1.1 | Preliminaries | N/A | Contractor | General | Management & General | N/A | N/A | N/A | Preliminaries | Time-related / lump | Float > 90 d | Other | None | General | No site crew | 2026-11 | 2026-11 | 2026-Q4 | Not TGA process | Baseline | Submission |  |
| PR-2070 |  | HSE Plan & Risk Assessments - Approval by SAR | 21d | 2026-11-21 | 2026-12-11 | PR-0070 | 461d | 0d |  |  | Phase 1 | Phase 1 (Billing) | 1.1 | Preliminaries | N/A | SAR | General | Management & General | N/A | N/A | N/A | No cost | None | Float > 90 d | Other | SAR dependency | General | No site crew | 2026-11 | 2026-12 | 2026-Q4 | Not TGA process | Baseline | Review / Approval |  |
| PR-2080 |  | Quality Plan, ITPs & Material Approval Procedure - Approval by SAR | 21d | 2026-11-21 | 2026-12-11 | PR-0080 | 461d | 0d |  |  | Phase 1 | Phase 1 (Billing) | 1.1 | Preliminaries | N/A | SAR | General | Management & General | N/A | N/A | N/A | No cost | None | Float > 90 d | Other | SAR dependency | General | No site crew | 2026-11 | 2026-12 | 2026-Q4 | Not TGA process | Baseline | Review / Approval |  |
| PR-0090 |  | Baseline Programme - Submission to SAR | 5d | 2026-11-30 | 2026-12-04 | PR-0060 | 447d | 0d | PERFORMANCE - Progress Value (SAR, planned earned value) [85776.8 SAR]; CASH FLOW - Invoiced Cash (SAR, net of advance recovery) [77199.1 SAR] | 162,975.94 | Phase 1 | Phase 1 (Billing) | 1.1 | Preliminaries | N/A | Contractor | General | Management & General | N/A | N/A | N/A | Preliminaries | Time-related / lump | Float > 90 d | Other | None | General | No site crew | 2026-11 | 2026-12 | 2026-Q4 | Not TGA process | Baseline | Submission |  |
| PR-2090 |  | Baseline Programme - Approval by SAR | 21d | 2026-12-05 | 2026-12-25 | PR-0090 | 447d | 0d |  |  | Phase 1 | Phase 1 (Billing) | 1.1 | Preliminaries | N/A | SAR | General | Management & General | N/A | N/A | N/A | No cost | None | Float > 90 d | Other | SAR dependency | General | No site crew | 2026-12 | 2026-12 | 2026-Q4 | Not TGA process | Baseline | Review / Approval |  |
|  | 04 | **Permits and Authority Approvals** |  | 2026-11-01 | 2028-09-20 |  |  |  |  |  |  |  |  |  |  |  |  |  |  |  |  |  |  |  |  |  |  |  |  |  |  |  |  |  |  |
| PR-0100 |  | Access Permits - Site Access & Security Clearance (Month 1) | 30d | 2026-11-01 | 2026-11-30 | PR-0010 SS | 0d |  | PERFORMANCE - Progress Value (SAR, planned earned value) [85776.8 SAR]; CASH FLOW - Invoiced Cash (SAR, net of advance recovery) [77199.1 SAR] | 162,975.94 | Phase 1 | Phase 1 (Billing) | 1.1 | Preliminaries | N/A | Contractor | General | Authorities & Permit | Studies & Approvals | N/A | N/A | Preliminaries | Time-related / lump | Critical (0 d) | Longest path | Authority dependency | General | No site crew | 2026-11 | 2026-11 | 2026-Q4 | Not TGA process | Baseline | Not applicable |  |
| PR-2111 |  | Municipality Design Submission | 5d | 2027-05-13 | 2027-05-23 | DS-0360 FS+14d | 91d | 0d |  |  | Phase 1 | Phase 1 (Billing) | 1.1 | Preliminaries | N/A | Contractor | General | Authorities & Permit | Studies & Approvals | N/A | N/A | No cost | None | Float > 90 d | Design & approvals g | Authority dependency | General | No site crew | 2027-05 | 2027-05 | 2027-Q2 | Not TGA process | Baseline | Submission |  |
| PR-2112 |  | NWC Water & Sewer Design Submission | 5d | 2027-05-13 | 2027-05-23 | DS-0360 FS+14d | 76d | 0d |  |  | Phase 1 | Phase 1 (Billing) | 1.1 | Preliminaries | N/A | Contractor | General | Authorities & Permit | Studies & Approvals | N/A | N/A | No cost | None | Float 31-90 d | Design & approvals g | Authority dependency | General | No site crew | 2027-05 | 2027-05 | 2027-Q2 | Not TGA process | Baseline | Submission |  |
| PR-2113 |  | SEC Electrical Design Submission | 5d | 2027-05-13 | 2027-05-23 | DS-0360 FS+14d | 61d | 0d |  |  | Phase 1 | Phase 1 (Billing) | 1.1 | Preliminaries | N/A | Contractor | General | Authorities & Permit | Studies & Approvals | N/A | N/A | No cost | None | Float 31-90 d | Design & approvals g | Authority dependency | General | No site crew | 2027-05 | 2027-05 | 2027-Q2 | Not TGA process | Baseline | Submission |  |
| PR-2114 |  | Telecom / Fibre Design Submission | 5d | 2027-05-13 | 2027-05-23 | DS-0360 FS+14d | 76d | 0d |  |  | Phase 1 | Phase 1 (Billing) | 1.1 | Preliminaries | N/A | Contractor | General | Authorities & Permit | Studies & Approvals | N/A | N/A | No cost | None | Float 31-90 d | Design & approvals g | Authority dependency | General | No site crew | 2027-05 | 2027-05 | 2027-Q2 | Not TGA process | Baseline | Submission |  |
| PR-0270 |  | Environmental Permit for Construction - Application Submission | 5d | 2027-05-14 | 2027-05-24 | PR-0230, TG-0330 | 250d | 0d | PERFORMANCE - Progress Value (SAR, planned earned value) [64332.6 SAR]; CASH FLOW - Invoiced Cash (SAR, net of advance recovery) [57899.3 SAR] | 122,231.94 | Phase 1 | Phase 1 (Billing) | 1.1 | Preliminaries | N/A | Contractor | General | Authorities & Permit | Studies & Approvals | N/A | N/A | Preliminaries | Time-related / lump | Float > 90 d | Design & approvals g | Authority dependency | General | No site crew | 2027-05 | 2027-05 | 2027-Q2 | Authority Design Approvals | Baseline | Submission |  |
| PR-0110 |  | Civil Defense Design Review and Approval (Concept and Detailed) | 45d | 2027-05-22 | 2027-07-05 | PR-0190, DS-0360 FS+14d, TG-0530 | 78d | 0d | PERFORMANCE - Progress Value (SAR, planned earned value) [64332.6 SAR]; CASH FLOW - Invoiced Cash (SAR, net of advance recovery) [57899.3 SAR] | 122,231.94 | Phase 1 | Phase 1 (Billing) | 1.1 | Preliminaries | N/A | Authority | General | Authorities & Permit | Studies & Approvals | N/A | N/A | Preliminaries | Time-related / lump | Float 31-90 d | Design & approvals g | Authority dependency | General | No site crew | 2027-05 | 2027-07 | 2027-Q2 | Authority Design Approvals | Baseline | Review / Approval |  |
| PR-0111 |  | Municipality Design Approval | 30d | 2027-05-24 | 2027-06-22 | PR-2111 | 91d | 0d | PERFORMANCE - Progress Value (SAR, planned earned value) [42888.4 SAR]; CASH FLOW - Invoiced Cash (SAR, net of advance recovery) [38599.6 SAR] | 81,487.96 | Phase 1 | Phase 1 (Billing) | 1.1 | Preliminaries | N/A | Authority | General | Authorities & Permit | Studies & Approvals | N/A | N/A | Preliminaries | Time-related / lump | Float > 90 d | Design & approvals g | Authority dependency | General | No site crew | 2027-05 | 2027-06 | 2027-Q2 | Not TGA process | Baseline | Review / Approval |  |
| PR-0112 |  | NWC Water & Sewer Design Approval | 45d | 2027-05-24 | 2027-07-07 | PR-2112 | 76d | 0d | PERFORMANCE - Progress Value (SAR, planned earned value) [42888.4 SAR]; CASH FLOW - Invoiced Cash (SAR, net of advance recovery) [38599.6 SAR] | 81,487.96 | Phase 1 | Phase 1 (Billing) | 1.1 | Preliminaries | N/A | Authority | General | Authorities & Permit | Studies & Approvals | N/A | N/A | Preliminaries | Time-related / lump | Float 31-90 d | Design & approvals g | Authority dependency | General | No site crew | 2027-05 | 2027-07 | 2027-Q2 | Not TGA process | Baseline | Review / Approval |  |
| PR-0113 |  | SEC Electrical Design Approval | 60d | 2027-05-24 | 2027-07-22 | PR-2113 | 61d | 0d | PERFORMANCE - Progress Value (SAR, planned earned value) [64332.6 SAR]; CASH FLOW - Invoiced Cash (SAR, net of advance recovery) [57899.3 SAR] | 122,231.94 | Phase 1 | Phase 1 (Billing) | 1.1 | Preliminaries | N/A | Authority | General | Authorities & Permit | Studies & Approvals | N/A | N/A | Preliminaries | Time-related / lump | Float 31-90 d | Design & approvals g | Authority dependency | General | No site crew | 2027-05 | 2027-07 | 2027-Q2 | Not TGA process | Baseline | Review / Approval |  |
| PR-0114 |  | Telecom / Fibre Design Approval | 45d | 2027-05-24 | 2027-07-07 | PR-2114 | 76d | 0d | PERFORMANCE - Progress Value (SAR, planned earned value) [42888.4 SAR]; CASH FLOW - Invoiced Cash (SAR, net of advance recovery) [38599.6 SAR] | 81,487.96 | Phase 1 | Phase 1 (Billing) | 1.1 | Preliminaries | N/A | Authority | General | Authorities & Permit | Studies & Approvals | N/A | N/A | Preliminaries | Time-related / lump | Float 31-90 d | Design & approvals g | Authority dependency | General | No site crew | 2027-05 | 2027-07 | 2027-Q2 | Not TGA process | Baseline | Review / Approval |  |
| PR-2270 |  | Environmental Permit for Construction - Approval | 60d | 2027-05-25 | 2027-07-23 | PR-0270 | 250d | 0d |  |  | Phase 1 | Phase 1 (Billing) | 1.1 | Preliminaries | N/A | Authority | General | Authorities & Permit | Studies & Approvals | N/A | N/A | No cost | None | Float > 90 d | Design & approvals g | Authority dependency | General | No site crew | 2027-05 | 2027-07 | 2027-Q2 | Authority Design Approvals | Baseline | Review / Approval |  |
| PR-0120 |  | SAR Work Permit - Final Approval and Issue (14 Days after Detailed Design Approval) | 14d | 2027-09-22 | 2027-10-06 | MS-0060, PR-2070, PR-2080, PR-2090, DS-0700, MS-0075, TG-2640 | 190d | 0d | PERFORMANCE - Progress Value (SAR, planned earned value) [42888.4 SAR]; CASH FLOW - Invoiced Cash (SAR, net of advance recovery) [38599.6 SAR] | 81,487.96 | Phase 1 | Phase 1 (Billing) | 1.1 | Preliminaries | N/A | Contractor | General | Authorities & Permit | Studies & Approvals | N/A | N/A | Preliminaries | Time-related / lump | Float > 90 d | Design & approvals g | Authority dependency | General | No site crew | 2027-09 | 2027-10 | 2027-Q3 | SAR Work Permit and Possession | Baseline | Review / Approval |  |
| PR-0196 |  | SAR Operations Possession Booking - Turnout Tie-in | 30d | 2028-04-16 | 2028-05-22 | TG-0660 | 113d | 0d | PERFORMANCE - Progress Value (SAR, planned earned value) [10722.1 SAR]; CASH FLOW - Invoiced Cash (SAR, net of advance recovery) [9649.89 SAR] | 20,371.99 | Phase 1 | Phase 1 (Billing) | 1.1 | Preliminaries | N/A | SAR | Railway Systems | Management & General | N/A | N/A | N/A | Preliminaries | Time-related / lump | Float > 90 d | Railway convergence | SAR dependency | Track Zone | No site crew | 2028-04 | 2028-05 | 2028-Q2 | SAR Work Permit and Possession | Baseline | Review / Approval | 7.3 Railway Turnouts |
| PR-0195 |  | SAR Operations Possession Booking - Track Tie-in (Loop Line) | 30d | 2028-08-22 | 2028-09-20 | TG-0650 | 6d | 0d | PERFORMANCE - Progress Value (SAR, planned earned value) [10722.1 SAR]; CASH FLOW - Invoiced Cash (SAR, net of advance recovery) [9649.89 SAR] | 20,371.99 | Phase 2 | Phase 1 (Billing) | 1.1 | Preliminaries | N/A | SAR | Railway Systems | Management & General | N/A | N/A | N/A | Preliminaries | Time-related / lump | Near-critical (1-30 d) | Railway convergence | SAR dependency | Track Zone | No site crew | 2028-08 | 2028-09 | 2028-Q3 | SAR Work Permit and Possession | Baseline | Review / Approval | 7.2 Railway Track |

| ID | WBS | Activity | Type | Duration | Start | Finish | Predecessors | Total float | Free float | Calendar | Resources | Cost | Phase | Contract Phase | BOQ Ref | Stage | Lead Class | Responsibility | Package Group | Discipline | Design Stage | Procurement Step | Milestone Type | Cost Component | Payment Basis | Path Class | Critical Driver | Risk Flag | Work Zone | Crew Size Class | Start Month | Finish Month | Start Quarter | TGA Process | Duration Basis | Submit / Review |
| --- | --- | --- | --- | --- | --- | --- | --- | --- | --- | --- | --- | --- | --- | --- | --- | --- | --- | --- | --- | --- | --- | --- | --- | --- | --- | --- | --- | --- | --- | --- | --- | --- | --- | --- | --- | --- |
|  | 05 | **Site Establishment and Mobilisation** |  |  | 2026-12-01 | 2027-10-06 |  |  |  |  |  |  |  |  |  |  |  |  |  |  |  |  |  |  |  |  |  |  |  |  |  |  |  |  |  |  |
| PR-0130 |  | Site Offices, Camp, Laydown & Storage Establishment |  | 29d | 2026-12-01 | 2026-12-29 | PR-0100 | 412d | 0d |  | PERFORMANCE - Progress Value (SAR, planned earned value) [514661 SAR]; CASH FLOW - Invoiced Cash (SAR, net of advance recovery) [463195 SAR]; Site Engineer / Supervisor [464 h]; Foreman [464 h]; General Labourer [2320 h]; Wheel Loader / Backhoe [232 h]; Dump Truck / Tipper [232 h] | 977,855.58 | Phase 1 | Phase 1 (Billing) | 1.1 | Preliminaries | N/A | Contractor | General | Management & General | N/A | N/A | N/A | Preliminaries | Time-related / lump | Float > 90 d | Other | None | General | Small (<15) | 2026-12 | 2026-12 | 2026-Q4 | Not TGA process | Baseline | Not applicable |
| PR-0140 |  | Temporary Utilities, Site Fencing & Security |  | 18d | 2026-12-30 | 2027-01-16 | PR-0130 | 412d | 0d |  | PERFORMANCE - Progress Value (SAR, planned earned value) [171554 SAR]; CASH FLOW - Invoiced Cash (SAR, net of advance recovery) [154398 SAR]; Site Engineer / Supervisor [288 h]; Foreman [288 h]; General Labourer [1440 h]; Wheel Loader / Backhoe [144 h]; Dump Truck / Tipper [144 h] | 325,951.86 | Phase 1 | Phase 1 (Billing) | 1.1 | Preliminaries | N/A | Contractor | General | Management & General | N/A | N/A | N/A | Preliminaries | Time-related / lump | Float > 90 d | Other | None | General | Small (<15) | 2026-12 | 2027-01 | 2026-Q4 | Not TGA process | Baseline | Not applicable |
| PR-0150 |  | Construction Mobilisation - Plant, Equipment, Labour & Subcontractors (30 days, pre-mobilisation) |  | 30d | 2027-09-01 | 2027-10-06 | PR-0040, PR-0050, PR-0120 FF, PR-0140 | 169d | 0d | SAR-6D Construction (Fri off, public holidays off) | PERFORMANCE - Progress Value (SAR, planned earned value) [343107 SAR]; CASH FLOW - Invoiced Cash (SAR, net of advance recovery) [308796 SAR]; Site Engineer / Supervisor [480 h]; Foreman [480 h]; General Labourer [2400 h]; Wheel Loader / Backhoe [240 h]; Dump Truck / Tipper [240 h] | 651,903.72 | Phase 1 | Phase 1 (Billing) | 1.1 | Preliminaries | N/A | Contractor | General | Management & General | N/A | N/A | N/A | Preliminaries | Time-related / lump | Float > 90 d | Other | None | General | Small (<15) | 2027-09 | 2027-10 | 2027-Q3 | Not TGA process | Baseline | Not applicable |
|  | 06 | **Utility Connection Applications** |  |  | 2027-04-29 | 2027-08-16 |  |  |  |  |  |  |  |  |  |  |  |  |  |  |  |  |  |  |  |  |  |  |  |  |  |  |  |  |  |  |
| PR-0160 |  | SEC Power Connection - Application & Load Schedule Submission |  | 14d | 2027-04-29 | 2027-05-12 | PR-0260, DS-0360 | 355d | 0d |  | PERFORMANCE - Progress Value (SAR, planned earned value) [21444.2 SAR]; CASH FLOW - Invoiced Cash (SAR, net of advance recovery) [19299.8 SAR] | 40,743.98 | Phase 1 | Phase 1 (Billing) | 1.1 | Preliminaries | N/A | Contractor | General | Authorities & Permit | Studies & Approvals | N/A | N/A | Preliminaries | Time-related / lump | Float > 90 d | Design & approvals g | Authority dependency | General | No site crew | 2027-04 | 2027-05 | 2027-Q2 | Not TGA process | Baseline | Submission |
| PR-0170 |  | NWC Water & Sewer Connection - Application Submission |  | 14d | 2027-04-29 | 2027-05-12 | PR-0260, DS-0360 | 476d | 0d |  | PERFORMANCE - Progress Value (SAR, planned earned value) [21444.2 SAR]; CASH FLOW - Invoiced Cash (SAR, net of advance recovery) [19299.8 SAR] | 40,743.98 | Phase 1 | Phase 1 (Billing) | 1.1 | Preliminaries | N/A | Contractor | General | Authorities & Permit | Studies & Approvals | N/A | N/A | Preliminaries | Time-related / lump | Float > 90 d | Design & approvals g | Authority dependency | General | No site crew | 2027-04 | 2027-05 | 2027-Q2 | Not TGA process | Baseline | Submission |
| PR-0180 |  | Telecom / Fibre Service Connection - Application Submission |  | 14d | 2027-04-29 | 2027-05-12 | PR-0260, DS-0360 | 491d | 0d |  | PERFORMANCE - Progress Value (SAR, planned earned value) [21444.2 SAR]; CASH FLOW - Invoiced Cash (SAR, net of advance recovery) [19299.8 SAR] | 40,743.98 | Phase 1 | Phase 1 (Billing) | 1.1 | Preliminaries | N/A | Contractor | General | Authorities & Permit | Studies & Approvals | N/A | N/A | Preliminaries | Time-related / lump | Float > 90 d | Design & approvals g | Authority dependency | General | No site crew | 2027-04 | 2027-05 | 2027-Q2 | Not TGA process | Baseline | Submission |
| PR-0190 |  | Civil Defense Concept Design - Submission |  | 14d | 2027-04-29 | 2027-05-12 | DS-0360 | 78d | 0d |  | PERFORMANCE - Progress Value (SAR, planned earned value) [21444.2 SAR]; CASH FLOW - Invoiced Cash (SAR, net of advance recovery) [19299.8 SAR] | 40,743.98 | Phase 1 | Phase 1 (Billing) | 1.1 | Preliminaries | N/A | Contractor | General | Authorities & Permit | Studies & Approvals | N/A | N/A | Preliminaries | Time-related / lump | Float 31-90 d | Design & approvals g | Authority dependency | General | No site crew | 2027-04 | 2027-05 | 2027-Q2 | Authority Design Approvals | Baseline | Submission |
| PR-0165 |  | SEC Permanent Power Supply - Agreement & Approval |  | 90d | 2027-05-13 | 2027-08-16 | PR-0160 | 355d | 0d |  | PERFORMANCE - Progress Value (SAR, planned earned value) [21444.2 SAR]; CASH FLOW - Invoiced Cash (SAR, net of advance recovery) [19299.8 SAR] | 40,743.98 | Phase 1 | Phase 1 (Billing) | 1.1 | Preliminaries | N/A | Authority | General | Authorities & Permit | Studies & Approvals | N/A | N/A | Preliminaries | Time-related / lump | Float > 90 d | Design & approvals g | Authority dependency | General | No site crew | 2027-05 | 2027-08 | 2027-Q2 | Not TGA process | Baseline | Review / Approval |
| PR-0175 |  | NWC Water & Sewer Connection - Approval |  | 60d | 2027-05-13 | 2027-07-17 | PR-0170 | 476d | 0d |  | PERFORMANCE - Progress Value (SAR, planned earned value) [21444.2 SAR]; CASH FLOW - Invoiced Cash (SAR, net of advance recovery) [19299.8 SAR] | 40,743.98 | Phase 1 | Phase 1 (Billing) | 1.1 | Preliminaries | N/A | Authority | General | Authorities & Permit | Studies & Approvals | N/A | N/A | Preliminaries | Time-related / lump | Float > 90 d | Design & approvals g | Authority dependency | General | No site crew | 2027-05 | 2027-07 | 2027-Q2 | Not TGA process | Baseline | Review / Approval |
| PR-0185 |  | Telecom / Fibre Service Connection - Approval |  | 45d | 2027-05-13 | 2027-07-02 | PR-0180 | 491d | 0d |  | PERFORMANCE - Progress Value (SAR, planned earned value) [21444.2 SAR]; CASH FLOW - Invoiced Cash (SAR, net of advance recovery) [19299.8 SAR] | 40,743.98 | Phase 1 | Phase 1 (Billing) | 1.1 | Preliminaries | N/A | Authority | General | Authorities & Permit | Studies & Approvals | N/A | N/A | Preliminaries | Time-related / lump | Float > 90 d | Design & approvals g | Authority dependency | General | No site crew | 2027-05 | 2027-07 | 2027-Q2 | Not TGA process | Baseline | Review / Approval |
|  | 07 | **Project Management, Reporting and Demobilisation** |  |  | 2026-11-01 | 2028-12-31 |  |  |  |  |  |  |  |  |  |  |  |  |  |  |  |  |  |  |  |  |  |  |  |  |  |  |  |  |  |  |
| PR-0200 |  | Project Management, Monthly Progress Reporting & Controls (Level of Effort) | level of effort | 751d | 2026-11-01 | 2028-12-20 | MS-0010 SS, CO-0020 FF | 11d | 0d |  | PERFORMANCE - Progress Value (SAR, planned earned value) [1200875 SAR]; CASH FLOW - Invoiced Cash (SAR, net of advance recovery) [1080788 SAR] | 2,281,663.01 | Phase 1 | Phase 1 (Billing) | 1.1 | Preliminaries | N/A | Contractor | General | Management & General | N/A | N/A | N/A | Preliminaries | Time-related / lump | LOE / Cash | Other | None | General | No site crew | 2026-11 | 2028-12 | 2026-Q4 | Not TGA process | Baseline | Not applicable |
| PR-0210 |  | Demobilisation of Site Facilities & Final Site Clearance |  | 9d | 2028-12-21 | 2028-12-31 | CO-0020 | 0d |  | SAR-6D Construction (Fri off, public holidays off) | PERFORMANCE - Progress Value (SAR, planned earned value) [128665 SAR]; CASH FLOW - Invoiced Cash (SAR, net of advance recovery) [115799 SAR] | 244,463.9 | Phase 1 | Phase 1 (Billing) | 1.1 | Preliminaries | N/A | Contractor | General | Management & General | N/A | N/A | N/A | Preliminaries | Time-related / lump | Critical (0 d) | Longest path | None | General | No site crew | 2028-12 | 2028-12 | 2028-Q4 | Not TGA process | Baseline | Not applicable |
|  | 08 | **Pre-Design Management, Surveys and Studies** |  |  | 2026-12-01 | 2027-01-06 |  |  |  |  |  |  |  |  |  |  |  |  |  |  |  |  |  |  |  |  |  |  |  |  |  |  |  |  |  |  |
| PR-0220 |  | Topographic Survey & Existing Utilities Mapping |  | 17d | 2026-12-01 | 2026-12-17 | PR-0100 | 0d |  |  | PERFORMANCE - Progress Value (SAR, planned earned value) [107221 SAR]; CASH FLOW - Invoiced Cash (SAR, net of advance recovery) [96498.9 SAR]; Surveyor / Setting-out Crew [544 h]; General Labourer [544 h] | 203,719.92 | Phase 1 | Phase 1 (Billing) | 1.1 | Preliminaries | N/A | Contractor | General | Management & General | Studies & Approvals | N/A | N/A | Preliminaries | Time-related / lump | Critical (0 d) | Longest path | None | General | Small (<15) | 2026-12 | 2026-12 | 2026-Q4 | Not TGA process | Baseline | Not applicable |
| PR-0230 |  | Geotechnical Investigation, Boreholes & Soil Report |  | 35d | 2026-12-01 | 2027-01-04 | PR-0100 | 26d | 0d |  | PERFORMANCE - Progress Value (SAR, planned earned value) [171554 SAR]; CASH FLOW - Invoiced Cash (SAR, net of advance recovery) [154398 SAR]; Site Engineer / Supervisor [280 h]; General Labourer [1680 h]; Excavator [280 h] | 325,951.86 | Phase 1 | Phase 1 (Billing) | 1.1 | Preliminaries | N/A | Contractor | General | Management & General | Studies & Approvals | N/A | N/A | Preliminaries | Time-related / lump | Near-critical (1-30 d) | Other | None | General | Small (<15) | 2026-12 | 2027-01 | 2026-Q4 | Not TGA process | Baseline | Not applicable |
| PR-0240 |  | Existing Track Survey & As-Built Verification for Tie-in |  | 17d | 2026-12-01 | 2026-12-17 | PR-0100 | 44d | 0d |  | PERFORMANCE - Progress Value (SAR, planned earned value) [64332.6 SAR]; CASH FLOW - Invoiced Cash (SAR, net of advance recovery) [57899.3 SAR]; Surveyor / Setting-out Crew [544 h]; General Labourer [544 h] | 122,231.94 | Phase 1 | Phase 1 (Billing) | 1.1 | Preliminaries | N/A | Contractor | General | Management & General | Studies & Approvals | N/A | N/A | Preliminaries | Time-related / lump | Float 31-90 d | Other | None | General | Small (<15) | 2026-12 | 2026-12 | 2026-Q4 | Not TGA process | Baseline | Not applicable |
| PR-0250 |  | Hydrology & Stormwater Drainage Study |  | 20d | 2026-12-18 | 2027-01-06 | PR-0220 | 24d | 0d |  | PERFORMANCE - Progress Value (SAR, planned earned value) [42888.4 SAR]; CASH FLOW - Invoiced Cash (SAR, net of advance recovery) [38599.6 SAR] | 81,487.96 | Phase 1 | Phase 1 (Billing) | 1.1 | Preliminaries | N/A | Contractor | General | Management & General | Studies & Approvals | N/A | N/A | Preliminaries | Time-related / lump | Near-critical (1-30 d) | Other | None | General | No site crew | 2026-12 | 2027-01 | 2026-Q4 | Not TGA process | Baseline | Not applicable |
| PR-0260 |  | Utility Capacity & Load Studies (SEC / NWC / Telecom) |  | 20d | 2026-12-18 | 2027-01-06 | PR-0220 | 460d | 0d |  | PERFORMANCE - Progress Value (SAR, planned earned value) [42888.4 SAR]; CASH FLOW - Invoiced Cash (SAR, net of advance recovery) [38599.6 SAR] | 81,487.96 | Phase 1 | Phase 1 (Billing) | 1.1 | Preliminaries | N/A | Contractor | General | Management & General | Studies & Approvals | N/A | N/A | Preliminaries | Time-related / lump | Float > 90 d | Other | None | General | No site crew | 2026-12 | 2027-01 | 2026-Q4 | Not TGA process | Baseline | Not applicable |
|  | 03 | **Design Work** |  |  | 2026-12-01 | 2027-09-21 |  |  |  |  |  |  |  |  |  |  |  |  |  |  |  |  |  |  |  |  |  |  |  |  |  |  |  |  |  |  |
|  | 01 | **Concept Design** |  |  | 2026-12-01 | 2027-01-30 |  |  |  |  |  |  |  |  |  |  |  |  |  |  |  |  |  |  |  |  |  |  |  |  |  |  |  |  |  |  |
|  | 01 | **Concept - Stage Management and Gate** |  |  | 2026-12-01 | 2027-01-30 |  |  |  |  |  |  |  |  |  |  |  |  |  |  |  |  |  |  |  |  |  |  |  |  |  |  |  |  |  |  |
| DS-0010 |  | Concept Design - Design Management, Coordination & Review Meetings | level of effort | 61d | 2026-12-01 | 2027-01-30 | PR-0100, DS-0020 FF | 671d | 0d |  |  |  | Phase 1 | Phase 1 (Billing) | 2.1 | Design | N/A | Contractor | General | Design - Structure | N/A | N/A | N/A | No cost | None | LOE / Cash | Design & approvals g | None | General | No site crew | 2026-12 | 2027-01 | 2026-Q4 | Not TGA process | Baseline | Not applicable |
| DS-0020 |  | Gate 1 - Concept Design Approved by SAR | milestone | 1d | 2027-01-30 | 2027-01-30 | DS-2040, DS-2060, DS-2080, DS-2100, DS-2120, DS-2140, DS-2160, DS-2180, DS-2200, DS-2220, DS-2240, DS-2260, DS-2280, DS-2300, DS-2320, DS-2340, TG-2040, TG-0050, TG-0120 | 0d |  |  |  |  | Phase 1 | Phase 1 (Billing) | 2.1 | Design | N/A | Contractor | General | Design - Structure | N/A | N/A | Design Gate | No cost | None | Critical (0 d) | Longest path | None | General | No site crew | 2027-01 | 2027-01 | 2027-Q1 | Not TGA process | Baseline | Not applicable |

| ID | WBS | Activity | Duration | Start | Finish | Predecessors | Total float | Free float | Resources | Cost | Phase | Contract Phase | BOQ Ref | Stage | Lead Class | Responsibility | Package Group | Work Package | Discipline | Design Stage | Procurement Step | Milestone Type | Cost Component | Payment Basis | Path Class | Critical Driver | Risk Flag | Work Zone | Crew Size Class | Start Month | Finish Month | Start Quarter | TGA Process | Duration Basis | Submit / Review |
| --- | --- | --- | --- | --- | --- | --- | --- | --- | --- | --- | --- | --- | --- | --- | --- | --- | --- | --- | --- | --- | --- | --- | --- | --- | --- | --- | --- | --- | --- | --- | --- | --- | --- | --- | --- |
|  | 02 | **Main Building** |  | 2026-12-01 | 2027-01-26 |  |  |  |  |  |  |  |  |  |  |  |  |  |  |  |  |  |  |  |  |  |  |  |  |  |  |  |  |  |  |
|  | 01 | **Main Building (GEA 1,100 m², single storey)** |  | 2026-12-01 | 2027-01-26 |  |  |  |  |  |  |  |  |  |  |  |  |  |  |  |  |  |  |  |  |  |  |  |  |  |  |  |  |  |  |
| DS-0030 |  | Concept Design Development - Main Building | 40d | 2026-12-01 | 2027-01-09 | PR-0100 | 4d | 0d | PERFORMANCE - Progress Value (SAR, planned earned value) [19556 SAR]; CASH FLOW - Invoiced Cash (SAR, net of advance recovery) [17600.4 SAR]; Architect / Building Design Engineer [640 h]; Structural Engineer [640 h]; MEP Design Engineer [640 h]; CAD / BIM Technician [640 h] | 37,156.4 | Phase 1 | Phase 1 (Billing) | 3.1 | Design | N/A | Contractor | Main Building | 3.1 Main Building | Design - Architectur | Concept | N/A | N/A | Engineering & Design | On completion | Near-critical (1-30 d) | Design & approvals g | None | Station Building Zon | No site crew | 2026-12 | 2027-01 | 2026-Q4 | Not TGA process | Baseline | Preparation |
| DS-0040 |  | Concept Design Submission to SAR - Main Building | 3d | 2027-01-10 | 2027-01-12 | DS-0030 | 4d | 0d | PERFORMANCE - Progress Value (SAR, planned earned value) [862.76 SAR]; CASH FLOW - Invoiced Cash (SAR, net of advance recovery) [776.48 SAR]; Architect / Building Design Engineer [24 h]; Structural Engineer [24 h]; MEP Design Engineer [24 h]; CAD / BIM Technician [24 h] | 1,639.24 | Phase 1 | Phase 1 (Billing) | 3.1 | Design | N/A | Contractor | Main Building | 3.1 Main Building | Design - Architectur | Concept | N/A | N/A | Engineering & Design | On completion | Near-critical (1-30 d) | Design & approvals g | None | Station Building Zon | No site crew | 2027-01 | 2027-01 | 2027-Q1 | Not TGA process | Baseline | Submission |
| DS-2040 |  | Concept Design Review & Approval by SAR - Main Building | 14d | 2027-01-13 | 2027-01-26 | DS-0040 | 4d | 0d | PERFORMANCE - Progress Value (SAR, planned earned value) [4026.24 SAR]; CASH FLOW - Invoiced Cash (SAR, net of advance recovery) [3623.62 SAR] | 7,649.86 | Phase 1 | Phase 1 (Billing) | 3.1 | Design | N/A | SAR | Main Building | 3.1 Main Building | Design - Architectur | Concept | N/A | N/A | Engineering & Design | On completion | Near-critical (1-30 d) | Design & approvals g | SAR dependency | Station Building Zon | No site crew | 2027-01 | 2027-01 | 2027-Q1 | Not TGA process | Baseline | Review / Approval |
|  | 02 | **IT Equipment** |  | 2026-12-01 | 2027-01-20 |  |  |  |  |  |  |  |  |  |  |  |  |  |  |  |  |  |  |  |  |  |  |  |  |  |  |  |  |  |  |
| DS-0050 |  | Concept Design Development - IT Equipment | 34d | 2026-12-01 | 2027-01-03 | PR-0100 | 10d | 0d | PERFORMANCE - Progress Value (SAR, planned earned value) [3128.96 SAR]; CASH FLOW - Invoiced Cash (SAR, net of advance recovery) [2816.06 SAR]; MEP Design Engineer [544 h]; Signalling & Telecom Engineer [544 h]; CAD / BIM Technician [544 h] | 5,945.02 | Phase 1 | Phase 1 (Billing) | 3.2 | Design | N/A | Contractor | Main Building | 3.2 IT Equipment | Design - MEP | Concept | N/A | N/A | Engineering & Design | On completion | Near-critical (1-30 d) | Design & approvals g | None | Station Building Zon | No site crew | 2026-12 | 2027-01 | 2026-Q4 | Not TGA process | Baseline | Preparation |
| DS-0060 |  | Concept Design Submission to SAR - IT Equipment | 3d | 2027-01-04 | 2027-01-06 | DS-0050 | 10d | 0d | PERFORMANCE - Progress Value (SAR, planned earned value) [138.04 SAR]; CASH FLOW - Invoiced Cash (SAR, net of advance recovery) [124.24 SAR]; MEP Design Engineer [24 h]; Signalling & Telecom Engineer [24 h]; CAD / BIM Technician [24 h] | 262.28 | Phase 1 | Phase 1 (Billing) | 3.2 | Design | N/A | Contractor | Main Building | 3.2 IT Equipment | Design - MEP | Concept | N/A | N/A | Engineering & Design | On completion | Near-critical (1-30 d) | Design & approvals g | None | Station Building Zon | No site crew | 2027-01 | 2027-01 | 2027-Q1 | Not TGA process | Baseline | Submission |
| DS-2060 |  | Concept Design Review & Approval by SAR - IT Equipment | 14d | 2027-01-07 | 2027-01-20 | DS-0060 | 10d | 0d | PERFORMANCE - Progress Value (SAR, planned earned value) [644.2 SAR]; CASH FLOW - Invoiced Cash (SAR, net of advance recovery) [579.78 SAR] | 1,223.98 | Phase 1 | Phase 1 (Billing) | 3.2 | Design | N/A | SAR | Main Building | 3.2 IT Equipment | Design - MEP | Concept | N/A | N/A | Engineering & Design | On completion | Near-critical (1-30 d) | Design & approvals g | SAR dependency | Station Building Zon | No site crew | 2027-01 | 2027-01 | 2027-Q1 | Not TGA process | Baseline | Review / Approval |
|  | 03 | **Furniture Works (FF&E)** |  | 2026-12-01 | 2027-01-16 |  |  |  |  |  |  |  |  |  |  |  |  |  |  |  |  |  |  |  |  |  |  |  |  |  |  |  |  |  |  |
| DS-0070 |  | Concept Design Development - Furniture Works (FF&E) | 30d | 2026-12-01 | 2026-12-30 | PR-0100 | 14d | 0d | PERFORMANCE - Progress Value (SAR, planned earned value) [16427 SAR]; CASH FLOW - Invoiced Cash (SAR, net of advance recovery) [14784.3 SAR]; Architect / Building Design Engineer [480 h]; CAD / BIM Technician [480 h] | 31,211.38 | Phase 2 | Phase 2 (Billing) | 3.3 | Design | N/A | Contractor | Main Building | 3.3 FF&E | Design - Architectur | Concept | N/A | N/A | Engineering & Design | On completion | Near-critical (1-30 d) | Design & approvals g | None | Station Building Zon | No site crew | 2026-12 | 2026-12 | 2026-Q4 | Not TGA process | Baseline | Preparation |
| DS-0080 |  | Concept Design Submission to SAR - Furniture Works (FF&E) | 3d | 2026-12-31 | 2027-01-02 | DS-0070 | 14d | 0d | PERFORMANCE - Progress Value (SAR, planned earned value) [724.72 SAR]; CASH FLOW - Invoiced Cash (SAR, net of advance recovery) [652.25 SAR]; Architect / Building Design Engineer [24 h]; CAD / BIM Technician [24 h] | 1,376.97 | Phase 2 | Phase 2 (Billing) | 3.3 | Design | N/A | Contractor | Main Building | 3.3 FF&E | Design - Architectur | Concept | N/A | N/A | Engineering & Design | On completion | Near-critical (1-30 d) | Design & approvals g | None | Station Building Zon | No site crew | 2026-12 | 2027-01 | 2026-Q4 | Not TGA process | Baseline | Submission |
| DS-2080 |  | Concept Design Review & Approval by SAR - Furniture Works (FF&E) | 14d | 2027-01-03 | 2027-01-16 | DS-0080 | 14d | 0d | PERFORMANCE - Progress Value (SAR, planned earned value) [3382.04 SAR]; CASH FLOW - Invoiced Cash (SAR, net of advance recovery) [3043.84 SAR] | 6,425.88 | Phase 2 | Phase 2 (Billing) | 3.3 | Design | N/A | SAR | Main Building | 3.3 FF&E | Design - Architectur | Concept | N/A | N/A | Engineering & Design | On completion | Near-critical (1-30 d) | Design & approvals g | SAR dependency | Station Building Zon | No site crew | 2027-01 | 2027-01 | 2027-Q1 | Not TGA process | Baseline | Review / Approval |
|  | 03 | **Ancillary Buildings** |  | 2026-12-01 | 2027-01-30 |  |  |  |  |  |  |  |  |  |  |  |  |  |  |  |  |  |  |  |  |  |  |  |  |  |  |  |  |  |  |
|  | 01 | **Substation and SEC Works** |  | 2026-12-01 | 2027-01-26 |  |  |  |  |  |  |  |  |  |  |  |  |  |  |  |  |  |  |  |  |  |  |  |  |  |  |  |  |  |  |
| DS-0090 |  | Concept Design Development - Substation & SEC Works | 40d | 2026-12-01 | 2027-01-09 | PR-0100 | 4d | 0d | PERFORMANCE - Progress Value (SAR, planned earned value) [32071.8 SAR]; CASH FLOW - Invoiced Cash (SAR, net of advance recovery) [28864.7 SAR]; MEP Design Engineer [640 h]; Structural Engineer [640 h]; CAD / BIM Technician [640 h] | 60,936.5 | Phase 1 | Phase 1 (Billing) | 4.1 | Design | N/A | Contractor | Ancillary Buildings | 4.1 Substation & SEC | Design - MEP | Concept | N/A | N/A | Engineering & Design | On completion | Near-critical (1-30 d) | Design & approvals g | None | Substation & Utiliti | No site crew | 2026-12 | 2027-01 | 2026-Q4 | Not TGA process | Baseline | Preparation |
| DS-0100 |  | Concept Design Submission to SAR - Substation & SEC Works | 3d | 2027-01-10 | 2027-01-12 | DS-0090 | 4d | 0d | PERFORMANCE - Progress Value (SAR, planned earned value) [1414.93 SAR]; CASH FLOW - Invoiced Cash (SAR, net of advance recovery) [1273.44 SAR]; MEP Design Engineer [24 h]; Structural Engineer [24 h]; CAD / BIM Technician [24 h] | 2,688.37 | Phase 1 | Phase 1 (Billing) | 4.1 | Design | N/A | Contractor | Ancillary Buildings | 4.1 Substation & SEC | Design - MEP | Concept | N/A | N/A | Engineering & Design | On completion | Near-critical (1-30 d) | Design & approvals g | None | Substation & Utiliti | No site crew | 2027-01 | 2027-01 | 2027-Q1 | Not TGA process | Baseline | Submission |
| DS-2100 |  | Concept Design Review & Approval by SAR - Substation & SEC Works | 14d | 2027-01-13 | 2027-01-26 | DS-0100 | 4d | 0d | PERFORMANCE - Progress Value (SAR, planned earned value) [6603.03 SAR]; CASH FLOW - Invoiced Cash (SAR, net of advance recovery) [5942.73 SAR] | 12,545.76 | Phase 1 | Phase 1 (Billing) | 4.1 | Design | N/A | SAR | Ancillary Buildings | 4.1 Substation & SEC | Design - MEP | Concept | N/A | N/A | Engineering & Design | On completion | Near-critical (1-30 d) | Design & approvals g | SAR dependency | Substation & Utiliti | No site crew | 2027-01 | 2027-01 | 2027-Q1 | Not TGA process | Baseline | Review / Approval |
|  | 02 | **Firefighting Building (BOQ GEA 518 m²)** |  | 2026-12-01 | 2027-01-24 |  |  |  |  |  |  |  |  |  |  |  |  |  |  |  |  |  |  |  |  |  |  |  |  |  |  |  |  |  |  |
| DS-0110 |  | Concept Design Development - Firefighting Building | 38d | 2026-12-01 | 2027-01-07 | PR-0100 | 6d | 0d | PERFORMANCE - Progress Value (SAR, planned earned value) [13298.1 SAR]; CASH FLOW - Invoiced Cash (SAR, net of advance recovery) [11968.3 SAR]; Architect / Building Design Engineer [608 h]; Structural Engineer [608 h]; MEP Design Engineer [608 h]; CAD / BIM Technician [608 h] | 25,266.35 | Phase 1 | Phase 1 (Billing) | 4.2 | Design | N/A | Contractor | Ancillary Buildings | 4.2 Firefighting Bld | Design - Architectur | Concept | N/A | N/A | Engineering & Design | On completion | Near-critical (1-30 d) | Design & approvals g | None | Station Building Zon | No site crew | 2026-12 | 2027-01 | 2026-Q4 | Not TGA process | Baseline | Preparation |
| DS-0120 |  | Concept Design Submission to SAR - Firefighting Building | 3d | 2027-01-08 | 2027-01-10 | DS-0110 | 6d | 0d | PERFORMANCE - Progress Value (SAR, planned earned value) [586.68 SAR]; CASH FLOW - Invoiced Cash (SAR, net of advance recovery) [528.01 SAR]; Architect / Building Design Engineer [24 h]; Structural Engineer [24 h]; MEP Design Engineer [24 h]; CAD / BIM Technician [24 h] | 1,114.69 | Phase 1 | Phase 1 (Billing) | 4.2 | Design | N/A | Contractor | Ancillary Buildings | 4.2 Firefighting Bld | Design - Architectur | Concept | N/A | N/A | Engineering & Design | On completion | Near-critical (1-30 d) | Design & approvals g | None | Station Building Zon | No site crew | 2027-01 | 2027-01 | 2027-Q1 | Not TGA process | Baseline | Submission |
| DS-2120 |  | Concept Design Review & Approval by SAR - Firefighting Building | 14d | 2027-01-11 | 2027-01-24 | DS-0120 | 6d | 0d | PERFORMANCE - Progress Value (SAR, planned earned value) [2737.84 SAR]; CASH FLOW - Invoiced Cash (SAR, net of advance recovery) [2464.06 SAR] | 5,201.9 | Phase 1 | Phase 1 (Billing) | 4.2 | Design | N/A | SAR | Ancillary Buildings | 4.2 Firefighting Bld | Design - Architectur | Concept | N/A | N/A | Engineering & Design | On completion | Near-critical (1-30 d) | Design & approvals g | SAR dependency | Station Building Zon | No site crew | 2027-01 | 2027-01 | 2027-Q1 | Not TGA process | Baseline | Review / Approval |
|  | 03 | **Generator Room (BOQ 62 m²)** |  | 2026-12-01 | 2027-01-18 |  |  |  |  |  |  |  |  |  |  |  |  |  |  |  |  |  |  |  |  |  |  |  |  |  |  |  |  |  |  |
| DS-0130 |  | Concept Design Development - Generator Room | 32d | 2026-12-01 | 2027-01-01 | PR-0100 | 12d | 0d | PERFORMANCE - Progress Value (SAR, planned earned value) [8604.64 SAR]; CASH FLOW - Invoiced Cash (SAR, net of advance recovery) [7744.18 SAR]; MEP Design Engineer [512 h]; Structural Engineer [512 h]; CAD / BIM Technician [512 h] | 16,348.82 | Phase 2 | Phase 2 (Billing) | 4.3 | Design | N/A | Contractor | Ancillary Buildings | 4.3 Generator Room | Design - MEP | Concept | N/A | N/A | Engineering & Design | On completion | Near-critical (1-30 d) | Design & approvals g | None | Substation & Utiliti | No site crew | 2026-12 | 2027-01 | 2026-Q4 | Not TGA process | Baseline | Preparation |
| DS-0140 |  | Concept Design Submission to SAR - Generator Room | 3d | 2027-01-02 | 2027-01-04 | DS-0130 | 12d | 0d | PERFORMANCE - Progress Value (SAR, planned earned value) [379.62 SAR]; CASH FLOW - Invoiced Cash (SAR, net of advance recovery) [341.66 SAR]; MEP Design Engineer [24 h]; Structural Engineer [24 h]; CAD / BIM Technician [24 h] | 721.28 | Phase 2 | Phase 2 (Billing) | 4.3 | Design | N/A | Contractor | Ancillary Buildings | 4.3 Generator Room | Design - MEP | Concept | N/A | N/A | Engineering & Design | On completion | Near-critical (1-30 d) | Design & approvals g | None | Substation & Utiliti | No site crew | 2027-01 | 2027-01 | 2027-Q1 | Not TGA process | Baseline | Submission |
| DS-2140 |  | Concept Design Review & Approval by SAR - Generator Room | 14d | 2027-01-05 | 2027-01-18 | DS-0140 | 12d | 0d | PERFORMANCE - Progress Value (SAR, planned earned value) [1771.54 SAR]; CASH FLOW - Invoiced Cash (SAR, net of advance recovery) [1594.39 SAR] | 3,365.93 | Phase 2 | Phase 2 (Billing) | 4.3 | Design | N/A | SAR | Ancillary Buildings | 4.3 Generator Room | Design - MEP | Concept | N/A | N/A | Engineering & Design | On completion | Near-critical (1-30 d) | Design & approvals g | SAR dependency | Substation & Utiliti | No site crew | 2027-01 | 2027-01 | 2027-Q1 | Not TGA process | Baseline | Review / Approval |

| ID | WBS | Activity | Duration | Start | Finish | Predecessors | Total float | Free float | Resources | Cost | Phase | Contract Phase | BOQ Ref | Stage | Lead Class | Responsibility | Package Group | Work Package | Discipline | Design Stage | Procurement Step | Milestone Type | Cost Component | Payment Basis | Path Class | Critical Driver | Risk Flag | Work Zone | Crew Size Class | Start Month | Finish Month | Start Quarter | TGA Process | Duration Basis | Submit / Review |
| --- | --- | --- | --- | --- | --- | --- | --- | --- | --- | --- | --- | --- | --- | --- | --- | --- | --- | --- | --- | --- | --- | --- | --- | --- | --- | --- | --- | --- | --- | --- | --- | --- | --- | --- | --- |
|  | 04 | **Underground Water Tank** |  | 2026-12-15 | 2027-01-30 |  |  |  |  |  |  |  |  |  |  |  |  |  |  |  |  |  |  |  |  |  |  |  |  |  |  |  |  |  |  |
| DS-0150 |  | Concept Design Development - Underground Water Tank | 30d | 2026-12-15 | 2027-01-13 | PR-0100, PR-0220 SS+14d | 0d |  | PERFORMANCE - Progress Value (SAR, planned earned value) [20338.2 SAR]; CASH FLOW - Invoiced Cash (SAR, net of advance recovery) [18304.4 SAR]; Structural Engineer [480 h]; MEP Design Engineer [480 h]; CAD / BIM Technician [480 h] | 38,642.66 | Phase 1 | Phase 1 (Billing) | 4.4 | Design | N/A | Contractor | Ancillary Buildings | 4.4 UG Water Tank | Design - Structure | Concept | N/A | N/A | Engineering & Design | On completion | Critical (0 d) | Longest path | None | Substation & Utiliti | No site crew | 2026-12 | 2027-01 | 2026-Q4 | Not TGA process | Baseline | Preparation |
| DS-0160 |  | Concept Design Submission to SAR - Underground Water Tank | 3d | 2027-01-14 | 2027-01-16 | DS-0150 | 0d |  | PERFORMANCE - Progress Value (SAR, planned earned value) [897.28 SAR]; CASH FLOW - Invoiced Cash (SAR, net of advance recovery) [807.55 SAR]; Structural Engineer [24 h]; MEP Design Engineer [24 h]; CAD / BIM Technician [24 h] | 1,704.83 | Phase 1 | Phase 1 (Billing) | 4.4 | Design | N/A | Contractor | Ancillary Buildings | 4.4 UG Water Tank | Design - Structure | Concept | N/A | N/A | Engineering & Design | On completion | Critical (0 d) | Longest path | None | Substation & Utiliti | No site crew | 2027-01 | 2027-01 | 2027-Q1 | Not TGA process | Baseline | Submission |
| DS-2160 |  | Concept Design Review & Approval by SAR - Underground Water Tank | 14d | 2027-01-17 | 2027-01-30 | DS-0160 | 0d |  | PERFORMANCE - Progress Value (SAR, planned earned value) [4187.28 SAR]; CASH FLOW - Invoiced Cash (SAR, net of advance recovery) [3768.55 SAR] | 7,955.83 | Phase 1 | Phase 1 (Billing) | 4.4 | Design | N/A | SAR | Ancillary Buildings | 4.4 UG Water Tank | Design - Structure | Concept | N/A | N/A | Engineering & Design | On completion | Critical (0 d) | Longest path | SAR dependency | Substation & Utiliti | No site crew | 2027-01 | 2027-01 | 2027-Q1 | Not TGA process | Baseline | Review / Approval |
|  | 04 | **External Works** |  | 2026-12-15 | 2027-01-30 |  |  |  |  |  |  |  |  |  |  |  |  |  |  |  |  |  |  |  |  |  |  |  |  |  |  |  |  |  |  |
|  | 01 | **Site Works and Underground Utilities** |  | 2026-12-15 | 2027-01-30 |  |  |  |  |  |  |  |  |  |  |  |  |  |  |  |  |  |  |  |  |  |  |  |  |  |  |  |  |  |  |
| DS-0170 |  | Concept Design Development - Site Works & Underground Utilities | 30d | 2026-12-15 | 2027-01-13 | PR-0100, PR-0220 SS+14d | 0d |  | PERFORMANCE - Progress Value (SAR, planned earned value) [94651 SAR]; CASH FLOW - Invoiced Cash (SAR, net of advance recovery) [85185.9 SAR]; Civil / Roads / Drainage Engineer [720 h]; MEP Design Engineer [720 h]; CAD / BIM Technician [480 h] | 179,836.98 | Phase 1 | Phase 1 (Billing) | 5.1 | Design | N/A | Contractor | External Works | 5.1 Site Works & Uti | Design - Civil & Roa | Concept | N/A | N/A | Engineering & Design | On completion | Critical (0 d) | Design & approvals g | None | Substation & Utiliti | No site crew | 2026-12 | 2027-01 | 2026-Q4 | Not TGA process | Baseline | Preparation |
| DS-0180 |  | Concept Design Submission to SAR - Site Works & Underground Utilities | 3d | 2027-01-14 | 2027-01-16 | DS-0170 | 0d |  | PERFORMANCE - Progress Value (SAR, planned earned value) [4175.78 SAR]; CASH FLOW - Invoiced Cash (SAR, net of advance recovery) [3758.2 SAR]; Civil / Roads / Drainage Engineer [48 h]; MEP Design Engineer [48 h]; CAD / BIM Technician [24 h] | 7,933.98 | Phase 1 | Phase 1 (Billing) | 5.1 | Design | N/A | Contractor | External Works | 5.1 Site Works & Uti | Design - Civil & Roa | Concept | N/A | N/A | Engineering & Design | On completion | Critical (0 d) | Design & approvals g | None | Substation & Utiliti | No site crew | 2027-01 | 2027-01 | 2027-Q1 | Not TGA process | Baseline | Submission |
| DS-2180 |  | Concept Design Review & Approval by SAR - Site Works & Underground Utilities | 14d | 2027-01-17 | 2027-01-30 | DS-0180 | 0d |  | PERFORMANCE - Progress Value (SAR, planned earned value) [19487 SAR]; CASH FLOW - Invoiced Cash (SAR, net of advance recovery) [17538.3 SAR] | 37,025.26 | Phase 1 | Phase 1 (Billing) | 5.1 | Design | N/A | SAR | External Works | 5.1 Site Works & Uti | Design - Civil & Roa | Concept | N/A | N/A | Engineering & Design | On completion | Critical (0 d) | Design & approvals g | SAR dependency | Substation & Utiliti | No site crew | 2027-01 | 2027-01 | 2027-Q1 | Not TGA process | Baseline | Review / Approval |
|  | 02 | **Car Parking Sheds (BOQ 1,375 m²)** |  | 2026-12-15 | 2027-01-30 |  |  |  |  |  |  |  |  |  |  |  |  |  |  |  |  |  |  |  |  |  |  |  |  |  |  |  |  |  |  |
| DS-0190 |  | Concept Design Development - Car Parking Sheds | 30d | 2026-12-15 | 2027-01-13 | PR-0100, PR-0220 SS+14d | 0d |  | PERFORMANCE - Progress Value (SAR, planned earned value) [7040.16 SAR]; CASH FLOW - Invoiced Cash (SAR, net of advance recovery) [6336.14 SAR]; Structural Engineer [480 h]; Architect / Building Design Engineer [480 h]; CAD / BIM Technician [480 h] | 13,376.3 | Phase 1 | Phase 1 (Billing) | 5.2 | Design | N/A | Contractor | External Works | 5.2 Car Parking Shed | Design - Civil & Roa | Concept | N/A | N/A | Engineering & Design | On completion | Critical (0 d) | Design & approvals g | None | Site & External Zone | No site crew | 2026-12 | 2027-01 | 2026-Q4 | Not TGA process | Baseline | Preparation |
| DS-0200 |  | Concept Design Submission to SAR - Car Parking Sheds | 3d | 2027-01-14 | 2027-01-16 | DS-0190 | 0d |  | PERFORMANCE - Progress Value (SAR, planned earned value) [310.6 SAR]; CASH FLOW - Invoiced Cash (SAR, net of advance recovery) [279.54 SAR]; Structural Engineer [24 h]; Architect / Building Design Engineer [24 h]; CAD / BIM Technician [24 h] | 590.14 | Phase 1 | Phase 1 (Billing) | 5.2 | Design | N/A | Contractor | External Works | 5.2 Car Parking Shed | Design - Civil & Roa | Concept | N/A | N/A | Engineering & Design | On completion | Critical (0 d) | Design & approvals g | None | Site & External Zone | No site crew | 2027-01 | 2027-01 | 2027-Q1 | Not TGA process | Baseline | Submission |
| DS-2200 |  | Concept Design Review & Approval by SAR - Car Parking Sheds | 14d | 2027-01-17 | 2027-01-30 | DS-0200 | 0d |  | PERFORMANCE - Progress Value (SAR, planned earned value) [1449.44 SAR]; CASH FLOW - Invoiced Cash (SAR, net of advance recovery) [1304.5 SAR] | 2,753.94 | Phase 1 | Phase 1 (Billing) | 5.2 | Design | N/A | SAR | External Works | 5.2 Car Parking Shed | Design - Civil & Roa | Concept | N/A | N/A | Engineering & Design | On completion | Critical (0 d) | Design & approvals g | SAR dependency | Site & External Zone | No site crew | 2027-01 | 2027-01 | 2027-Q1 | Not TGA process | Baseline | Review / Approval |
|  | 03 | **Fence Works (BOQ 500 m)** |  | 2026-12-15 | 2027-01-24 |  |  |  |  |  |  |  |  |  |  |  |  |  |  |  |  |  |  |  |  |  |  |  |  |  |  |  |  |  |  |
| DS-0210 |  | Concept Design Development - Fence Works | 24d | 2026-12-15 | 2027-01-07 | PR-0100, PR-0220 SS+14d | 6d | 0d | PERFORMANCE - Progress Value (SAR, planned earned value) [1564.48 SAR]; CASH FLOW - Invoiced Cash (SAR, net of advance recovery) [1408.03 SAR]; Civil / Roads / Drainage Engineer [384 h]; CAD / BIM Technician [384 h] | 2,972.51 | Phase 1 | Phase 1 (Billing) | 5.3 | Design | N/A | Contractor | External Works | 5.3 Fence Works | Design - Civil & Roa | Concept | N/A | N/A | Engineering & Design | On completion | Near-critical (1-30 d) | Design & approvals g | None | Site & External Zone | No site crew | 2026-12 | 2027-01 | 2026-Q4 | Not TGA process | Baseline | Preparation |
| DS-0220 |  | Concept Design Submission to SAR - Fence Works | 3d | 2027-01-08 | 2027-01-10 | DS-0210 | 6d | 0d | PERFORMANCE - Progress Value (SAR, planned earned value) [69.02 SAR]; CASH FLOW - Invoiced Cash (SAR, net of advance recovery) [62.12 SAR]; Civil / Roads / Drainage Engineer [24 h]; CAD / BIM Technician [24 h] | 131.14 | Phase 1 | Phase 1 (Billing) | 5.3 | Design | N/A | Contractor | External Works | 5.3 Fence Works | Design - Civil & Roa | Concept | N/A | N/A | Engineering & Design | On completion | Near-critical (1-30 d) | Design & approvals g | None | Site & External Zone | No site crew | 2027-01 | 2027-01 | 2027-Q1 | Not TGA process | Baseline | Submission |
| DS-2220 |  | Concept Design Review & Approval by SAR - Fence Works | 14d | 2027-01-11 | 2027-01-24 | DS-0220 | 6d | 0d | PERFORMANCE - Progress Value (SAR, planned earned value) [322.1 SAR]; CASH FLOW - Invoiced Cash (SAR, net of advance recovery) [289.89 SAR] | 611.99 | Phase 1 | Phase 1 (Billing) | 5.3 | Design | N/A | SAR | External Works | 5.3 Fence Works | Design - Civil & Roa | Concept | N/A | N/A | Engineering & Design | On completion | Near-critical (1-30 d) | Design & approvals g | SAR dependency | Site & External Zone | No site crew | 2027-01 | 2027-01 | 2027-Q1 | Not TGA process | Baseline | Review / Approval |
|  | 04 | **Automatic Gate System (BOQ 2 no)** |  | 2026-12-15 | 2027-01-24 |  |  |  |  |  |  |  |  |  |  |  |  |  |  |  |  |  |  |  |  |  |  |  |  |  |  |  |  |  |  |
| DS-0230 |  | Concept Design Development - Automatic Gate System | 24d | 2026-12-15 | 2027-01-07 | PR-0100, PR-0220 SS+14d | 6d | 0d | PERFORMANCE - Progress Value (SAR, planned earned value) [2346.72 SAR]; CASH FLOW - Invoiced Cash (SAR, net of advance recovery) [2112.05 SAR]; MEP Design Engineer [384 h]; CAD / BIM Technician [384 h] | 4,458.77 | Phase 1 | Phase 1 (Billing) | 5.4 | Design | N/A | Contractor | External Works | 5.4 Automatic Gate | Design - MEP | Concept | N/A | N/A | Engineering & Design | On completion | Near-critical (1-30 d) | Design & approvals g | None | Site & External Zone | No site crew | 2026-12 | 2027-01 | 2026-Q4 | Not TGA process | Baseline | Preparation |
| DS-0240 |  | Concept Design Submission to SAR - Automatic Gate System | 3d | 2027-01-08 | 2027-01-10 | DS-0230 | 6d | 0d | PERFORMANCE - Progress Value (SAR, planned earned value) [103.53 SAR]; CASH FLOW - Invoiced Cash (SAR, net of advance recovery) [93.18 SAR]; MEP Design Engineer [24 h]; CAD / BIM Technician [24 h] | 196.71 | Phase 1 | Phase 1 (Billing) | 5.4 | Design | N/A | Contractor | External Works | 5.4 Automatic Gate | Design - MEP | Concept | N/A | N/A | Engineering & Design | On completion | Near-critical (1-30 d) | Design & approvals g | None | Site & External Zone | No site crew | 2027-01 | 2027-01 | 2027-Q1 | Not TGA process | Baseline | Submission |
| DS-2240 |  | Concept Design Review & Approval by SAR - Automatic Gate System | 14d | 2027-01-11 | 2027-01-24 | DS-0240 | 6d | 0d | PERFORMANCE - Progress Value (SAR, planned earned value) [483.15 SAR]; CASH FLOW - Invoiced Cash (SAR, net of advance recovery) [434.83 SAR] | 917.98 | Phase 1 | Phase 1 (Billing) | 5.4 | Design | N/A | SAR | External Works | 5.4 Automatic Gate | Design - MEP | Concept | N/A | N/A | Engineering & Design | On completion | Near-critical (1-30 d) | Design & approvals g | SAR dependency | Site & External Zone | No site crew | 2027-01 | 2027-01 | 2027-Q1 | Not TGA process | Baseline | Review / Approval |
|  | 05 | **Road Works** |  | 2026-12-15 | 2027-01-30 |  |  |  |  |  |  |  |  |  |  |  |  |  |  |  |  |  |  |  |  |  |  |  |  |  |  |  |  |  |  |
|  | 01 | **Access Road (BOQ ~1,700 m dual carriageway)** |  | 2026-12-15 | 2027-01-30 |  |  |  |  |  |  |  |  |  |  |  |  |  |  |  |  |  |  |  |  |  |  |  |  |  |  |  |  |  |  |
| DS-0250 |  | Concept Design Development - Access Road | 30d | 2026-12-15 | 2027-01-13 | PR-0100, PR-0220 SS+14d | 0d |  | PERFORMANCE - Progress Value (SAR, planned earned value) [88393.1 SAR]; CASH FLOW - Invoiced Cash (SAR, net of advance recovery) [79553.8 SAR]; Civil / Roads / Drainage Engineer [720 h]; CAD / BIM Technician [480 h] | 167,946.93 | Phase 2 | Phase 2 (Billing) | 6.1 | Design | N/A | Contractor | Road Works | 6.1 Access Road | Design - Civil & Roa | Concept | N/A | N/A | Engineering & Design | On completion | Critical (0 d) | Design & approvals g | None | Road Zone | No site crew | 2026-12 | 2027-01 | 2026-Q4 | Not TGA process | Baseline | Preparation |
| DS-0260 |  | Concept Design Submission to SAR - Access Road | 3d | 2027-01-14 | 2027-01-16 | DS-0250 | 0d |  | PERFORMANCE - Progress Value (SAR, planned earned value) [3899.7 SAR]; CASH FLOW - Invoiced Cash (SAR, net of advance recovery) [3509.73 SAR]; Civil / Roads / Drainage Engineer [48 h]; CAD / BIM Technician [24 h] | 7,409.43 | Phase 2 | Phase 2 (Billing) | 6.1 | Design | N/A | Contractor | Road Works | 6.1 Access Road | Design - Civil & Roa | Concept | N/A | N/A | Engineering & Design | On completion | Critical (0 d) | Design & approvals g | None | Road Zone | No site crew | 2027-01 | 2027-01 | 2027-Q1 | Not TGA process | Baseline | Submission |
| DS-2260 |  | Concept Design Review & Approval by SAR - Access Road | 14d | 2027-01-17 | 2027-01-30 | DS-0260 | 0d |  | PERFORMANCE - Progress Value (SAR, planned earned value) [18198.6 SAR]; CASH FLOW - Invoiced Cash (SAR, net of advance recovery) [16378.7 SAR] | 34,577.3 | Phase 2 | Phase 2 (Billing) | 6.1 | Design | N/A | SAR | Road Works | 6.1 Access Road | Design - Civil & Roa | Concept | N/A | N/A | Engineering & Design | On completion | Critical (0 d) | Design & approvals g | SAR dependency | Road Zone | No site crew | 2027-01 | 2027-01 | 2027-Q1 | Not TGA process | Baseline | Review / Approval |

| ID | WBS | Activity | Type | Duration | Start | Finish | Predecessors | Total float | Free float | Resources | Cost | Phase | Contract Phase | BOQ Ref | Stage | Lead Class | Responsibility | Package Group | Work Package | Discipline | Design Stage | Procurement Step | Milestone Type | Cost Component | Payment Basis | Path Class | Critical Driver | Risk Flag | Work Zone | Crew Size Class | Start Month | Finish Month | Start Quarter | TGA Process | Duration Basis | Submit / Review |
| --- | --- | --- | --- | --- | --- | --- | --- | --- | --- | --- | --- | --- | --- | --- | --- | --- | --- | --- | --- | --- | --- | --- | --- | --- | --- | --- | --- | --- | --- | --- | --- | --- | --- | --- | --- | --- |
|  | 02 | **External Works (All works above ground)** |  |  | 2026-12-15 | 2027-01-30 |  |  |  |  |  |  |  |  |  |  |  |  |  |  |  |  |  |  |  |  |  |  |  |  |  |  |  |  |  |  |
| DS-0270 |  | Concept Design Development - External Works (Above Ground) |  | 30d | 2026-12-15 | 2027-01-13 | PR-0100, PR-0220 SS+14d | 0d |  | PERFORMANCE - Progress Value (SAR, planned earned value) [78224 SAR]; CASH FLOW - Invoiced Cash (SAR, net of advance recovery) [70401.6 SAR]; Civil / Roads / Drainage Engineer [720 h]; MEP Design Engineer [720 h]; CAD / BIM Technician [480 h] | 148,625.6 | Phase 1 | Phase 1 (Billing) | 6.3 | Design | N/A | Contractor | Road Works | 6.3 External Works | Design - Civil & Roa | Concept | N/A | N/A | Engineering & Design | On completion | Critical (0 d) | Design & approvals g | None | Site & External Zone | No site crew | 2026-12 | 2027-01 | 2026-Q4 | Not TGA process | Baseline | Preparation |
| DS-0280 |  | Concept Design Submission to SAR - External Works (Above Ground) |  | 3d | 2027-01-14 | 2027-01-16 | DS-0270 | 0d |  | PERFORMANCE - Progress Value (SAR, planned earned value) [3451.06 SAR]; CASH FLOW - Invoiced Cash (SAR, net of advance recovery) [3105.95 SAR]; Civil / Roads / Drainage Engineer [48 h]; MEP Design Engineer [48 h]; CAD / BIM Technician [24 h] | 6,557.01 | Phase 1 | Phase 1 (Billing) | 6.3 | Design | N/A | Contractor | Road Works | 6.3 External Works | Design - Civil & Roa | Concept | N/A | N/A | Engineering & Design | On completion | Critical (0 d) | Design & approvals g | None | Site & External Zone | No site crew | 2027-01 | 2027-01 | 2027-Q1 | Not TGA process | Baseline | Submission |
| DS-2280 |  | Concept Design Review & Approval by SAR - External Works (Above Ground) |  | 14d | 2027-01-17 | 2027-01-30 | DS-0280 | 0d |  | PERFORMANCE - Progress Value (SAR, planned earned value) [16104.9 SAR]; CASH FLOW - Invoiced Cash (SAR, net of advance recovery) [14494.5 SAR] | 30,599.39 | Phase 1 | Phase 1 (Billing) | 6.3 | Design | N/A | SAR | Road Works | 6.3 External Works | Design - Civil & Roa | Concept | N/A | N/A | Engineering & Design | On completion | Critical (0 d) | Design & approvals g | SAR dependency | Site & External Zone | No site crew | 2027-01 | 2027-01 | 2027-Q1 | Not TGA process | Baseline | Review / Approval |
|  | 06 | **Railway Systems** |  |  | 2026-12-15 | 2027-01-30 |  |  |  |  |  |  |  |  |  |  |  |  |  |  |  |  |  |  |  |  |  |  |  |  |  |  |  |  |  |  |
|  | 01 | **Signalling and Telecommunication** |  |  | 2026-12-15 | 2027-01-30 |  |  |  |  |  |  |  |  |  |  |  |  |  |  |  |  |  |  |  |  |  |  |  |  |  |  |  |  |  |  |
| DS-0290 |  | Concept Design Development - Signalling & Telecommunication |  | 30d | 2026-12-15 | 2027-01-13 | PR-0100, PR-0220 SS+14d | 0d |  | PERFORMANCE - Progress Value (SAR, planned earned value) [129070 SAR]; CASH FLOW - Invoiced Cash (SAR, net of advance recovery) [116163 SAR]; Signalling & Telecom Engineer [720 h]; Railway Track & Systems Engineer [720 h]; CAD / BIM Technician [480 h] | 245,232.24 | Phase 1 | Phase 1 (Billing) | 6.2 | Design | N/A | Contractor | Railway Systems | 6.2 Signalling & Tel | Design - Railway & S | Concept | N/A | N/A | Engineering & Design | On completion | Critical (0 d) | Design & approvals g | None | Track Zone | No site crew | 2026-12 | 2027-01 | 2026-Q4 | Not TGA process | Baseline | Preparation |
| DS-0300 |  | Concept Design Submission to SAR - Signalling & Telecommunication |  | 3d | 2027-01-14 | 2027-01-16 | DS-0290 | 0d |  | PERFORMANCE - Progress Value (SAR, planned earned value) [5694.25 SAR]; CASH FLOW - Invoiced Cash (SAR, net of advance recovery) [5124.82 SAR]; Signalling & Telecom Engineer [48 h]; Railway Track & Systems Engineer [48 h]; CAD / BIM Technician [24 h] | 10,819.07 | Phase 1 | Phase 1 (Billing) | 6.2 | Design | N/A | Contractor | Railway Systems | 6.2 Signalling & Tel | Design - Railway & S | Concept | N/A | N/A | Engineering & Design | On completion | Critical (0 d) | Design & approvals g | None | Track Zone | No site crew | 2027-01 | 2027-01 | 2027-Q1 | Not TGA process | Baseline | Submission |
| DS-2300 |  | Concept Design Review & Approval by SAR - Signalling & Telecommunication |  | 14d | 2027-01-17 | 2027-01-30 | DS-0300 | 0d |  | PERFORMANCE - Progress Value (SAR, planned earned value) [26573.2 SAR]; CASH FLOW - Invoiced Cash (SAR, net of advance recovery) [23915.8 SAR] | 50,488.99 | Phase 1 | Phase 1 (Billing) | 6.2 | Design | N/A | SAR | Railway Systems | 6.2 Signalling & Tel | Design - Railway & S | Concept | N/A | N/A | Engineering & Design | On completion | Critical (0 d) | Design & approvals g | SAR dependency | Track Zone | No site crew | 2027-01 | 2027-01 | 2027-Q1 | Not TGA process | Baseline | Review / Approval |
|  | 02 | **Railway Track Works (BOQ 2,500 m loop line)** |  |  | 2026-12-15 | 2027-01-30 |  |  |  |  |  |  |  |  |  |  |  |  |  |  |  |  |  |  |  |  |  |  |  |  |  |  |  |  |  |  |
| DS-0310 |  | Concept Design Development - Railway Track Works |  | 30d | 2026-12-15 | 2027-01-13 | PR-0100, PR-0220 SS+14d | 0d |  | PERFORMANCE - Progress Value (SAR, planned earned value) [189302 SAR]; CASH FLOW - Invoiced Cash (SAR, net of advance recovery) [170372 SAR]; Railway Track & Systems Engineer [720 h]; Civil / Roads / Drainage Engineer [720 h]; CAD / BIM Technician [480 h] | 359,673.95 | Phase 2 | Phase 2 (Billing) | 7.2 | Design | N/A | Contractor | Railway Systems | 7.2 Railway Track | Design - Railway & S | Concept | N/A | N/A | Engineering & Design | On completion | Critical (0 d) | Design & approvals g | None | Track Zone | No site crew | 2026-12 | 2027-01 | 2026-Q4 | Not TGA process | Baseline | Preparation |
| DS-0320 |  | Concept Design Submission to SAR - Railway Track Works |  | 3d | 2027-01-14 | 2027-01-16 | DS-0310 | 0d |  | PERFORMANCE - Progress Value (SAR, planned earned value) [8351.56 SAR]; CASH FLOW - Invoiced Cash (SAR, net of advance recovery) [7516.4 SAR]; Railway Track & Systems Engineer [48 h]; Civil / Roads / Drainage Engineer [48 h]; CAD / BIM Technician [24 h] | 15,867.96 | Phase 2 | Phase 2 (Billing) | 7.2 | Design | N/A | Contractor | Railway Systems | 7.2 Railway Track | Design - Railway & S | Concept | N/A | N/A | Engineering & Design | On completion | Critical (0 d) | Design & approvals g | None | Track Zone | No site crew | 2027-01 | 2027-01 | 2027-Q1 | Not TGA process | Baseline | Submission |
| DS-2320 |  | Concept Design Review & Approval by SAR - Railway Track Works |  | 14d | 2027-01-17 | 2027-01-30 | DS-0320 | 0d |  | PERFORMANCE - Progress Value (SAR, planned earned value) [38974 SAR]; CASH FLOW - Invoiced Cash (SAR, net of advance recovery) [35076.6 SAR] | 74,050.52 | Phase 2 | Phase 2 (Billing) | 7.2 | Design | N/A | SAR | Railway Systems | 7.2 Railway Track | Design - Railway & S | Concept | N/A | N/A | Engineering & Design | On completion | Critical (0 d) | Design & approvals g | SAR dependency | Track Zone | No site crew | 2027-01 | 2027-01 | 2027-Q1 | Not TGA process | Baseline | Review / Approval |
|  | 03 | **Railway Turnout Works** |  |  | 2026-12-15 | 2027-01-30 |  |  |  |  |  |  |  |  |  |  |  |  |  |  |  |  |  |  |  |  |  |  |  |  |  |  |  |  |  |  |
| DS-0330 |  | Concept Design Development - Railway Turnout Works |  | 30d | 2026-12-15 | 2027-01-13 | PR-0100, PR-0220 SS+14d | 0d |  | PERFORMANCE - Progress Value (SAR, planned earned value) [78224 SAR]; CASH FLOW - Invoiced Cash (SAR, net of advance recovery) [70401.6 SAR]; Railway Track & Systems Engineer [720 h]; CAD / BIM Technician [480 h] | 148,625.6 | Phase 1 | Phase 1 (Billing) | 7.3 | Design | N/A | Contractor | Railway Systems | 7.3 Railway Turnouts | Design - Railway & S | Concept | N/A | N/A | Engineering & Design | On completion | Critical (0 d) | Design & approvals g | None | Track Zone | No site crew | 2026-12 | 2027-01 | 2026-Q4 | Not TGA process | Baseline | Preparation |
| DS-0340 |  | Concept Design Submission to SAR - Railway Turnout Works |  | 3d | 2027-01-14 | 2027-01-16 | DS-0330 | 0d |  | PERFORMANCE - Progress Value (SAR, planned earned value) [3451.06 SAR]; CASH FLOW - Invoiced Cash (SAR, net of advance recovery) [3105.95 SAR]; Railway Track & Systems Engineer [48 h]; CAD / BIM Technician [24 h] | 6,557.01 | Phase 1 | Phase 1 (Billing) | 7.3 | Design | N/A | Contractor | Railway Systems | 7.3 Railway Turnouts | Design - Railway & S | Concept | N/A | N/A | Engineering & Design | On completion | Critical (0 d) | Design & approvals g | None | Track Zone | No site crew | 2027-01 | 2027-01 | 2027-Q1 | Not TGA process | Baseline | Submission |
| DS-2340 |  | Concept Design Review & Approval by SAR - Railway Turnout Works |  | 14d | 2027-01-17 | 2027-01-30 | DS-0340 | 0d |  | PERFORMANCE - Progress Value (SAR, planned earned value) [16104.9 SAR]; CASH FLOW - Invoiced Cash (SAR, net of advance recovery) [14494.5 SAR] | 30,599.39 | Phase 1 | Phase 1 (Billing) | 7.3 | Design | N/A | SAR | Railway Systems | 7.3 Railway Turnouts | Design - Railway & S | Concept | N/A | N/A | Engineering & Design | On completion | Critical (0 d) | Design & approvals g | SAR dependency | Track Zone | No site crew | 2027-01 | 2027-01 | 2027-Q1 | Not TGA process | Baseline | Review / Approval |
|  | 02 | **Preliminary Design** |  |  | 2027-01-31 | 2027-04-28 |  |  |  |  |  |  |  |  |  |  |  |  |  |  |  |  |  |  |  |  |  |  |  |  |  |  |  |  |  |  |
|  | 01 | **Preliminary - Stage Management and Gate** |  |  | 2027-01-31 | 2027-04-28 |  |  |  |  |  |  |  |  |  |  |  |  |  |  |  |  |  |  |  |  |  |  |  |  |  |  |  |  |  |  |
| DS-0350 |  | Preliminary Design - Design Management, Coordination & Review Meetings | level of effort | 81d | 2027-01-31 | 2027-04-28 | DS-0020, DS-0360 FF | 590d | 0d |  |  | Phase 1 | Phase 1 (Billing) | 2.1 | Design | N/A | Contractor | General |  | Design - Structure | N/A | N/A | N/A | No cost | None | LOE / Cash | Design & approvals g | None | General | No site crew | 2027-01 | 2027-04 | 2027-Q1 | Not TGA process | Baseline | Not applicable |
| DS-0360 |  | Gate 2 - Preliminary Design Approved by SAR | milestone | 1d | 2027-04-28 | 2027-04-28 | DS-2380, DS-2400, DS-2420, DS-2440, DS-2460, DS-2480, DS-2500, DS-2520, DS-2540, DS-2560, DS-2580, DS-2600, DS-2620, DS-2640, DS-2660, DS-2680, TG-2220, TG-0230, TG-2320 | 0d |  |  |  | Phase 1 | Phase 1 (Billing) | 2.1 | Design | N/A | Contractor | General |  | Design - Structure | N/A | N/A | Design Gate | No cost | None | Critical (0 d) | Longest path | None | General | No site crew | 2027-04 | 2027-04 | 2027-Q2 | Not TGA process | Baseline | Not applicable |
|  | 02 | **Main Building** |  |  | 2027-01-31 | 2027-04-28 |  |  |  |  |  |  |  |  |  |  |  |  |  |  |  |  |  |  |  |  |  |  |  |  |  |  |  |  |  |  |
|  | 01 | **3.1 Main Building (GEA 1,100 m², single storey)** |  |  | 2027-01-31 | 2027-04-28 |  |  |  |  |  |  |  |  |  |  |  |  |  |  |  |  |  |  |  |  |  |  |  |  |  |  |  |  |  |  |
| DS-0370 |  | Preliminary Design Development - Main Building |  | 57d | 2027-01-31 | 2027-04-04 | PR-0230, DS-0020 | 0d |  | PERFORMANCE - Progress Value (SAR, planned earned value) [29334 SAR]; CASH FLOW - Invoiced Cash (SAR, net of advance recovery) [26400.6 SAR]; Architect / Building Design Engineer [912 h]; Structural Engineer [912 h]; MEP Design Engineer [912 h]; CAD / BIM Technician [912 h] | 55,734.6 | Phase 1 | Phase 1 (Billing) | 3.1 | Design | N/A | Contractor | Main Building | 3.1 Main Building | Design - Architectur | Preliminary | N/A | N/A | Engineering & Design | On completion | Critical (0 d) | Longest path | None | Station Building Zon | No site crew | 2027-01 | 2027-04 | 2027-Q1 | Not TGA process | Baseline | Preparation |
| DS-0380 |  | Preliminary Design Submission to SAR - Main Building |  | 3d | 2027-04-05 | 2027-04-07 | DS-0370 | 0d |  | PERFORMANCE - Progress Value (SAR, planned earned value) [916.69 SAR]; CASH FLOW - Invoiced Cash (SAR, net of advance recovery) [825.02 SAR]; Architect / Building Design Engineer [24 h]; Structural Engineer [24 h]; MEP Design Engineer [24 h]; CAD / BIM Technician [24 h] | 1,741.71 | Phase 1 | Phase 1 (Billing) | 3.1 | Design | N/A | Contractor | Main Building | 3.1 Main Building | Design - Architectur | Preliminary | N/A | N/A | Engineering & Design | On completion | Critical (0 d) | Longest path | None | Station Building Zon | No site crew | 2027-04 | 2027-04 | 2027-Q2 | Not TGA process | Baseline | Submission |
| DS-2380 |  | Preliminary Design Review & Approval by SAR - Main Building |  | 21d | 2027-04-08 | 2027-04-28 | DS-0380 | 0d |  | PERFORMANCE - Progress Value (SAR, planned earned value) [6416.81 SAR]; CASH FLOW - Invoiced Cash (SAR, net of advance recovery) [5775.13 SAR] | 12,191.94 | Phase 1 | Phase 1 (Billing) | 3.1 | Design | N/A | SAR | Main Building | 3.1 Main Building | Design - Architectur | Preliminary | N/A | N/A | Engineering & Design | On completion | Critical (0 d) | Longest path | SAR dependency | Station Building Zon | No site crew | 2027-04 | 2027-04 | 2027-Q2 | Not TGA process | Baseline | Review / Approval |

| ID | WBS | Activity | Duration | Start | Finish | Predecessors | Total float | Free float | Resources | Cost | Phase | Contract Phase | BOQ Ref | Stage | Lead Class | Responsibility | Package Group | Work Package | Discipline | Design Stage | Procurement Step | Milestone Type | Cost Component | Payment Basis | Path Class | Critical Driver | Risk Flag | Work Zone | Crew Size Class | Start Month | Finish Month | Start Quarter | TGA Process | Duration Basis | Submit / Review |
| --- | --- | --- | --- | --- | --- | --- | --- | --- | --- | --- | --- | --- | --- | --- | --- | --- | --- | --- | --- | --- | --- | --- | --- | --- | --- | --- | --- | --- | --- | --- | --- | --- | --- | --- | --- |
|  | 02 | **3.2 IT Equipment** |  | 2027-01-31 | 2027-04-22 |  |  |  |  |  |  |  |  |  |  |  |  |  |  |  |  |  |  |  |  |  |  |  |  |  |  |  |  |  |  |
| DS-0390 |  | Preliminary Design Development - IT Equipment | 51d | 2027-01-31 | 2027-03-29 | DS-0020 | 6d | 0d | PERFORMANCE - Progress Value (SAR, planned earned value) [4693.44 SAR]; CASH FLOW - Invoiced Cash (SAR, net of advance recovery) [4224.1 SAR]; MEP Design Engineer [816 h]; Signalling & Telecom Engineer [816 h]; CAD / BIM Technician [816 h] | 8,917.54 | Phase 1 | Phase 1 (Billing) | 3.2 | Design | N/A | Contractor | Main Building | 3.2 IT Equipment | Design - MEP | Preliminary | N/A | N/A | Engineering & Design | On completion | Near-critical (1-30 d) | Design & approvals g | None | Station Building Zon | No site crew | 2027-01 | 2027-03 | 2027-Q1 | Not TGA process | Baseline | Preparation |
| DS-0400 |  | Preliminary Design Submission to SAR - IT Equipment | 3d | 2027-03-30 | 2027-04-01 | DS-0390 | 6d | 0d | PERFORMANCE - Progress Value (SAR, planned earned value) [146.67 SAR]; CASH FLOW - Invoiced Cash (SAR, net of advance recovery) [132 SAR]; MEP Design Engineer [24 h]; Signalling & Telecom Engineer [24 h]; CAD / BIM Technician [24 h] | 278.67 | Phase 1 | Phase 1 (Billing) | 3.2 | Design | N/A | Contractor | Main Building | 3.2 IT Equipment | Design - MEP | Preliminary | N/A | N/A | Engineering & Design | On completion | Near-critical (1-30 d) | Design & approvals g | None | Station Building Zon | No site crew | 2027-03 | 2027-04 | 2027-Q1 | Not TGA process | Baseline | Submission |
| DS-2400 |  | Preliminary Design Review & Approval by SAR - IT Equipment | 21d | 2027-04-02 | 2027-04-22 | DS-0400 | 6d | 0d | PERFORMANCE - Progress Value (SAR, planned earned value) [1026.69 SAR]; CASH FLOW - Invoiced Cash (SAR, net of advance recovery) [924.02 SAR] | 1,950.71 | Phase 1 | Phase 1 (Billing) | 3.2 | Design | N/A | SAR | Main Building | 3.2 IT Equipment | Design - MEP | Preliminary | N/A | N/A | Engineering & Design | On completion | Near-critical (1-30 d) | Design & approvals g | SAR dependency | Station Building Zon | No site crew | 2027-04 | 2027-04 | 2027-Q2 | Not TGA process | Baseline | Review / Approval |
|  | 03 | **3.3 Furniture Works (FF&E)** |  | 2027-01-31 | 2027-04-16 |  |  |  |  |  |  |  |  |  |  |  |  |  |  |  |  |  |  |  |  |  |  |  |  |  |  |  |  |  |  |
| DS-0410 |  | Preliminary Design Development - Furniture Works (FF&E) | 45d | 2027-01-31 | 2027-03-23 | DS-0020 | 12d | 0d | PERFORMANCE - Progress Value (SAR, planned earned value) [24640.6 SAR]; CASH FLOW - Invoiced Cash (SAR, net of advance recovery) [22176.5 SAR]; Architect / Building Design Engineer [720 h]; CAD / BIM Technician [720 h] | 46,817.06 | Phase 2 | Phase 2 (Billing) | 3.3 | Design | N/A | Contractor | Main Building | 3.3 FF&E | Design - Architectur | Preliminary | N/A | N/A | Engineering & Design | On completion | Near-critical (1-30 d) | Design & approvals g | None | Station Building Zon | No site crew | 2027-01 | 2027-03 | 2027-Q1 | Not TGA process | Baseline | Preparation |
| DS-0420 |  | Preliminary Design Submission to SAR - Furniture Works (FF&E) | 3d | 2027-03-24 | 2027-03-26 | DS-0410 | 12d | 0d | PERFORMANCE - Progress Value (SAR, planned earned value) [770.02 SAR]; CASH FLOW - Invoiced Cash (SAR, net of advance recovery) [693.02 SAR]; Architect / Building Design Engineer [24 h]; CAD / BIM Technician [24 h] | 1,463.04 | Phase 2 | Phase 2 (Billing) | 3.3 | Design | N/A | Contractor | Main Building | 3.3 FF&E | Design - Architectur | Preliminary | N/A | N/A | Engineering & Design | On completion | Near-critical (1-30 d) | Design & approvals g | None | Station Building Zon | No site crew | 2027-03 | 2027-03 | 2027-Q1 | Not TGA process | Baseline | Submission |
| DS-2420 |  | Preliminary Design Review & Approval by SAR - Furniture Works (FF&E) | 21d | 2027-03-27 | 2027-04-16 | DS-0420 | 12d | 0d | PERFORMANCE - Progress Value (SAR, planned earned value) [5390.12 SAR]; CASH FLOW - Invoiced Cash (SAR, net of advance recovery) [4851.11 SAR] | 10,241.23 | Phase 2 | Phase 2 (Billing) | 3.3 | Design | N/A | SAR | Main Building | 3.3 FF&E | Design - Architectur | Preliminary | N/A | N/A | Engineering & Design | On completion | Near-critical (1-30 d) | Design & approvals g | SAR dependency | Station Building Zon | No site crew | 2027-03 | 2027-04 | 2027-Q1 | Not TGA process | Baseline | Review / Approval |
|  | 03 | **Ancillary Buildings** |  | 2027-01-31 | 2027-04-28 |  |  |  |  |  |  |  |  |  |  |  |  |  |  |  |  |  |  |  |  |  |  |  |  |  |  |  |  |  |  |
|  | 01 | **Substation and SEC Works** |  | 2027-01-31 | 2027-04-28 |  |  |  |  |  |  |  |  |  |  |  |  |  |  |  |  |  |  |  |  |  |  |  |  |  |  |  |  |  |  |
| DS-0430 |  | Preliminary Design Development - Substation & SEC Works | 57d | 2027-01-31 | 2027-04-04 | PR-0230, DS-0020 | 0d |  | PERFORMANCE - Progress Value (SAR, planned earned value) [48107.8 SAR]; CASH FLOW - Invoiced Cash (SAR, net of advance recovery) [43297 SAR]; MEP Design Engineer [912 h]; Structural Engineer [912 h]; CAD / BIM Technician [912 h] | 91,404.74 | Phase 1 | Phase 1 (Billing) | 4.1 | Design | N/A | Contractor | Ancillary Buildings | 4.1 Substation & SEC | Design - MEP | Preliminary | N/A | N/A | Engineering & Design | On completion | Critical (0 d) | Design & approvals g | None | Substation & Utiliti | No site crew | 2027-01 | 2027-04 | 2027-Q1 | Not TGA process | Baseline | Preparation |
| DS-0440 |  | Preliminary Design Submission to SAR - Substation & SEC Works | 3d | 2027-04-05 | 2027-04-07 | DS-0430 | 0d |  | PERFORMANCE - Progress Value (SAR, planned earned value) [1503.37 SAR]; CASH FLOW - Invoiced Cash (SAR, net of advance recovery) [1353.03 SAR]; MEP Design Engineer [24 h]; Structural Engineer [24 h]; CAD / BIM Technician [24 h] | 2,856.4 | Phase 1 | Phase 1 (Billing) | 4.1 | Design | N/A | Contractor | Ancillary Buildings | 4.1 Substation & SEC | Design - MEP | Preliminary | N/A | N/A | Engineering & Design | On completion | Critical (0 d) | Design & approvals g | None | Substation & Utiliti | No site crew | 2027-04 | 2027-04 | 2027-Q2 | Not TGA process | Baseline | Submission |
| DS-2440 |  | Preliminary Design Review & Approval by SAR - Substation & SEC Works | 21d | 2027-04-08 | 2027-04-28 | DS-0440 | 0d |  | PERFORMANCE - Progress Value (SAR, planned earned value) [10523.6 SAR]; CASH FLOW - Invoiced Cash (SAR, net of advance recovery) [9471.21 SAR] | 19,994.78 | Phase 1 | Phase 1 (Billing) | 4.1 | Design | N/A | SAR | Ancillary Buildings | 4.1 Substation & SEC | Design - MEP | Preliminary | N/A | N/A | Engineering & Design | On completion | Critical (0 d) | Design & approvals g | SAR dependency | Substation & Utiliti | No site crew | 2027-04 | 2027-04 | 2027-Q2 | Not TGA process | Baseline | Review / Approval |
|  | 02 | **Firefighting Building (BOQ GEA 518 m²)** |  | 2027-01-31 | 2027-04-28 |  |  |  |  |  |  |  |  |  |  |  |  |  |  |  |  |  |  |  |  |  |  |  |  |  |  |  |  |  |  |
| DS-0450 |  | Preliminary Design Development - Firefighting Building | 57d | 2027-01-31 | 2027-04-04 | PR-0230, DS-0020 | 0d |  | PERFORMANCE - Progress Value (SAR, planned earned value) [19947.1 SAR]; CASH FLOW - Invoiced Cash (SAR, net of advance recovery) [17952.4 SAR]; Architect / Building Design Engineer [912 h]; Structural Engineer [912 h]; MEP Design Engineer [912 h]; CAD / BIM Technician [912 h] | 37,899.53 | Phase 1 | Phase 1 (Billing) | 4.2 | Design | N/A | Contractor | Ancillary Buildings | 4.2 Firefighting Bld | Design - Architectur | Preliminary | N/A | N/A | Engineering & Design | On completion | Critical (0 d) | Design & approvals g | None | Station Building Zon | No site crew | 2027-01 | 2027-04 | 2027-Q1 | Not TGA process | Baseline | Preparation |
| DS-0460 |  | Preliminary Design Submission to SAR - Firefighting Building | 3d | 2027-04-05 | 2027-04-07 | DS-0450 | 0d |  | PERFORMANCE - Progress Value (SAR, planned earned value) [623.35 SAR]; CASH FLOW - Invoiced Cash (SAR, net of advance recovery) [561.01 SAR]; Architect / Building Design Engineer [24 h]; Structural Engineer [24 h]; MEP Design Engineer [24 h]; CAD / BIM Technician [24 h] | 1,184.36 | Phase 1 | Phase 1 (Billing) | 4.2 | Design | N/A | Contractor | Ancillary Buildings | 4.2 Firefighting Bld | Design - Architectur | Preliminary | N/A | N/A | Engineering & Design | On completion | Critical (0 d) | Design & approvals g | None | Station Building Zon | No site crew | 2027-04 | 2027-04 | 2027-Q2 | Not TGA process | Baseline | Submission |
| DS-2460 |  | Preliminary Design Review & Approval by SAR - Firefighting Building | 21d | 2027-04-08 | 2027-04-28 | DS-0460 | 0d |  | PERFORMANCE - Progress Value (SAR, planned earned value) [4363.43 SAR]; CASH FLOW - Invoiced Cash (SAR, net of advance recovery) [3927.09 SAR] | 8,290.52 | Phase 1 | Phase 1 (Billing) | 4.2 | Design | N/A | SAR | Ancillary Buildings | 4.2 Firefighting Bld | Design - Architectur | Preliminary | N/A | N/A | Engineering & Design | On completion | Critical (0 d) | Design & approvals g | SAR dependency | Station Building Zon | No site crew | 2027-04 | 2027-04 | 2027-Q2 | Not TGA process | Baseline | Review / Approval |
|  | 03 | **Generator Room (BOQ 62 m²)** |  | 2027-01-31 | 2027-04-19 |  |  |  |  |  |  |  |  |  |  |  |  |  |  |  |  |  |  |  |  |  |  |  |  |  |  |  |  |  |  |
| DS-0470 |  | Preliminary Design Development - Generator Room | 48d | 2027-01-31 | 2027-03-26 | PR-0230, DS-0020 | 9d | 0d | PERFORMANCE - Progress Value (SAR, planned earned value) [12907 SAR]; CASH FLOW - Invoiced Cash (SAR, net of advance recovery) [11616.3 SAR]; MEP Design Engineer [768 h]; Structural Engineer [768 h]; CAD / BIM Technician [768 h] | 24,523.22 | Phase 2 | Phase 2 (Billing) | 4.3 | Design | N/A | Contractor | Ancillary Buildings | 4.3 Generator Room | Design - MEP | Preliminary | N/A | N/A | Engineering & Design | On completion | Near-critical (1-30 d) | Design & approvals g | None | Substation & Utiliti | No site crew | 2027-01 | 2027-03 | 2027-Q1 | Not TGA process | Baseline | Preparation |
| DS-0480 |  | Preliminary Design Submission to SAR - Generator Room | 3d | 2027-03-27 | 2027-03-29 | DS-0470 | 9d | 0d | PERFORMANCE - Progress Value (SAR, planned earned value) [403.34 SAR]; CASH FLOW - Invoiced Cash (SAR, net of advance recovery) [363.01 SAR]; MEP Design Engineer [24 h]; Structural Engineer [24 h]; CAD / BIM Technician [24 h] | 766.35 | Phase 2 | Phase 2 (Billing) | 4.3 | Design | N/A | Contractor | Ancillary Buildings | 4.3 Generator Room | Design - MEP | Preliminary | N/A | N/A | Engineering & Design | On completion | Near-critical (1-30 d) | Design & approvals g | None | Substation & Utiliti | No site crew | 2027-03 | 2027-03 | 2027-Q1 | Not TGA process | Baseline | Submission |
| DS-2480 |  | Preliminary Design Review & Approval by SAR - Generator Room | 21d | 2027-03-30 | 2027-04-19 | DS-0480 | 9d | 0d | PERFORMANCE - Progress Value (SAR, planned earned value) [2823.4 SAR]; CASH FLOW - Invoiced Cash (SAR, net of advance recovery) [2541.06 SAR] | 5,364.46 | Phase 2 | Phase 2 (Billing) | 4.3 | Design | N/A | SAR | Ancillary Buildings | 4.3 Generator Room | Design - MEP | Preliminary | N/A | N/A | Engineering & Design | On completion | Near-critical (1-30 d) | Design & approvals g | SAR dependency | Substation & Utiliti | No site crew | 2027-03 | 2027-04 | 2027-Q1 | Not TGA process | Baseline | Review / Approval |
|  | 04 | **Underground Water Tank** |  | 2027-01-31 | 2027-04-19 |  |  |  |  |  |  |  |  |  |  |  |  |  |  |  |  |  |  |  |  |  |  |  |  |  |  |  |  |  |  |
| DS-0490 |  | Preliminary Design Development - Underground Water Tank | 48d | 2027-01-31 | 2027-03-26 | PR-0230, DS-0020 | 9d | 0d | PERFORMANCE - Progress Value (SAR, planned earned value) [30507.4 SAR]; CASH FLOW - Invoiced Cash (SAR, net of advance recovery) [27456.6 SAR]; Structural Engineer [768 h]; MEP Design Engineer [768 h]; CAD / BIM Technician [768 h] | 57,963.98 | Phase 1 | Phase 1 (Billing) | 4.4 | Design | N/A | Contractor | Ancillary Buildings | 4.4 UG Water Tank | Design - Structure | Preliminary | N/A | N/A | Engineering & Design | On completion | Near-critical (1-30 d) | Design & approvals g | None | Substation & Utiliti | No site crew | 2027-01 | 2027-03 | 2027-Q1 | Not TGA process | Baseline | Preparation |
| DS-0500 |  | Preliminary Design Submission to SAR - Underground Water Tank | 3d | 2027-03-27 | 2027-03-29 | DS-0490 | 9d | 0d | PERFORMANCE - Progress Value (SAR, planned earned value) [953.36 SAR]; CASH FLOW - Invoiced Cash (SAR, net of advance recovery) [858.02 SAR]; Structural Engineer [24 h]; MEP Design Engineer [24 h]; CAD / BIM Technician [24 h] | 1,811.38 | Phase 1 | Phase 1 (Billing) | 4.4 | Design | N/A | Contractor | Ancillary Buildings | 4.4 UG Water Tank | Design - Structure | Preliminary | N/A | N/A | Engineering & Design | On completion | Near-critical (1-30 d) | Design & approvals g | None | Substation & Utiliti | No site crew | 2027-03 | 2027-03 | 2027-Q1 | Not TGA process | Baseline | Submission |
| DS-2500 |  | Preliminary Design Review & Approval by SAR - Underground Water Tank | 21d | 2027-03-30 | 2027-04-19 | DS-0500 | 9d | 0d | PERFORMANCE - Progress Value (SAR, planned earned value) [6673.49 SAR]; CASH FLOW - Invoiced Cash (SAR, net of advance recovery) [6006.14 SAR] | 12,679.63 | Phase 1 | Phase 1 (Billing) | 4.4 | Design | N/A | SAR | Ancillary Buildings | 4.4 UG Water Tank | Design - Structure | Preliminary | N/A | N/A | Engineering & Design | On completion | Near-critical (1-30 d) | Design & approvals g | SAR dependency | Substation & Utiliti | No site crew | 2027-03 | 2027-04 | 2027-Q1 | Not TGA process | Baseline | Review / Approval |

| ID | WBS | Activity | Duration | Start | Finish | Predecessors | Total float | Free float | Resources | Cost | Phase | Contract Phase | BOQ Ref | Stage | Lead Class | Responsibility | Package Group | Work Package | Discipline | Design Stage | Procurement Step | Milestone Type | Cost Component | Payment Basis | Path Class | Critical Driver | Risk Flag | Work Zone | Crew Size Class | Start Month | Finish Month | Start Quarter | TGA Process | Duration Basis | Submit / Review |
| --- | --- | --- | --- | --- | --- | --- | --- | --- | --- | --- | --- | --- | --- | --- | --- | --- | --- | --- | --- | --- | --- | --- | --- | --- | --- | --- | --- | --- | --- | --- | --- | --- | --- | --- | --- |
|  | 04 | **External Works** |  | 2027-01-31 | 2027-04-28 |  |  |  |  |  |  |  |  |  |  |  |  |  |  |  |  |  |  |  |  |  |  |  |  |  |  |  |  |  |  |
|  | 01 | **Site Works and Underground Utilities** |  | 2027-01-31 | 2027-04-28 |  |  |  |  |  |  |  |  |  |  |  |  |  |  |  |  |  |  |  |  |  |  |  |  |  |  |  |  |  |  |
| DS-0510 |  | Preliminary Design Development - Site Works & Underground Utilities | 57d | 2027-01-31 | 2027-04-04 | PR-0250, DS-0020 | 0d |  | PERFORMANCE - Progress Value (SAR, planned earned value) [141977 SAR]; CASH FLOW - Invoiced Cash (SAR, net of advance recovery) [127779 SAR]; Civil / Roads / Drainage Engineer [1368 h]; MEP Design Engineer [1368 h]; CAD / BIM Technician [912 h] | 269,755.46 | Phase 1 | Phase 1 (Billing) | 5.1 | Design | N/A | Contractor | External Works | 5.1 Site Works & Uti | Design - Civil & Roa | Preliminary | N/A | N/A | Engineering & Design | On completion | Critical (0 d) | Design & approvals g | None | Substation & Utiliti | No site crew | 2027-01 | 2027-04 | 2027-Q1 | Not TGA process | Baseline | Preparation |
| DS-0520 |  | Preliminary Design Submission to SAR - Site Works & Underground Utilities | 3d | 2027-04-05 | 2027-04-07 | DS-0510 | 0d |  | PERFORMANCE - Progress Value (SAR, planned earned value) [4436.77 SAR]; CASH FLOW - Invoiced Cash (SAR, net of advance recovery) [3993.09 SAR]; Civil / Roads / Drainage Engineer [48 h]; MEP Design Engineer [48 h]; CAD / BIM Technician [24 h] | 8,429.86 | Phase 1 | Phase 1 (Billing) | 5.1 | Design | N/A | Contractor | External Works | 5.1 Site Works & Uti | Design - Civil & Roa | Preliminary | N/A | N/A | Engineering & Design | On completion | Critical (0 d) | Design & approvals g | None | Substation & Utiliti | No site crew | 2027-04 | 2027-04 | 2027-Q2 | Not TGA process | Baseline | Submission |
| DS-2520 |  | Preliminary Design Review & Approval by SAR - Site Works & Underground Utilities | 21d | 2027-04-08 | 2027-04-28 | DS-0520 | 0d |  | PERFORMANCE - Progress Value (SAR, planned earned value) [31057.4 SAR]; CASH FLOW - Invoiced Cash (SAR, net of advance recovery) [27951.6 SAR] | 59,009 | Phase 1 | Phase 1 (Billing) | 5.1 | Design | N/A | SAR | External Works | 5.1 Site Works & Uti | Design - Civil & Roa | Preliminary | N/A | N/A | Engineering & Design | On completion | Critical (0 d) | Design & approvals g | SAR dependency | Substation & Utiliti | No site crew | 2027-04 | 2027-04 | 2027-Q2 | Not TGA process | Baseline | Review / Approval |
|  | 02 | **Car Parking Sheds (BOQ 1,375 m²)** |  | 2027-01-31 | 2027-04-19 |  |  |  |  |  |  |  |  |  |  |  |  |  |  |  |  |  |  |  |  |  |  |  |  |  |  |  |  |  |  |
| DS-0530 |  | Preliminary Design Development - Car Parking Sheds | 48d | 2027-01-31 | 2027-03-26 | PR-0230, DS-0020 | 9d | 0d | PERFORMANCE - Progress Value (SAR, planned earned value) [10560.2 SAR]; CASH FLOW - Invoiced Cash (SAR, net of advance recovery) [9504.22 SAR]; Structural Engineer [768 h]; Architect / Building Design Engineer [768 h]; CAD / BIM Technician [768 h] | 20,064.46 | Phase 1 | Phase 1 (Billing) | 5.2 | Design | N/A | Contractor | External Works | 5.2 Car Parking Shed | Design - Civil & Roa | Preliminary | N/A | N/A | Engineering & Design | On completion | Near-critical (1-30 d) | Design & approvals g | None | Site & External Zone | No site crew | 2027-01 | 2027-03 | 2027-Q1 | Not TGA process | Baseline | Preparation |
| DS-0540 |  | Preliminary Design Submission to SAR - Car Parking Sheds | 3d | 2027-03-27 | 2027-03-29 | DS-0530 | 9d | 0d | PERFORMANCE - Progress Value (SAR, planned earned value) [330.01 SAR]; CASH FLOW - Invoiced Cash (SAR, net of advance recovery) [297.01 SAR]; Structural Engineer [24 h]; Architect / Building Design Engineer [24 h]; CAD / BIM Technician [24 h] | 627.02 | Phase 1 | Phase 1 (Billing) | 5.2 | Design | N/A | Contractor | External Works | 5.2 Car Parking Shed | Design - Civil & Roa | Preliminary | N/A | N/A | Engineering & Design | On completion | Near-critical (1-30 d) | Design & approvals g | None | Site & External Zone | No site crew | 2027-03 | 2027-03 | 2027-Q1 | Not TGA process | Baseline | Submission |
| DS-2540 |  | Preliminary Design Review & Approval by SAR - Car Parking Sheds | 21d | 2027-03-30 | 2027-04-19 | DS-0540 | 9d | 0d | PERFORMANCE - Progress Value (SAR, planned earned value) [2310.05 SAR]; CASH FLOW - Invoiced Cash (SAR, net of advance recovery) [2079.05 SAR] | 4,389.1 | Phase 1 | Phase 1 (Billing) | 5.2 | Design | N/A | SAR | External Works | 5.2 Car Parking Shed | Design - Civil & Roa | Preliminary | N/A | N/A | Engineering & Design | On completion | Near-critical (1-30 d) | Design & approvals g | SAR dependency | Site & External Zone | No site crew | 2027-03 | 2027-04 | 2027-Q1 | Not TGA process | Baseline | Review / Approval |
|  | 03 | **Fence Works (BOQ 500 m)** |  | 2027-01-31 | 2027-04-07 |  |  |  |  |  |  |  |  |  |  |  |  |  |  |  |  |  |  |  |  |  |  |  |  |  |  |  |  |  |  |
| DS-0550 |  | Preliminary Design Development - Fence Works | 36d | 2027-01-31 | 2027-03-08 | DS-0020 | 21d | 0d | PERFORMANCE - Progress Value (SAR, planned earned value) [2346.72 SAR]; CASH FLOW - Invoiced Cash (SAR, net of advance recovery) [2112.05 SAR]; Civil / Roads / Drainage Engineer [576 h]; CAD / BIM Technician [576 h] | 4,458.77 | Phase 1 | Phase 1 (Billing) | 5.3 | Design | N/A | Contractor | External Works | 5.3 Fence Works | Design - Civil & Roa | Preliminary | N/A | N/A | Engineering & Design | On completion | Near-critical (1-30 d) | Design & approvals g | None | Site & External Zone | No site crew | 2027-01 | 2027-03 | 2027-Q1 | Not TGA process | Baseline | Preparation |
| DS-0560 |  | Preliminary Design Submission to SAR - Fence Works | 3d | 2027-03-15 | 2027-03-17 | DS-0550 | 21d | 0d | PERFORMANCE - Progress Value (SAR, planned earned value) [73.34 SAR]; CASH FLOW - Invoiced Cash (SAR, net of advance recovery) [66.01 SAR]; Civil / Roads / Drainage Engineer [24 h]; CAD / BIM Technician [24 h] | 139.35 | Phase 1 | Phase 1 (Billing) | 5.3 | Design | N/A | Contractor | External Works | 5.3 Fence Works | Design - Civil & Roa | Preliminary | N/A | N/A | Engineering & Design | On completion | Near-critical (1-30 d) | Design & approvals g | None | Site & External Zone | No site crew | 2027-03 | 2027-03 | 2027-Q1 | Not TGA process | Baseline | Submission |
| DS-2560 |  | Preliminary Design Review & Approval by SAR - Fence Works | 21d | 2027-03-18 | 2027-04-07 | DS-0560 | 21d | 0d | PERFORMANCE - Progress Value (SAR, planned earned value) [513.35 SAR]; CASH FLOW - Invoiced Cash (SAR, net of advance recovery) [462.02 SAR] | 975.37 | Phase 1 | Phase 1 (Billing) | 5.3 | Design | N/A | SAR | External Works | 5.3 Fence Works | Design - Civil & Roa | Preliminary | N/A | N/A | Engineering & Design | On completion | Near-critical (1-30 d) | Design & approvals g | SAR dependency | Site & External Zone | No site crew | 2027-03 | 2027-04 | 2027-Q1 | Not TGA process | Baseline | Review / Approval |
|  | 04 | **Automatic Gate System (BOQ 2 no)** |  | 2027-01-31 | 2027-04-07 |  |  |  |  |  |  |  |  |  |  |  |  |  |  |  |  |  |  |  |  |  |  |  |  |  |  |  |  |  |  |
| DS-0570 |  | Preliminary Design Development - Automatic Gate System | 36d | 2027-01-31 | 2027-03-08 | DS-0020 | 21d | 0d | PERFORMANCE - Progress Value (SAR, planned earned value) [3520.08 SAR]; CASH FLOW - Invoiced Cash (SAR, net of advance recovery) [3168.07 SAR]; MEP Design Engineer [576 h]; CAD / BIM Technician [576 h] | 6,688.15 | Phase 1 | Phase 1 (Billing) | 5.4 | Design | N/A | Contractor | External Works | 5.4 Automatic Gate | Design - MEP | Preliminary | N/A | N/A | Engineering & Design | On completion | Near-critical (1-30 d) | Design & approvals g | None | Site & External Zone | No site crew | 2027-01 | 2027-03 | 2027-Q1 | Not TGA process | Baseline | Preparation |
| DS-0580 |  | Preliminary Design Submission to SAR - Automatic Gate System | 3d | 2027-03-15 | 2027-03-17 | DS-0570 | 21d | 0d | PERFORMANCE - Progress Value (SAR, planned earned value) [110 SAR]; CASH FLOW - Invoiced Cash (SAR, net of advance recovery) [99 SAR]; MEP Design Engineer [24 h]; CAD / BIM Technician [24 h] | 209 | Phase 1 | Phase 1 (Billing) | 5.4 | Design | N/A | Contractor | External Works | 5.4 Automatic Gate | Design - MEP | Preliminary | N/A | N/A | Engineering & Design | On completion | Near-critical (1-30 d) | Design & approvals g | None | Site & External Zone | No site crew | 2027-03 | 2027-03 | 2027-Q1 | Not TGA process | Baseline | Submission |
| DS-2580 |  | Preliminary Design Review & Approval by SAR - Automatic Gate System | 21d | 2027-03-18 | 2027-04-07 | DS-0580 | 21d | 0d | PERFORMANCE - Progress Value (SAR, planned earned value) [770.02 SAR]; CASH FLOW - Invoiced Cash (SAR, net of advance recovery) [693.02 SAR] | 1,463.04 | Phase 1 | Phase 1 (Billing) | 5.4 | Design | N/A | SAR | External Works | 5.4 Automatic Gate | Design - MEP | Preliminary | N/A | N/A | Engineering & Design | On completion | Near-critical (1-30 d) | Design & approvals g | SAR dependency | Site & External Zone | No site crew | 2027-03 | 2027-04 | 2027-Q1 | Not TGA process | Baseline | Review / Approval |
|  | 05 | **Road Works** |  | 2027-01-31 | 2027-04-28 |  |  |  |  |  |  |  |  |  |  |  |  |  |  |  |  |  |  |  |  |  |  |  |  |  |  |  |  |  |  |
|  | 01 | **Access Road (BOQ ~1,700 m dual carriageway)** |  | 2027-01-31 | 2027-04-28 |  |  |  |  |  |  |  |  |  |  |  |  |  |  |  |  |  |  |  |  |  |  |  |  |  |  |  |  |  |  |
| DS-0590 |  | Preliminary Design Development - Access Road | 57d | 2027-01-31 | 2027-04-04 | PR-0230, PR-0250, DS-0020 | 0d |  | PERFORMANCE - Progress Value (SAR, planned earned value) [132590 SAR]; CASH FLOW - Invoiced Cash (SAR, net of advance recovery) [119331 SAR]; Civil / Roads / Drainage Engineer [1368 h]; CAD / BIM Technician [912 h] | 251,920.39 | Phase 2 | Phase 2 (Billing) | 6.1 | Design | N/A | Contractor | Road Works | 6.1 Access Road | Design - Civil & Roa | Preliminary | N/A | N/A | Engineering & Design | On completion | Critical (0 d) | Design & approvals g | None | Road Zone | No site crew | 2027-01 | 2027-04 | 2027-Q1 | Not TGA process | Baseline | Preparation |
| DS-0600 |  | Preliminary Design Submission to SAR - Access Road | 3d | 2027-04-05 | 2027-04-07 | DS-0590 | 0d |  | PERFORMANCE - Progress Value (SAR, planned earned value) [4143.43 SAR]; CASH FLOW - Invoiced Cash (SAR, net of advance recovery) [3729.09 SAR]; Civil / Roads / Drainage Engineer [48 h]; CAD / BIM Technician [24 h] | 7,872.52 | Phase 2 | Phase 2 (Billing) | 6.1 | Design | N/A | Contractor | Road Works | 6.1 Access Road | Design - Civil & Roa | Preliminary | N/A | N/A | Engineering & Design | On completion | Critical (0 d) | Design & approvals g | None | Road Zone | No site crew | 2027-04 | 2027-04 | 2027-Q2 | Not TGA process | Baseline | Submission |
| DS-2600 |  | Preliminary Design Review & Approval by SAR - Access Road | 21d | 2027-04-08 | 2027-04-28 | DS-0600 | 0d |  | PERFORMANCE - Progress Value (SAR, planned earned value) [29004 SAR]; CASH FLOW - Invoiced Cash (SAR, net of advance recovery) [26103.6 SAR] | 55,107.58 | Phase 2 | Phase 2 (Billing) | 6.1 | Design | N/A | SAR | Road Works | 6.1 Access Road | Design - Civil & Roa | Preliminary | N/A | N/A | Engineering & Design | On completion | Critical (0 d) | Design & approvals g | SAR dependency | Road Zone | No site crew | 2027-04 | 2027-04 | 2027-Q2 | Not TGA process | Baseline | Review / Approval |
|  | 02 | **External Works (All works above ground)** |  | 2027-01-31 | 2027-04-28 |  |  |  |  |  |  |  |  |  |  |  |  |  |  |  |  |  |  |  |  |  |  |  |  |  |  |  |  |  |  |
| DS-0610 |  | Preliminary Design Development - External Works (Above Ground) | 57d | 2027-01-31 | 2027-04-04 | PR-0250, DS-0020 | 0d |  | PERFORMANCE - Progress Value (SAR, planned earned value) [117336 SAR]; CASH FLOW - Invoiced Cash (SAR, net of advance recovery) [105602 SAR]; Civil / Roads / Drainage Engineer [1368 h]; MEP Design Engineer [1368 h]; CAD / BIM Technician [912 h] | 222,938.4 | Phase 1 | Phase 1 (Billing) | 6.3 | Design | N/A | Contractor | Road Works | 6.3 External Works | Design - Civil & Roa | Preliminary | N/A | N/A | Engineering & Design | On completion | Critical (0 d) | Design & approvals g | None | Site & External Zone | No site crew | 2027-01 | 2027-04 | 2027-Q1 | Not TGA process | Baseline | Preparation |
| DS-0620 |  | Preliminary Design Submission to SAR - External Works (Above Ground) | 3d | 2027-04-05 | 2027-04-07 | DS-0610 | 0d |  | PERFORMANCE - Progress Value (SAR, planned earned value) [3666.75 SAR]; CASH FLOW - Invoiced Cash (SAR, net of advance recovery) [3300.08 SAR]; Civil / Roads / Drainage Engineer [48 h]; MEP Design Engineer [48 h]; CAD / BIM Technician [24 h] | 6,966.83 | Phase 1 | Phase 1 (Billing) | 6.3 | Design | N/A | Contractor | Road Works | 6.3 External Works | Design - Civil & Roa | Preliminary | N/A | N/A | Engineering & Design | On completion | Critical (0 d) | Design & approvals g | None | Site & External Zone | No site crew | 2027-04 | 2027-04 | 2027-Q2 | Not TGA process | Baseline | Submission |
| DS-2620 |  | Preliminary Design Review & Approval by SAR - External Works (Above Ground) | 21d | 2027-04-08 | 2027-04-28 | DS-0620 | 0d |  | PERFORMANCE - Progress Value (SAR, planned earned value) [25667.2 SAR]; CASH FLOW - Invoiced Cash (SAR, net of advance recovery) [23100.5 SAR] | 48,767.78 | Phase 1 | Phase 1 (Billing) | 6.3 | Design | N/A | SAR | Road Works | 6.3 External Works | Design - Civil & Roa | Preliminary | N/A | N/A | Engineering & Design | On completion | Critical (0 d) | Design & approvals g | SAR dependency | Site & External Zone | No site crew | 2027-04 | 2027-04 | 2027-Q2 | Not TGA process | Baseline | Review / Approval |

| ID | WBS | Activity | Type | Duration | Start | Finish | Predecessors | Total float | Free float | Resources | Cost | Phase | Contract Phase | BOQ Ref | Stage | Lead Class | Responsibility | Package Group | Work Package | Discipline | Design Stage | Procurement Step | Milestone Type | Cost Component | Payment Basis | Path Class | Critical Driver | Risk Flag | Work Zone | Crew Size Class | Start Month | Finish Month | Start Quarter | TGA Process | Duration Basis | Submit / Review |
| --- | --- | --- | --- | --- | --- | --- | --- | --- | --- | --- | --- | --- | --- | --- | --- | --- | --- | --- | --- | --- | --- | --- | --- | --- | --- | --- | --- | --- | --- | --- | --- | --- | --- | --- | --- | --- |
|  | 06 | **Railway Systems** |  |  | 2027-01-31 | 2027-04-28 |  |  |  |  |  |  |  |  |  |  |  |  |  |  |  |  |  |  |  |  |  |  |  |  |  |  |  |  |  |  |
|  | 01 | **Signalling and Telecommunication** |  |  | 2027-01-31 | 2027-04-28 |  |  |  |  |  |  |  |  |  |  |  |  |  |  |  |  |  |  |  |  |  |  |  |  |  |  |  |  |  |  |
| DS-0630 |  | Preliminary Design Development - Signalling & Telecommunication |  | 57d | 2027-01-31 | 2027-04-04 | DS-0020 | 0d |  | PERFORMANCE - Progress Value (SAR, planned earned value) [193604 SAR]; CASH FLOW - Invoiced Cash (SAR, net of advance recovery) [174244 SAR]; Signalling & Telecom Engineer [1368 h]; Railway Track & Systems Engineer [1368 h]; CAD / BIM Technician [912 h] | 367,848.36 | Phase 1 | Phase 1 (Billing) | 6.2 | Design | N/A | Contractor | Railway Systems | 6.2 Signalling & Tel | Design - Railway & S | Preliminary | N/A | N/A | Engineering & Design | On completion | Critical (0 d) | Design & approvals g | None | Track Zone | No site crew | 2027-01 | 2027-04 | 2027-Q1 | Not TGA process | Baseline | Preparation |
| DS-0640 |  | Preliminary Design Submission to SAR - Signalling & Telecommunication |  | 3d | 2027-04-05 | 2027-04-07 | DS-0630 | 0d |  | PERFORMANCE - Progress Value (SAR, planned earned value) [6050.14 SAR]; CASH FLOW - Invoiced Cash (SAR, net of advance recovery) [5445.13 SAR]; Signalling & Telecom Engineer [48 h]; Railway Track & Systems Engineer [48 h]; CAD / BIM Technician [24 h] | 11,495.27 | Phase 1 | Phase 1 (Billing) | 6.2 | Design | N/A | Contractor | Railway Systems | 6.2 Signalling & Tel | Design - Railway & S | Preliminary | N/A | N/A | Engineering & Design | On completion | Critical (0 d) | Design & approvals g | None | Track Zone | No site crew | 2027-04 | 2027-04 | 2027-Q2 | Not TGA process | Baseline | Submission |
| DS-2640 |  | Preliminary Design Review & Approval by SAR - Signalling & Telecommunication |  | 21d | 2027-04-08 | 2027-04-28 | DS-0640 | 0d |  | PERFORMANCE - Progress Value (SAR, planned earned value) [42351 SAR]; CASH FLOW - Invoiced Cash (SAR, net of advance recovery) [38115.9 SAR] | 80,466.82 | Phase 1 | Phase 1 (Billing) | 6.2 | Design | N/A | SAR | Railway Systems | 6.2 Signalling & Tel | Design - Railway & S | Preliminary | N/A | N/A | Engineering & Design | On completion | Critical (0 d) | Design & approvals g | SAR dependency | Track Zone | No site crew | 2027-04 | 2027-04 | 2027-Q2 | Not TGA process | Baseline | Review / Approval |
|  | 02 | **Railway Track Works (BOQ 2,500 m loop line)** |  |  | 2027-01-31 | 2027-04-28 |  |  |  |  |  |  |  |  |  |  |  |  |  |  |  |  |  |  |  |  |  |  |  |  |  |  |  |  |  |  |
| DS-0650 |  | Preliminary Design Development - Railway Track Works |  | 57d | 2027-01-31 | 2027-04-04 | PR-0230, PR-0240, DS-0020 | 0d |  | PERFORMANCE - Progress Value (SAR, planned earned value) [283953 SAR]; CASH FLOW - Invoiced Cash (SAR, net of advance recovery) [255558 SAR]; Railway Track & Systems Engineer [1368 h]; Civil / Roads / Drainage Engineer [1368 h]; CAD / BIM Technician [912 h] | 539,510.93 | Phase 2 | Phase 2 (Billing) | 7.2 | Design | N/A | Contractor | Railway Systems | 7.2 Railway Track | Design - Railway & S | Preliminary | N/A | N/A | Engineering & Design | On completion | Critical (0 d) | Design & approvals g | None | Track Zone | No site crew | 2027-01 | 2027-04 | 2027-Q1 | Not TGA process | Baseline | Preparation |
| DS-0660 |  | Preliminary Design Submission to SAR - Railway Track Works |  | 3d | 2027-04-05 | 2027-04-07 | DS-0650 | 0d |  | PERFORMANCE - Progress Value (SAR, planned earned value) [8873.53 SAR]; CASH FLOW - Invoiced Cash (SAR, net of advance recovery) [7986.18 SAR]; Railway Track & Systems Engineer [48 h]; Civil / Roads / Drainage Engineer [48 h]; CAD / BIM Technician [24 h] | 16,859.71 | Phase 2 | Phase 2 (Billing) | 7.2 | Design | N/A | Contractor | Railway Systems | 7.2 Railway Track | Design - Railway & S | Preliminary | N/A | N/A | Engineering & Design | On completion | Critical (0 d) | Design & approvals g | None | Track Zone | No site crew | 2027-04 | 2027-04 | 2027-Q2 | Not TGA process | Baseline | Submission |
| DS-2660 |  | Preliminary Design Review & Approval by SAR - Railway Track Works |  | 21d | 2027-04-08 | 2027-04-28 | DS-0660 | 0d |  | PERFORMANCE - Progress Value (SAR, planned earned value) [62114.7 SAR]; CASH FLOW - Invoiced Cash (SAR, net of advance recovery) [55903.3 SAR] | 118,018.01 | Phase 2 | Phase 2 (Billing) | 7.2 | Design | N/A | SAR | Railway Systems | 7.2 Railway Track | Design - Railway & S | Preliminary | N/A | N/A | Engineering & Design | On completion | Critical (0 d) | Design & approvals g | SAR dependency | Track Zone | No site crew | 2027-04 | 2027-04 | 2027-Q2 | Not TGA process | Baseline | Review / Approval |
|  | 03 | **Railway Turnout Works** |  |  | 2027-01-31 | 2027-04-28 |  |  |  |  |  |  |  |  |  |  |  |  |  |  |  |  |  |  |  |  |  |  |  |  |  |  |  |  |  |  |
| DS-0670 |  | Preliminary Design Development - Railway Turnout Works |  | 57d | 2027-01-31 | 2027-04-04 | PR-0240, DS-0020 | 0d |  | PERFORMANCE - Progress Value (SAR, planned earned value) [117336 SAR]; CASH FLOW - Invoiced Cash (SAR, net of advance recovery) [105602 SAR]; Railway Track & Systems Engineer [1368 h]; CAD / BIM Technician [912 h] | 222,938.4 | Phase 1 | Phase 1 (Billing) | 7.3 | Design | N/A | Contractor | Railway Systems | 7.3 Railway Turnouts | Design - Railway & S | Preliminary | N/A | N/A | Engineering & Design | On completion | Critical (0 d) | Design & approvals g | None | Track Zone | No site crew | 2027-01 | 2027-04 | 2027-Q1 | Not TGA process | Baseline | Preparation |
| DS-0680 |  | Preliminary Design Submission to SAR - Railway Turnout Works |  | 3d | 2027-04-05 | 2027-04-07 | DS-0670 | 0d |  | PERFORMANCE - Progress Value (SAR, planned earned value) [3666.75 SAR]; CASH FLOW - Invoiced Cash (SAR, net of advance recovery) [3300.08 SAR]; Railway Track & Systems Engineer [48 h]; CAD / BIM Technician [24 h] | 6,966.83 | Phase 1 | Phase 1 (Billing) | 7.3 | Design | N/A | Contractor | Railway Systems | 7.3 Railway Turnouts | Design - Railway & S | Preliminary | N/A | N/A | Engineering & Design | On completion | Critical (0 d) | Design & approvals g | None | Track Zone | No site crew | 2027-04 | 2027-04 | 2027-Q2 | Not TGA process | Baseline | Submission |
| DS-2680 |  | Preliminary Design Review & Approval by SAR - Railway Turnout Works |  | 21d | 2027-04-08 | 2027-04-28 | DS-0680 | 0d |  | PERFORMANCE - Progress Value (SAR, planned earned value) [25667.2 SAR]; CASH FLOW - Invoiced Cash (SAR, net of advance recovery) [23100.5 SAR] | 48,767.78 | Phase 1 | Phase 1 (Billing) | 7.3 | Design | N/A | SAR | Railway Systems | 7.3 Railway Turnouts | Design - Railway & S | Preliminary | N/A | N/A | Engineering & Design | On completion | Critical (0 d) | Design & approvals g | SAR dependency | Track Zone | No site crew | 2027-04 | 2027-04 | 2027-Q2 | Not TGA process | Baseline | Review / Approval |
|  | 03 | **Detailed Design and IFC** |  |  | 2027-04-29 | 2027-09-21 |  |  |  |  |  |  |  |  |  |  |  |  |  |  |  |  |  |  |  |  |  |  |  |  |  |  |  |  |  |  |
|  | 01 | **Detailed - Stage Management and Gate** |  |  | 2027-04-29 | 2027-09-21 |  |  |  |  |  |  |  |  |  |  |  |  |  |  |  |  |  |  |  |  |  |  |  |  |  |  |  |  |  |  |
| DS-0690 |  | Detailed Design & IFC - Design Management, Coordination & Review Meetings | level of effort | 140d | 2027-04-29 | 2027-09-21 | DS-0360, DS-0700 FF | 450d | 0d |  |  | Phase 1 | Phase 1 (Billing) | 2.1 | Design | N/A | Contractor | General |  | Design - Structure | N/A | N/A | N/A | No cost | None | LOE / Cash | Design & approvals g | None | General | No site crew | 2027-04 | 2027-09 | 2027-Q2 | Not TGA process | Baseline | Not applicable |
| DS-0700 |  | Gate 3 - Detailed Design (IFC) Approved by SAR | milestone | 1d | 2027-09-21 | 2027-09-21 | PR-0110, DS-2720, DS-2740, DS-2760, DS-2780, DS-2800, DS-2820, DS-2840, DS-2860, DS-2880, DS-2900, DS-2920, DS-2940, DS-2960, DS-2980, DS-3000, DS-3020, PR-0111, PR-0112, PR-0113, PR-0114, TG-2420, TG-0430, TG-2520 | 0d |  |  |  | Phase 1 | Phase 1 (Billing) | 2.1 | Design | N/A | Contractor | General |  | Design - Structure | N/A | N/A | Design Gate | No cost | None | Critical (0 d) | Longest path | None | General | No site crew | 2027-09 | 2027-09 | 2027-Q3 | Not TGA process | Baseline | Not applicable |
|  | 02 | **Main Building** |  |  | 2027-04-29 | 2027-09-16 |  |  |  |  |  |  |  |  |  |  |  |  |  |  |  |  |  |  |  |  |  |  |  |  |  |  |  |  |  |  |
|  | 01 | **Main Building (GEA 1,100 m², single storey)** |  |  | 2027-04-29 | 2027-09-16 |  |  |  |  |  |  |  |  |  |  |  |  |  |  |  |  |  |  |  |  |  |  |  |  |  |  |  |  |  |  |
| DS-0710 |  | Detailed Design & IFC Development - Main Building |  | 104d | 2027-04-29 | 2027-08-16 | DS-0360 | 5d | 0d | PERFORMANCE - Progress Value (SAR, planned earned value) [99515 SAR]; CASH FLOW - Invoiced Cash (SAR, net of advance recovery) [89563.5 SAR]; Architect / Building Design Engineer [1664 h]; Structural Engineer [1664 h]; MEP Design Engineer [1664 h]; CAD / BIM Technician [1664 h] | 189,078.5 | Phase 1 | Phase 1 (Billing) | 3.1 | Design | N/A | Contractor | Main Building | 3.1 Main Building | Design - Architectur | Detailed & IFC | N/A | N/A | Engineering & Design | On completion | Near-critical (1-30 d) | Design & approvals g | None | Station Building Zon | No site crew | 2027-04 | 2027-08 | 2027-Q2 | Not TGA process | Baseline | Preparation |
| DS-0720 |  | Detailed Design & IFC Submission to SAR - Main Building |  | 3d | 2027-08-17 | 2027-08-19 | DS-0710 | 5d | 0d | PERFORMANCE - Progress Value (SAR, planned earned value) [2271.53 SAR]; CASH FLOW - Invoiced Cash (SAR, net of advance recovery) [2044.38 SAR]; Architect / Building Design Engineer [24 h]; Structural Engineer [24 h]; MEP Design Engineer [24 h]; CAD / BIM Technician [24 h] | 4,315.91 | Phase 1 | Phase 1 (Billing) | 3.1 | Design | N/A | Contractor | Main Building | 3.1 Main Building | Design - Architectur | Detailed & IFC | N/A | N/A | Engineering & Design | On completion | Near-critical (1-30 d) | Design & approvals g | None | Station Building Zon | No site crew | 2027-08 | 2027-08 | 2027-Q3 | Not TGA process | Baseline | Submission |
| DS-2720 |  | Detailed Design & IFC Review & Approval by SAR - Main Building |  | 28d | 2027-08-20 | 2027-09-16 | DS-0720 | 5d | 0d | PERFORMANCE - Progress Value (SAR, planned earned value) [21201 SAR]; CASH FLOW - Invoiced Cash (SAR, net of advance recovery) [19080.9 SAR] | 40,281.84 | Phase 1 | Phase 1 (Billing) | 3.1 | Design | N/A | SAR | Main Building | 3.1 Main Building | Design - Architectur | Detailed & IFC | N/A | N/A | Engineering & Design | On completion | Near-critical (1-30 d) | Design & approvals g | SAR dependency | Station Building Zon | No site crew | 2027-08 | 2027-09 | 2027-Q3 | Not TGA process | Baseline | Review / Approval |
|  | 02 | **IT Equipment** |  |  | 2027-04-29 | 2027-08-31 |  |  |  |  |  |  |  |  |  |  |  |  |  |  |  |  |  |  |  |  |  |  |  |  |  |  |  |  |  |  |
| DS-0730 |  | Detailed Design & IFC Development - IT Equipment |  | 88d | 2027-04-29 | 2027-07-31 | DS-0360 | 21d | 0d | PERFORMANCE - Progress Value (SAR, planned earned value) [16822.4 SAR]; CASH FLOW - Invoiced Cash (SAR, net of advance recovery) [15140.2 SAR]; MEP Design Engineer [1408 h]; Signalling & Telecom Engineer [1408 h]; CAD / BIM Technician [1408 h] | 31,962.56 | Phase 1 | Phase 1 (Billing) | 3.2 | Design | N/A | Contractor | Main Building | 3.2 IT Equipment | Design - MEP | Detailed & IFC | N/A | N/A | Engineering & Design | On completion | Near-critical (1-30 d) | Design & approvals g | None | Station Building Zon | No site crew | 2027-04 | 2027-07 | 2027-Q2 | Not TGA process | Baseline | Preparation |
| DS-0740 |  | Detailed Design & IFC Submission to SAR - IT Equipment |  | 3d | 2027-08-01 | 2027-08-03 | DS-0730 | 21d | 0d | PERFORMANCE - Progress Value (SAR, planned earned value) [382.8 SAR]; CASH FLOW - Invoiced Cash (SAR, net of advance recovery) [344.52 SAR]; MEP Design Engineer [24 h]; Signalling & Telecom Engineer [24 h]; CAD / BIM Technician [24 h] | 727.32 | Phase 1 | Phase 1 (Billing) | 3.2 | Design | N/A | Contractor | Main Building | 3.2 IT Equipment | Design - MEP | Detailed & IFC | N/A | N/A | Engineering & Design | On completion | Near-critical (1-30 d) | Design & approvals g | None | Station Building Zon | No site crew | 2027-08 | 2027-08 | 2027-Q3 | Not TGA process | Baseline | Submission |
| DS-2740 |  | Detailed Design & IFC Review & Approval by SAR - IT Equipment |  | 28d | 2027-08-04 | 2027-08-31 | DS-0740 | 21d | 0d | PERFORMANCE - Progress Value (SAR, planned earned value) [3572.8 SAR]; CASH FLOW - Invoiced Cash (SAR, net of advance recovery) [3215.52 SAR] | 6,788.32 | Phase 1 | Phase 1 (Billing) | 3.2 | Design | N/A | SAR | Main Building | 3.2 IT Equipment | Design - MEP | Detailed & IFC | N/A | N/A | Engineering & Design | On completion | Near-critical (1-30 d) | Design & approvals g | SAR dependency | Station Building Zon | No site crew | 2027-08 | 2027-08 | 2027-Q3 | Not TGA process | Baseline | Review / Approval |

| ID | WBS | Activity | Duration | Start | Finish | Predecessors | Total float | Free float | Resources | Cost | Phase | Contract Phase | BOQ Ref | Stage | Lead Class | Responsibility | Package Group | Work Package | Discipline | Design Stage | Procurement Step | Milestone Type | Cost Component | Payment Basis | Path Class | Critical Driver | Risk Flag | Work Zone | Crew Size Class | Start Month | Finish Month | Start Quarter | TGA Process | Duration Basis | Submit / Review |
| --- | --- | --- | --- | --- | --- | --- | --- | --- | --- | --- | --- | --- | --- | --- | --- | --- | --- | --- | --- | --- | --- | --- | --- | --- | --- | --- | --- | --- | --- | --- | --- | --- | --- | --- | --- |
|  | 03 | **Furniture Works (FF&E)** |  | 2027-04-29 | 2027-08-21 |  |  |  |  |  |  |  |  |  |  |  |  |  |  |  |  |  |  |  |  |  |  |  |  |  |  |  |  |  |  |
| DS-0750 |  | Detailed Design & IFC Development - Furniture Works (FF&E) | 78d | 2027-04-29 | 2027-07-21 | DS-0360 | 31d | 0d | PERFORMANCE - Progress Value (SAR, planned earned value) [83817.6 SAR]; CASH FLOW - Invoiced Cash (SAR, net of advance recovery) [75435.8 SAR]; Architect / Building Design Engineer [1248 h]; CAD / BIM Technician [1248 h] | 159,253.44 | Phase 2 | Phase 2 (Billing) | 3.3 | Design | N/A | Contractor | Main Building | 3.3 FF&E | Design - Architectur | Detailed & IFC | N/A | N/A | Engineering & Design | On completion | Float 31-90 d | Design & approvals g | None | Station Building Zon | No site crew | 2027-04 | 2027-07 | 2027-Q2 | Not TGA process | Baseline | Preparation |
| DS-0760 |  | Detailed Design & IFC Submission to SAR - Furniture Works (FF&E) | 3d | 2027-07-22 | 2027-07-24 | DS-0750 | 31d | 0d | PERFORMANCE - Progress Value (SAR, planned earned value) [1912.93 SAR]; CASH FLOW - Invoiced Cash (SAR, net of advance recovery) [1721.64 SAR]; Architect / Building Design Engineer [24 h]; CAD / BIM Technician [24 h] | 3,634.57 | Phase 2 | Phase 2 (Billing) | 3.3 | Design | N/A | Contractor | Main Building | 3.3 FF&E | Design - Architectur | Detailed & IFC | N/A | N/A | Engineering & Design | On completion | Float 31-90 d | Design & approvals g | None | Station Building Zon | No site crew | 2027-07 | 2027-07 | 2027-Q3 | Not TGA process | Baseline | Submission |
| DS-2760 |  | Detailed Design & IFC Review & Approval by SAR - Furniture Works (FF&E) | 28d | 2027-07-25 | 2027-08-21 | DS-0760 | 31d | 0d | PERFORMANCE - Progress Value (SAR, planned earned value) [17854 SAR]; CASH FLOW - Invoiced Cash (SAR, net of advance recovery) [16068.6 SAR] | 33,922.54 | Phase 2 | Phase 2 (Billing) | 3.3 | Design | N/A | SAR | Main Building | 3.3 FF&E | Design - Architectur | Detailed & IFC | N/A | N/A | Engineering & Design | On completion | Float 31-90 d | Design & approvals g | SAR dependency | Station Building Zon | No site crew | 2027-07 | 2027-08 | 2027-Q3 | Not TGA process | Baseline | Review / Approval |
|  | 03 | **Ancillary Buildings** |  | 2027-04-29 | 2027-09-16 |  |  |  |  |  |  |  |  |  |  |  |  |  |  |  |  |  |  |  |  |  |  |  |  |  |  |  |  |  |  |
|  | 01 | **Substation and SEC Works** |  | 2027-04-29 | 2027-09-16 |  |  |  |  |  |  |  |  |  |  |  |  |  |  |  |  |  |  |  |  |  |  |  |  |  |  |  |  |  |  |
| DS-0770 |  | Detailed Design & IFC Development - Substation & SEC Works | 104d | 2027-04-29 | 2027-08-16 | DS-0360 | 5d | 0d | PERFORMANCE - Progress Value (SAR, planned earned value) [163205 SAR]; CASH FLOW - Invoiced Cash (SAR, net of advance recovery) [146884 SAR]; MEP Design Engineer [1664 h]; Structural Engineer [1664 h]; CAD / BIM Technician [1664 h] | 310,088.74 | Phase 1 | Phase 1 (Billing) | 4.1 | Design | N/A | Contractor | Ancillary Buildings | 4.1 Substation & SEC | Design - MEP | Detailed & IFC | N/A | N/A | Engineering & Design | On completion | Near-critical (1-30 d) | Design & approvals g | None | Substation & Utiliti | No site crew | 2027-04 | 2027-08 | 2027-Q2 | Not TGA process | Baseline | Preparation |
| DS-0780 |  | Detailed Design & IFC Submission to SAR - Substation & SEC Works | 3d | 2027-08-17 | 2027-08-19 | DS-0770 | 5d | 0d | PERFORMANCE - Progress Value (SAR, planned earned value) [3725.31 SAR]; CASH FLOW - Invoiced Cash (SAR, net of advance recovery) [3352.78 SAR]; MEP Design Engineer [24 h]; Structural Engineer [24 h]; CAD / BIM Technician [24 h] | 7,078.09 | Phase 1 | Phase 1 (Billing) | 4.1 | Design | N/A | Contractor | Ancillary Buildings | 4.1 Substation & SEC | Design - MEP | Detailed & IFC | N/A | N/A | Engineering & Design | On completion | Near-critical (1-30 d) | Design & approvals g | None | Substation & Utiliti | No site crew | 2027-08 | 2027-08 | 2027-Q3 | Not TGA process | Baseline | Submission |
| DS-2780 |  | Detailed Design & IFC Review & Approval by SAR - Substation & SEC Works | 28d | 2027-08-20 | 2027-09-16 | DS-0780 | 5d | 0d | PERFORMANCE - Progress Value (SAR, planned earned value) [34769.6 SAR]; CASH FLOW - Invoiced Cash (SAR, net of advance recovery) [31292.6 SAR] | 66,062.22 | Phase 1 | Phase 1 (Billing) | 4.1 | Design | N/A | SAR | Ancillary Buildings | 4.1 Substation & SEC | Design - MEP | Detailed & IFC | N/A | N/A | Engineering & Design | On completion | Near-critical (1-30 d) | Design & approvals g | SAR dependency | Substation & Utiliti | No site crew | 2027-08 | 2027-09 | 2027-Q3 | Not TGA process | Baseline | Review / Approval |
|  | 02 | **Firefighting Building (BOQ GEA 518 m²)** |  | 2027-04-29 | 2027-09-11 |  |  |  |  |  |  |  |  |  |  |  |  |  |  |  |  |  |  |  |  |  |  |  |  |  |  |  |  |  |  |
| DS-0790 |  | Detailed Design & IFC Development - Firefighting Building | 99d | 2027-04-29 | 2027-08-11 | DS-0360 | 10d | 0d | PERFORMANCE - Progress Value (SAR, planned earned value) [66770.2 SAR]; CASH FLOW - Invoiced Cash (SAR, net of advance recovery) [60093.2 SAR]; Architect / Building Design Engineer [1584 h]; Structural Engineer [1584 h]; MEP Design Engineer [1584 h]; CAD / BIM Technician [1584 h] | 126,863.38 | Phase 1 | Phase 1 (Billing) | 4.2 | Design | N/A | Contractor | Ancillary Buildings | 4.2 Firefighting Bld | Design - Architectur | Detailed & IFC | N/A | N/A | Engineering & Design | On completion | Near-critical (1-30 d) | Design & approvals g | None | Station Building Zon | No site crew | 2027-04 | 2027-08 | 2027-Q2 | Not TGA process | Baseline | Preparation |
| DS-0800 |  | Detailed Design & IFC Submission to SAR - Firefighting Building | 3d | 2027-08-12 | 2027-08-14 | DS-0790 | 10d | 0d | PERFORMANCE - Progress Value (SAR, planned earned value) [1525.29 SAR]; CASH FLOW - Invoiced Cash (SAR, net of advance recovery) [1372.76 SAR]; Architect / Building Design Engineer [24 h]; Structural Engineer [24 h]; MEP Design Engineer [24 h]; CAD / BIM Technician [24 h] | 2,898.05 | Phase 1 | Phase 1 (Billing) | 4.2 | Design | N/A | Contractor | Ancillary Buildings | 4.2 Firefighting Bld | Design - Architectur | Detailed & IFC | N/A | N/A | Engineering & Design | On completion | Near-critical (1-30 d) | Design & approvals g | None | Station Building Zon | No site crew | 2027-08 | 2027-08 | 2027-Q3 | Not TGA process | Baseline | Submission |
| DS-2800 |  | Detailed Design & IFC Review & Approval by SAR - Firefighting Building | 28d | 2027-08-15 | 2027-09-11 | DS-0800 | 10d | 0d | PERFORMANCE - Progress Value (SAR, planned earned value) [14236 SAR]; CASH FLOW - Invoiced Cash (SAR, net of advance recovery) [12812.4 SAR] | 27,048.42 | Phase 1 | Phase 1 (Billing) | 4.2 | Design | N/A | SAR | Ancillary Buildings | 4.2 Firefighting Bld | Design - Architectur | Detailed & IFC | N/A | N/A | Engineering & Design | On completion | Near-critical (1-30 d) | Design & approvals g | SAR dependency | Station Building Zon | No site crew | 2027-08 | 2027-09 | 2027-Q3 | Not TGA process | Baseline | Review / Approval |
|  | 03 | **Generator Room (BOQ 62 m²)** |  | 2027-04-29 | 2027-08-26 |  |  |  |  |  |  |  |  |  |  |  |  |  |  |  |  |  |  |  |  |  |  |  |  |  |  |  |  |  |  |
| DS-0810 |  | Detailed Design & IFC Development - Generator Room | 83d | 2027-04-29 | 2027-07-26 | DS-0360 | 26d | 0d | PERFORMANCE - Progress Value (SAR, planned earned value) [43786.6 SAR]; CASH FLOW - Invoiced Cash (SAR, net of advance recovery) [39407.9 SAR]; MEP Design Engineer [1328 h]; Structural Engineer [1328 h]; CAD / BIM Technician [1328 h] | 83,194.54 | Phase 2 | Phase 2 (Billing) | 4.3 | Design | N/A | Contractor | Ancillary Buildings | 4.3 Generator Room | Design - MEP | Detailed & IFC | N/A | N/A | Engineering & Design | On completion | Near-critical (1-30 d) | Design & approvals g | None | Substation & Utiliti | No site crew | 2027-04 | 2027-07 | 2027-Q2 | Not TGA process | Baseline | Preparation |
| DS-0820 |  | Detailed Design & IFC Submission to SAR - Generator Room | 3d | 2027-07-27 | 2027-07-29 | DS-0810 | 26d | 0d | PERFORMANCE - Progress Value (SAR, planned earned value) [999.47 SAR]; CASH FLOW - Invoiced Cash (SAR, net of advance recovery) [899.52 SAR]; MEP Design Engineer [24 h]; Structural Engineer [24 h]; CAD / BIM Technician [24 h] | 1,898.99 | Phase 2 | Phase 2 (Billing) | 4.3 | Design | N/A | Contractor | Ancillary Buildings | 4.3 Generator Room | Design - MEP | Detailed & IFC | N/A | N/A | Engineering & Design | On completion | Near-critical (1-30 d) | Design & approvals g | None | Substation & Utiliti | No site crew | 2027-07 | 2027-07 | 2027-Q3 | Not TGA process | Baseline | Submission |
| DS-2820 |  | Detailed Design & IFC Review & Approval by SAR - Generator Room | 28d | 2027-07-30 | 2027-08-26 | DS-0820 | 26d | 0d | PERFORMANCE - Progress Value (SAR, planned earned value) [9328.43 SAR]; CASH FLOW - Invoiced Cash (SAR, net of advance recovery) [8395.59 SAR] | 17,724.02 | Phase 2 | Phase 2 (Billing) | 4.3 | Design | N/A | SAR | Ancillary Buildings | 4.3 Generator Room | Design - MEP | Detailed & IFC | N/A | N/A | Engineering & Design | On completion | Near-critical (1-30 d) | Design & approvals g | SAR dependency | Substation & Utiliti | No site crew | 2027-07 | 2027-08 | 2027-Q3 | Not TGA process | Baseline | Review / Approval |
|  | 04 | **Underground Water Tank** |  | 2027-04-29 | 2027-08-26 |  |  |  |  |  |  |  |  |  |  |  |  |  |  |  |  |  |  |  |  |  |  |  |  |  |  |  |  |  |  |
| DS-0830 |  | Detailed Design & IFC Development - Underground Water Tank | 83d | 2027-04-29 | 2027-07-26 | DS-0360 | 26d | 0d | PERFORMANCE - Progress Value (SAR, planned earned value) [103293 SAR]; CASH FLOW - Invoiced Cash (SAR, net of advance recovery) [92963.8 SAR]; Structural Engineer [1328 h]; MEP Design Engineer [1328 h]; CAD / BIM Technician [1328 h] | 196,256.89 | Phase 1 | Phase 1 (Billing) | 4.4 | Design | N/A | Contractor | Ancillary Buildings | 4.4 UG Water Tank | Design - Structure | Detailed & IFC | N/A | N/A | Engineering & Design | On completion | Near-critical (1-30 d) | Design & approvals g | None | Substation & Utiliti | No site crew | 2027-04 | 2027-07 | 2027-Q2 | Not TGA process | Baseline | Preparation |
| DS-0840 |  | Detailed Design & IFC Submission to SAR - Underground Water Tank | 3d | 2027-07-27 | 2027-07-29 | DS-0830 | 26d | 0d | PERFORMANCE - Progress Value (SAR, planned earned value) [2358.04 SAR]; CASH FLOW - Invoiced Cash (SAR, net of advance recovery) [2122.24 SAR]; Structural Engineer [24 h]; MEP Design Engineer [24 h]; CAD / BIM Technician [24 h] | 4,480.28 | Phase 1 | Phase 1 (Billing) | 4.4 | Design | N/A | Contractor | Ancillary Buildings | 4.4 UG Water Tank | Design - Structure | Detailed & IFC | N/A | N/A | Engineering & Design | On completion | Near-critical (1-30 d) | Design & approvals g | None | Substation & Utiliti | No site crew | 2027-07 | 2027-07 | 2027-Q3 | Not TGA process | Baseline | Submission |
| DS-2840 |  | Detailed Design & IFC Review & Approval by SAR - Underground Water Tank | 28d | 2027-07-30 | 2027-08-26 | DS-0840 | 26d | 0d | PERFORMANCE - Progress Value (SAR, planned earned value) [22008.4 SAR]; CASH FLOW - Invoiced Cash (SAR, net of advance recovery) [19807.5 SAR] | 41,815.88 | Phase 1 | Phase 1 (Billing) | 4.4 | Design | N/A | SAR | Ancillary Buildings | 4.4 UG Water Tank | Design - Structure | Detailed & IFC | N/A | N/A | Engineering & Design | On completion | Near-critical (1-30 d) | Design & approvals g | SAR dependency | Substation & Utiliti | No site crew | 2027-07 | 2027-08 | 2027-Q3 | Not TGA process | Baseline | Review / Approval |
|  | 04 | **External Works** |  | 2027-04-29 | 2027-09-21 |  |  |  |  |  |  |  |  |  |  |  |  |  |  |  |  |  |  |  |  |  |  |  |  |  |  |  |  |  |  |
|  | 01 | **Site Works and Underground Utilities** |  | 2027-04-29 | 2027-09-21 |  |  |  |  |  |  |  |  |  |  |  |  |  |  |  |  |  |  |  |  |  |  |  |  |  |  |  |  |  |  |
| DS-0850 |  | Detailed Design & IFC Development - Site Works & Underground Utilities | 109d | 2027-04-29 | 2027-08-21 | DS-0360 | 0d |  | PERFORMANCE - Progress Value (SAR, planned earned value) [481428 SAR]; CASH FLOW - Invoiced Cash (SAR, net of advance recovery) [433285 SAR]; Civil / Roads / Drainage Engineer [2616 h]; MEP Design Engineer [2616 h]; CAD / BIM Technician [1744 h] | 914,712.44 | Phase 1 | Phase 1 (Billing) | 5.1 | Design | N/A | Contractor | External Works | 5.1 Site Works & Uti | Design - Civil & Roa | Detailed & IFC | N/A | N/A | Engineering & Design | On completion | Critical (0 d) | Longest path | None | Substation & Utiliti | No site crew | 2027-04 | 2027-08 | 2027-Q2 | Not TGA process | Baseline | Preparation |
| DS-0860 |  | Detailed Design & IFC Submission to SAR - Site Works & Underground Utilities | 3d | 2027-08-22 | 2027-08-24 | DS-0850 | 0d |  | PERFORMANCE - Progress Value (SAR, planned earned value) [10989.4 SAR]; CASH FLOW - Invoiced Cash (SAR, net of advance recovery) [9890.44 SAR]; Civil / Roads / Drainage Engineer [48 h]; MEP Design Engineer [48 h]; CAD / BIM Technician [24 h] | 20,879.82 | Phase 1 | Phase 1 (Billing) | 5.1 | Design | N/A | Contractor | External Works | 5.1 Site Works & Uti | Design - Civil & Roa | Detailed & IFC | N/A | N/A | Engineering & Design | On completion | Critical (0 d) | Longest path | None | Substation & Utiliti | No site crew | 2027-08 | 2027-08 | 2027-Q3 | Not TGA process | Baseline | Submission |
| DS-2860 |  | Detailed Design & IFC Review & Approval by SAR - Site Works & Underground Utilities | 28d | 2027-08-25 | 2027-09-21 | DS-0860 | 0d |  | PERFORMANCE - Progress Value (SAR, planned earned value) [102568 SAR]; CASH FLOW - Invoiced Cash (SAR, net of advance recovery) [92310.8 SAR] | 194,878.29 | Phase 1 | Phase 1 (Billing) | 5.1 | Design | N/A | SAR | External Works | 5.1 Site Works & Uti | Design - Civil & Roa | Detailed & IFC | N/A | N/A | Engineering & Design | On completion | Critical (0 d) | Longest path | SAR dependency | Substation & Utiliti | No site crew | 2027-08 | 2027-09 | 2027-Q3 | Not TGA process | Baseline | Review / Approval |

| ID | WBS | Activity | Duration | Start | Finish | Predecessors | Total float | Free float | Resources | Cost | Phase | Contract Phase | BOQ Ref | Stage | Lead Class | Responsibility | Package Group | Work Package | Discipline | Design Stage | Procurement Step | Milestone Type | Cost Component | Payment Basis | Path Class | Critical Driver | Risk Flag | Work Zone | Crew Size Class | Start Month | Finish Month | Start Quarter | TGA Process | Duration Basis | Submit / Review |
| --- | --- | --- | --- | --- | --- | --- | --- | --- | --- | --- | --- | --- | --- | --- | --- | --- | --- | --- | --- | --- | --- | --- | --- | --- | --- | --- | --- | --- | --- | --- | --- | --- | --- | --- | --- |
|  | 02 | **Car Parking Sheds (BOQ 1,375 m²)** |  | 2027-04-29 | 2027-08-26 |  |  |  |  |  |  |  |  |  |  |  |  |  |  |  |  |  |  |  |  |  |  |  |  |  |  |  |  |  |  |
| DS-0870 |  | Detailed Design & IFC Development - Car Parking Sheds | 83d | 2027-04-29 | 2027-07-26 | DS-0360 | 26d | 0d | PERFORMANCE - Progress Value (SAR, planned earned value) [35375.4 SAR]; CASH FLOW - Invoiced Cash (SAR, net of advance recovery) [31837.9 SAR]; Structural Engineer [1328 h]; Architect / Building Design Engineer [1328 h]; CAD / BIM Technician [1328 h] | 67,213.26 | Phase 1 | Phase 1 (Billing) | 5.2 | Design | N/A | Contractor | External Works | 5.2 Car Parking Shed | Design - Civil & Roa | Detailed & IFC | N/A | N/A | Engineering & Design | On completion | Near-critical (1-30 d) | Design & approvals g | None | Site & External Zone | No site crew | 2027-04 | 2027-07 | 2027-Q2 | Not TGA process | Baseline | Preparation |
| DS-0880 |  | Detailed Design & IFC Submission to SAR - Car Parking Sheds | 3d | 2027-07-27 | 2027-07-29 | DS-0870 | 26d | 0d | PERFORMANCE - Progress Value (SAR, planned earned value) [808.07 SAR]; CASH FLOW - Invoiced Cash (SAR, net of advance recovery) [727.26 SAR]; Structural Engineer [24 h]; Architect / Building Design Engineer [24 h]; CAD / BIM Technician [24 h] | 1,535.33 | Phase 1 | Phase 1 (Billing) | 5.2 | Design | N/A | Contractor | External Works | 5.2 Car Parking Shed | Design - Civil & Roa | Detailed & IFC | N/A | N/A | Engineering & Design | On completion | Near-critical (1-30 d) | Design & approvals g | None | Site & External Zone | No site crew | 2027-07 | 2027-07 | 2027-Q3 | Not TGA process | Baseline | Submission |
| DS-2880 |  | Detailed Design & IFC Review & Approval by SAR - Car Parking Sheds | 28d | 2027-07-30 | 2027-08-26 | DS-0880 | 26d | 0d | PERFORMANCE - Progress Value (SAR, planned earned value) [7542.03 SAR]; CASH FLOW - Invoiced Cash (SAR, net of advance recovery) [6787.83 SAR] | 14,329.86 | Phase 1 | Phase 1 (Billing) | 5.2 | Design | N/A | SAR | External Works | 5.2 Car Parking Shed | Design - Civil & Roa | Detailed & IFC | N/A | N/A | Engineering & Design | On completion | Near-critical (1-30 d) | Design & approvals g | SAR dependency | Site & External Zone | No site crew | 2027-07 | 2027-08 | 2027-Q3 | Not TGA process | Baseline | Review / Approval |
|  | 03 | **Fence Works (BOQ 500 m)** |  | 2027-04-29 | 2027-08-05 |  |  |  |  |  |  |  |  |  |  |  |  |  |  |  |  |  |  |  |  |  |  |  |  |  |  |  |  |  |  |
| DS-0890 |  | Detailed Design & IFC Development - Fence Works | 62d | 2027-04-29 | 2027-07-05 | DS-0360 | 47d | 0d | PERFORMANCE - Progress Value (SAR, planned earned value) [8411.2 SAR]; CASH FLOW - Invoiced Cash (SAR, net of advance recovery) [7570.08 SAR]; Civil / Roads / Drainage Engineer [992 h]; CAD / BIM Technician [992 h] | 15,981.28 | Phase 1 | Phase 1 (Billing) | 5.3 | Design | N/A | Contractor | External Works | 5.3 Fence Works | Design - Civil & Roa | Detailed & IFC | N/A | N/A | Engineering & Design | On completion | Float 31-90 d | Design & approvals g | None | Site & External Zone | No site crew | 2027-04 | 2027-07 | 2027-Q2 | Not TGA process | Baseline | Preparation |
| DS-0900 |  | Detailed Design & IFC Submission to SAR - Fence Works | 3d | 2027-07-06 | 2027-07-08 | DS-0890 | 47d | 0d | PERFORMANCE - Progress Value (SAR, planned earned value) [191.4 SAR]; CASH FLOW - Invoiced Cash (SAR, net of advance recovery) [172.26 SAR]; Civil / Roads / Drainage Engineer [24 h]; CAD / BIM Technician [24 h] | 363.66 | Phase 1 | Phase 1 (Billing) | 5.3 | Design | N/A | Contractor | External Works | 5.3 Fence Works | Design - Civil & Roa | Detailed & IFC | N/A | N/A | Engineering & Design | On completion | Float 31-90 d | Design & approvals g | None | Site & External Zone | No site crew | 2027-07 | 2027-07 | 2027-Q3 | Not TGA process | Baseline | Submission |
| DS-2900 |  | Detailed Design & IFC Review & Approval by SAR - Fence Works | 28d | 2027-07-09 | 2027-08-05 | DS-0900 | 47d | 0d | PERFORMANCE - Progress Value (SAR, planned earned value) [1786.4 SAR]; CASH FLOW - Invoiced Cash (SAR, net of advance recovery) [1607.76 SAR] | 3,394.16 | Phase 1 | Phase 1 (Billing) | 5.3 | Design | N/A | SAR | External Works | 5.3 Fence Works | Design - Civil & Roa | Detailed & IFC | N/A | N/A | Engineering & Design | On completion | Float 31-90 d | Design & approvals g | SAR dependency | Site & External Zone | No site crew | 2027-07 | 2027-08 | 2027-Q3 | Not TGA process | Baseline | Review / Approval |
|  | 04 | **Automatic Gate System (BOQ 2 no)** |  | 2027-04-29 | 2027-08-05 |  |  |  |  |  |  |  |  |  |  |  |  |  |  |  |  |  |  |  |  |  |  |  |  |  |  |  |  |  |  |
| DS-0910 |  | Detailed Design & IFC Development - Automatic Gate System | 62d | 2027-04-29 | 2027-07-05 | DS-0360 | 47d | 0d | PERFORMANCE - Progress Value (SAR, planned earned value) [12616.8 SAR]; CASH FLOW - Invoiced Cash (SAR, net of advance recovery) [11355.1 SAR]; MEP Design Engineer [992 h]; CAD / BIM Technician [992 h] | 23,971.92 | Phase 1 | Phase 1 (Billing) | 5.4 | Design | N/A | Contractor | External Works | 5.4 Automatic Gate | Design - MEP | Detailed & IFC | N/A | N/A | Engineering & Design | On completion | Float 31-90 d | Design & approvals g | None | Site & External Zone | No site crew | 2027-04 | 2027-07 | 2027-Q2 | Not TGA process | Baseline | Preparation |
| DS-0920 |  | Detailed Design & IFC Submission to SAR - Automatic Gate System | 3d | 2027-07-06 | 2027-07-08 | DS-0910 | 47d | 0d | PERFORMANCE - Progress Value (SAR, planned earned value) [287.1 SAR]; CASH FLOW - Invoiced Cash (SAR, net of advance recovery) [258.39 SAR]; MEP Design Engineer [24 h]; CAD / BIM Technician [24 h] | 545.49 | Phase 1 | Phase 1 (Billing) | 5.4 | Design | N/A | Contractor | External Works | 5.4 Automatic Gate | Design - MEP | Detailed & IFC | N/A | N/A | Engineering & Design | On completion | Float 31-90 d | Design & approvals g | None | Site & External Zone | No site crew | 2027-07 | 2027-07 | 2027-Q3 | Not TGA process | Baseline | Submission |
| DS-2920 |  | Detailed Design & IFC Review & Approval by SAR - Automatic Gate System | 28d | 2027-07-09 | 2027-08-05 | DS-0920 | 47d | 0d | PERFORMANCE - Progress Value (SAR, planned earned value) [2679.6 SAR]; CASH FLOW - Invoiced Cash (SAR, net of advance recovery) [2411.64 SAR] | 5,091.24 | Phase 1 | Phase 1 (Billing) | 5.4 | Design | N/A | SAR | External Works | 5.4 Automatic Gate | Design - MEP | Detailed & IFC | N/A | N/A | Engineering & Design | On completion | Float 31-90 d | Design & approvals g | SAR dependency | Site & External Zone | No site crew | 2027-07 | 2027-08 | 2027-Q3 | Not TGA process | Baseline | Review / Approval |
|  | 05 | **Road Works** |  | 2027-04-29 | 2027-09-16 |  |  |  |  |  |  |  |  |  |  |  |  |  |  |  |  |  |  |  |  |  |  |  |  |  |  |  |  |  |  |
|  | 01 | **Access Road (BOQ ~1,700 m dual carriageway)** |  | 2027-04-29 | 2027-09-11 |  |  |  |  |  |  |  |  |  |  |  |  |  |  |  |  |  |  |  |  |  |  |  |  |  |  |  |  |  |  |
| DS-0930 |  | Detailed Design & IFC Development - Access Road | 99d | 2027-04-29 | 2027-08-11 | DS-0360 | 10d | 0d | PERFORMANCE - Progress Value (SAR, planned earned value) [450483 SAR]; CASH FLOW - Invoiced Cash (SAR, net of advance recovery) [405435 SAR]; Civil / Roads / Drainage Engineer [2376 h]; CAD / BIM Technician [1584 h] | 855,917.32 | Phase 2 | Phase 2 (Billing) | 6.1 | Design | N/A | Contractor | Road Works | 6.1 Access Road | Design - Civil & Roa | Detailed & IFC | N/A | N/A | Engineering & Design | On completion | Near-critical (1-30 d) | Design & approvals g | None | Road Zone | No site crew | 2027-04 | 2027-08 | 2027-Q2 | Not TGA process | Baseline | Preparation |
| DS-0940 |  | Detailed Design & IFC Submission to SAR - Access Road | 3d | 2027-08-12 | 2027-08-14 | DS-0930 | 10d | 0d | PERFORMANCE - Progress Value (SAR, planned earned value) [10281.8 SAR]; CASH FLOW - Invoiced Cash (SAR, net of advance recovery) [9253.66 SAR]; Civil / Roads / Drainage Engineer [48 h]; CAD / BIM Technician [24 h] | 19,535.5 | Phase 2 | Phase 2 (Billing) | 6.1 | Design | N/A | Contractor | Road Works | 6.1 Access Road | Design - Civil & Roa | Detailed & IFC | N/A | N/A | Engineering & Design | On completion | Near-critical (1-30 d) | Design & approvals g | None | Road Zone | No site crew | 2027-08 | 2027-08 | 2027-Q3 | Not TGA process | Baseline | Submission |
| DS-2940 |  | Detailed Design & IFC Review & Approval by SAR - Access Road | 28d | 2027-08-15 | 2027-09-11 | DS-0940 | 10d | 0d | PERFORMANCE - Progress Value (SAR, planned earned value) [95963.9 SAR]; CASH FLOW - Invoiced Cash (SAR, net of advance recovery) [86367.5 SAR] | 182,331.33 | Phase 2 | Phase 2 (Billing) | 6.1 | Design | N/A | SAR | Road Works | 6.1 Access Road | Design - Civil & Roa | Detailed & IFC | N/A | N/A | Engineering & Design | On completion | Near-critical (1-30 d) | Design & approvals g | SAR dependency | Road Zone | No site crew | 2027-08 | 2027-09 | 2027-Q3 | Not TGA process | Baseline | Review / Approval |
|  | 02 | **External Works (All works above ground)** |  | 2027-04-29 | 2027-09-16 |  |  |  |  |  |  |  |  |  |  |  |  |  |  |  |  |  |  |  |  |  |  |  |  |  |  |  |  |  |  |
| DS-0950 |  | Detailed Design & IFC Development - External Works (Above Ground) | 104d | 2027-04-29 | 2027-08-16 | DS-0360 | 5d | 0d | PERFORMANCE - Progress Value (SAR, planned earned value) [397835 SAR]; CASH FLOW - Invoiced Cash (SAR, net of advance recovery) [358052 SAR]; Civil / Roads / Drainage Engineer [2496 h]; MEP Design Engineer [2496 h]; CAD / BIM Technician [1664 h] | 755,886.5 | Phase 1 | Phase 1 (Billing) | 6.3 | Design | N/A | Contractor | Road Works | 6.3 External Works | Design - Civil & Roa | Detailed & IFC | N/A | N/A | Engineering & Design | On completion | Near-critical (1-30 d) | Design & approvals g | None | Site & External Zone | No site crew | 2027-04 | 2027-08 | 2027-Q2 | Not TGA process | Baseline | Preparation |
| DS-0960 |  | Detailed Design & IFC Submission to SAR - External Works (Above Ground) | 3d | 2027-08-17 | 2027-08-19 | DS-0950 | 5d | 0d | PERFORMANCE - Progress Value (SAR, planned earned value) [9081.29 SAR]; CASH FLOW - Invoiced Cash (SAR, net of advance recovery) [8173.16 SAR]; Civil / Roads / Drainage Engineer [48 h]; MEP Design Engineer [48 h]; CAD / BIM Technician [24 h] | 17,254.45 | Phase 1 | Phase 1 (Billing) | 6.3 | Design | N/A | Contractor | Road Works | 6.3 External Works | Design - Civil & Roa | Detailed & IFC | N/A | N/A | Engineering & Design | On completion | Near-critical (1-30 d) | Design & approvals g | None | Site & External Zone | No site crew | 2027-08 | 2027-08 | 2027-Q3 | Not TGA process | Baseline | Submission |
| DS-2960 |  | Detailed Design & IFC Review & Approval by SAR - External Works (Above Ground) | 28d | 2027-08-20 | 2027-09-16 | DS-0960 | 5d | 0d | PERFORMANCE - Progress Value (SAR, planned earned value) [84758.7 SAR]; CASH FLOW - Invoiced Cash (SAR, net of advance recovery) [76282.8 SAR] | 161,041.55 | Phase 1 | Phase 1 (Billing) | 6.3 | Design | N/A | SAR | Road Works | 6.3 External Works | Design - Civil & Roa | Detailed & IFC | N/A | N/A | Engineering & Design | On completion | Near-critical (1-30 d) | Design & approvals g | SAR dependency | Site & External Zone | No site crew | 2027-08 | 2027-09 | 2027-Q3 | Not TGA process | Baseline | Review / Approval |
|  | 06 | **Railway Systems** |  | 2027-04-29 | 2027-09-21 |  |  |  |  |  |  |  |  |  |  |  |  |  |  |  |  |  |  |  |  |  |  |  |  |  |  |  |  |  |  |
|  | 01 | **Signalling and Telecommunication** |  | 2027-04-29 | 2027-09-21 |  |  |  |  |  |  |  |  |  |  |  |  |  |  |  |  |  |  |  |  |  |  |  |  |  |  |  |  |  |  |
| DS-0970 |  | Detailed Design & IFC Development - Signalling & Telecommunication | 109d | 2027-04-29 | 2027-08-21 | DS-0360 | 0d |  | PERFORMANCE - Progress Value (SAR, planned earned value) [657924 SAR]; CASH FLOW - Invoiced Cash (SAR, net of advance recovery) [592132 SAR]; Signalling & Telecom Engineer [2616 h]; Railway Track & Systems Engineer [2616 h]; CAD / BIM Technician [1744 h] | 1,250,055.6 | Phase 1 | Phase 1 (Billing) | 6.2 | Design | N/A | Contractor | Railway Systems | 6.2 Signalling & Tel | Design - Railway & S | Detailed & IFC | N/A | N/A | Engineering & Design | On completion | Critical (0 d) | Design & approvals g | None | Track Zone | No site crew | 2027-04 | 2027-08 | 2027-Q2 | Not TGA process | Baseline | Preparation |
| DS-0980 |  | Detailed Design & IFC Submission to SAR - Signalling & Telecommunication | 3d | 2027-08-22 | 2027-08-24 | DS-0970 | 0d |  | PERFORMANCE - Progress Value (SAR, planned earned value) [15016.3 SAR]; CASH FLOW - Invoiced Cash (SAR, net of advance recovery) [13514.7 SAR]; Signalling & Telecom Engineer [48 h]; Railway Track & Systems Engineer [48 h]; CAD / BIM Technician [24 h] | 28,530.99 | Phase 1 | Phase 1 (Billing) | 6.2 | Design | N/A | Contractor | Railway Systems | 6.2 Signalling & Tel | Design - Railway & S | Detailed & IFC | N/A | N/A | Engineering & Design | On completion | Critical (0 d) | Design & approvals g | None | Track Zone | No site crew | 2027-08 | 2027-08 | 2027-Q3 | Not TGA process | Baseline | Submission |
| DS-2980 |  | Detailed Design & IFC Review & Approval by SAR - Signalling & Telecommunication | 28d | 2027-08-25 | 2027-09-21 | DS-0980 | 0d |  | PERFORMANCE - Progress Value (SAR, planned earned value) [140152 SAR]; CASH FLOW - Invoiced Cash (SAR, net of advance recovery) [126137 SAR] | 266,289.16 | Phase 1 | Phase 1 (Billing) | 6.2 | Design | N/A | SAR | Railway Systems | 6.2 Signalling & Tel | Design - Railway & S | Detailed & IFC | N/A | N/A | Engineering & Design | On completion | Critical (0 d) | Design & approvals g | SAR dependency | Track Zone | No site crew | 2027-08 | 2027-09 | 2027-Q3 | Not TGA process | Baseline | Review / Approval |

| ID | WBS | Activity | Duration | Start | Finish | Predecessors | Total float | Free float | Resources | Cost | Phase | Contract Phase | BOQ Ref | Stage | Lead Class | Responsibility | Package Group | Work Package | Discipline | Design Stage | Procurement Step | Milestone Type | Cost Component | Payment Basis | Path Class | Critical Driver | Risk Flag | Work Zone | Crew Size Class | Start Month | Finish Month | Start Quarter | TGA Process | Duration Basis | Submit / Review |
| --- | --- | --- | --- | --- | --- | --- | --- | --- | --- | --- | --- | --- | --- | --- | --- | --- | --- | --- | --- | --- | --- | --- | --- | --- | --- | --- | --- | --- | --- | --- | --- | --- | --- | --- | --- |
|  | 02 | **Railway Track Works (BOQ 2,500 m loop line)** |  | 2027-04-29 | 2027-09-21 |  |  |  |  |  |  |  |  |  |  |  |  |  |  |  |  |  |  |  |  |  |  |  |  |  |  |  |  |  |  |
| DS-0990 |  | Detailed Design & IFC Development - Railway Track Works | 109d | 2027-04-29 | 2027-08-21 | DS-0360 | 0d |  | PERFORMANCE - Progress Value (SAR, planned earned value) [966005 SAR]; CASH FLOW - Invoiced Cash (SAR, net of advance recovery) [869405 SAR]; Railway Track & Systems Engineer [2616 h]; Civil / Roads / Drainage Engineer [2616 h]; CAD / BIM Technician [1744 h] | 1,835,409.88 | Phase 2 | Phase 2 (Billing) | 7.2 | Design | N/A | Contractor | Railway Systems | 7.2 Railway Track | Design - Railway & S | Detailed & IFC | N/A | N/A | Engineering & Design | On completion | Critical (0 d) | Design & approvals g | None | Track Zone | No site crew | 2027-04 | 2027-08 | 2027-Q2 | Not TGA process | Baseline | Preparation |
| DS-1000 |  | Detailed Design & IFC Submission to SAR - Railway Track Works | 3d | 2027-08-22 | 2027-08-24 | DS-0990 | 0d |  | PERFORMANCE - Progress Value (SAR, planned earned value) [22046.5 SAR]; CASH FLOW - Invoiced Cash (SAR, net of advance recovery) [19841.8 SAR]; Railway Track & Systems Engineer [48 h]; Civil / Roads / Drainage Engineer [48 h]; CAD / BIM Technician [24 h] | 41,888.35 | Phase 2 | Phase 2 (Billing) | 7.2 | Design | N/A | Contractor | Railway Systems | 7.2 Railway Track | Design - Railway & S | Detailed & IFC | N/A | N/A | Engineering & Design | On completion | Critical (0 d) | Design & approvals g | None | Track Zone | No site crew | 2027-08 | 2027-08 | 2027-Q3 | Not TGA process | Baseline | Submission |
| DS-3000 |  | Detailed Design & IFC Review & Approval by SAR - Railway Track Works | 28d | 2027-08-25 | 2027-09-21 | DS-1000 | 0d |  | PERFORMANCE - Progress Value (SAR, planned earned value) [205767 SAR]; CASH FLOW - Invoiced Cash (SAR, net of advance recovery) [185191 SAR] | 390,957.87 | Phase 2 | Phase 2 (Billing) | 7.2 | Design | N/A | SAR | Railway Systems | 7.2 Railway Track | Design - Railway & S | Detailed & IFC | N/A | N/A | Engineering & Design | On completion | Critical (0 d) | Design & approvals g | SAR dependency | Track Zone | No site crew | 2027-08 | 2027-09 | 2027-Q3 | Not TGA process | Baseline | Review / Approval |
|  | 03 | **Railway Turnout Works** |  | 2027-04-29 | 2027-09-16 |  |  |  |  |  |  |  |  |  |  |  |  |  |  |  |  |  |  |  |  |  |  |  |  |  |  |  |  |  |  |
| DS-1010 |  | Detailed Design & IFC Development - Railway Turnout Works | 104d | 2027-04-29 | 2027-08-16 | DS-0360 | 5d | 0d | PERFORMANCE - Progress Value (SAR, planned earned value) [398038 SAR]; CASH FLOW - Invoiced Cash (SAR, net of advance recovery) [358234 SAR]; Railway Track & Systems Engineer [2496 h]; CAD / BIM Technician [1664 h] | 756,271.25 | Phase 1 | Phase 1 (Billing) | 7.3 | Design | N/A | Contractor | Railway Systems | 7.3 Railway Turnouts | Design - Railway & S | Detailed & IFC | N/A | N/A | Engineering & Design | On completion | Near-critical (1-30 d) | Design & approvals g | None | Track Zone | No site crew | 2027-04 | 2027-08 | 2027-Q2 | Not TGA process | Baseline | Preparation |
| DS-1020 |  | Detailed Design & IFC Submission to SAR - Railway Turnout Works | 3d | 2027-08-17 | 2027-08-19 | DS-1010 | 5d | 0d | PERFORMANCE - Progress Value (SAR, planned earned value) [9085.65 SAR]; CASH FLOW - Invoiced Cash (SAR, net of advance recovery) [8177.09 SAR]; Railway Track & Systems Engineer [48 h]; CAD / BIM Technician [24 h] | 17,262.74 | Phase 1 | Phase 1 (Billing) | 7.3 | Design | N/A | Contractor | Railway Systems | 7.3 Railway Turnouts | Design - Railway & S | Detailed & IFC | N/A | N/A | Engineering & Design | On completion | Near-critical (1-30 d) | Design & approvals g | None | Track Zone | No site crew | 2027-08 | 2027-08 | 2027-Q3 | Not TGA process | Baseline | Submission |
| DS-3020 |  | Detailed Design & IFC Review & Approval by SAR - Railway Turnout Works | 28d | 2027-08-20 | 2027-09-16 | DS-1020 | 5d | 0d | PERFORMANCE - Progress Value (SAR, planned earned value) [84799.4 SAR]; CASH FLOW - Invoiced Cash (SAR, net of advance recovery) [76319.4 SAR] | 161,118.77 | Phase 1 | Phase 1 (Billing) | 7.3 | Design | N/A | SAR | Railway Systems | 7.3 Railway Turnouts | Design - Railway & S | Detailed & IFC | N/A | N/A | Engineering & Design | On completion | Near-critical (1-30 d) | Design & approvals g | SAR dependency | Track Zone | No site crew | 2027-08 | 2027-09 | 2027-Q3 | Not TGA process | Baseline | Review / Approval |
|  | 04 | **Procurement** |  | 2027-05-21 | 2028-08-09 |  |  |  |  |  |  |  |  |  |  |  |  |  |  |  |  |  |  |  |  |  |  |  |  |  |  |  |  |  |  |
|  | 01 | **Prequalification** |  | 2027-05-21 | 2027-10-07 |  |  |  |  |  |  |  |  |  |  |  |  |  |  |  |  |  |  |  |  |  |  |  |  |  |  |  |  |  |  |
|  | 01 | **Main Building** |  | 2027-05-21 | 2027-10-07 |  |  |  |  |  |  |  |  |  |  |  |  |  |  |  |  |  |  |  |  |  |  |  |  |  |  |  |  |  |  |
|  | 01 | **Main Building (GEA 1,100 m², single storey)** |  | 2027-05-21 | 2027-06-03 |  |  |  |  |  |  |  |  |  |  |  |  |  |  |  |  |  |  |  |  |  |  |  |  |  |  |  |  |  |  |
| PC-0010 |  | Prequalification of Vendors / Subcontractors - Main Building | 14d | 2027-05-21 | 2027-06-03 | MS-0050 | 277d | 0d | PERFORMANCE - Progress Value (SAR, planned earned value) [45000 SAR]; CASH FLOW - Invoiced Cash (SAR, net of advance recovery) [40500 SAR]; Procurement / Contracts Engineer [112 h] | 85,500 | Phase 1 | Phase 1 (Billing) | 3.1 | Procurement | Short Lead | Contractor | Main Building | 3.1 Main Building | Procurement | N/A | Prequalification | N/A | Procurement | On completion | Float > 90 d | Other | None | Station Building Zon | No site crew | 2027-05 | 2027-06 | 2027-Q2 | Not TGA process | Baseline | Not applicable |
|  | 02 | **IT Equipment** |  | 2027-05-21 | 2027-06-03 |  |  |  |  |  |  |  |  |  |  |  |  |  |  |  |  |  |  |  |  |  |  |  |  |  |  |  |  |  |  |
| PC-0020 |  | Prequalification of Vendors / Subcontractors - IT Equipment | 14d | 2027-05-21 | 2027-06-03 | MS-0050 | 411d | 0d | PERFORMANCE - Progress Value (SAR, planned earned value) [8000 SAR]; CASH FLOW - Invoiced Cash (SAR, net of advance recovery) [7200 SAR]; Procurement / Contracts Engineer [112 h] | 15,200 | Phase 1 | Phase 1 (Billing) | 3.2 | Procurement | Short Lead | Contractor | Main Building | 3.2 IT Equipment | Procurement | N/A | Prequalification | N/A | Procurement | On completion | Float > 90 d | Other | None | Station Building Zon | No site crew | 2027-05 | 2027-06 | 2027-Q2 | Not TGA process | Baseline | Not applicable |
|  | 03 | **Furniture Works (FF&E)** |  | 2027-09-24 | 2027-10-07 |  |  |  |  |  |  |  |  |  |  |  |  |  |  |  |  |  |  |  |  |  |  |  |  |  |  |  |  |  |  |
| PC-0030 |  | Prequalification of Vendors / Subcontractors - Furniture Works (FF&E) | 14d | 2027-09-24 | 2027-10-07 | MS-0080 | 300d | 0d | PERFORMANCE - Progress Value (SAR, planned earned value) [38000 SAR]; CASH FLOW - Invoiced Cash (SAR, net of advance recovery) [34200 SAR]; Procurement / Contracts Engineer [112 h] | 72,200 | Phase 2 | Phase 2 (Billing) | 3.3 | Procurement | Short Lead | Contractor | Main Building | 3.3 FF&E | Procurement | N/A | Prequalification | N/A | Procurement | On completion | Float > 90 d | Other | None | Station Building Zon | No site crew | 2027-09 | 2027-10 | 2027-Q3 | Not TGA process | Baseline | Not applicable |
|  | 02 | **Ancillary Buildings** |  | 2027-05-21 | 2027-10-07 |  |  |  |  |  |  |  |  |  |  |  |  |  |  |  |  |  |  |  |  |  |  |  |  |  |  |  |  |  |  |
|  | 01 | **Substation and SEC Works** |  | 2027-05-21 | 2027-06-03 |  |  |  |  |  |  |  |  |  |  |  |  |  |  |  |  |  |  |  |  |  |  |  |  |  |  |  |  |  |  |
| PC-0040 |  | Prequalification of Vendors / Subcontractors - Substation & SEC Works | 14d | 2027-05-21 | 2027-06-03 | MS-0050 | 157d | 0d | PERFORMANCE - Progress Value (SAR, planned earned value) [73800 SAR]; CASH FLOW - Invoiced Cash (SAR, net of advance recovery) [66420 SAR]; Procurement / Contracts Engineer [112 h] | 140,220 | Phase 1 | Phase 1 (Billing) | 4.1 | Procurement | Long Lead | Contractor | Ancillary Buildings | 4.1 Substation & SEC | Procurement | N/A | Prequalification | N/A | Procurement | On completion | Float > 90 d | Other | Order before IFC | Substation & Utiliti | No site crew | 2027-05 | 2027-06 | 2027-Q2 | Not TGA process | Baseline | Not applicable |
|  | 02 | **Firefighting Building (BOQ GEA 518 m²)** |  | 2027-05-21 | 2027-06-03 |  |  |  |  |  |  |  |  |  |  |  |  |  |  |  |  |  |  |  |  |  |  |  |  |  |  |  |  |  |  |
| PC-0050 |  | Prequalification of Vendors / Subcontractors - Firefighting Building | 14d | 2027-05-21 | 2027-06-03 | MS-0050 | 397d | 0d | PERFORMANCE - Progress Value (SAR, planned earned value) [29800 SAR]; CASH FLOW - Invoiced Cash (SAR, net of advance recovery) [26820 SAR]; Procurement / Contracts Engineer [112 h] | 56,620 | Phase 1 | Phase 1 (Billing) | 4.2 | Procurement | Short Lead | Contractor | Ancillary Buildings | 4.2 Firefighting Bld | Procurement | N/A | Prequalification | N/A | Procurement | On completion | Float > 90 d | Other | None | Station Building Zon | No site crew | 2027-05 | 2027-06 | 2027-Q2 | Not TGA process | Baseline | Not applicable |
|  | 03 | **Generator Room (BOQ 62 m²)** |  | 2027-09-24 | 2027-10-07 |  |  |  |  |  |  |  |  |  |  |  |  |  |  |  |  |  |  |  |  |  |  |  |  |  |  |  |  |  |  |
| PC-0060 |  | Prequalification of Vendors / Subcontractors - Generator Room | 14d | 2027-09-24 | 2027-10-07 | MS-0080 | 155d | 0d | PERFORMANCE - Progress Value (SAR, planned earned value) [19800 SAR]; CASH FLOW - Invoiced Cash (SAR, net of advance recovery) [17820 SAR]; Procurement / Contracts Engineer [112 h] | 37,620 | Phase 2 | Phase 2 (Billing) | 4.3 | Procurement | Long Lead | Contractor | Ancillary Buildings | 4.3 Generator Room | Procurement | N/A | Prequalification | N/A | Procurement | On completion | Float > 90 d | Other | Order before IFC | Substation & Utiliti | No site crew | 2027-09 | 2027-10 | 2027-Q3 | Not TGA process | Baseline | Not applicable |

| ID | WBS | Activity | Duration | Start | Finish | Predecessors | Total float | Free float | Resources | Cost | Phase | Contract Phase | BOQ Ref | Stage | Lead Class | Responsibility | Package Group | Work Package | Discipline | Design Stage | Procurement Step | Milestone Type | Cost Component | Payment Basis | Path Class | Critical Driver | Risk Flag | Work Zone | Crew Size Class | Start Month | Finish Month | Start Quarter | TGA Process | Duration Basis | Submit / Review |
| --- | --- | --- | --- | --- | --- | --- | --- | --- | --- | --- | --- | --- | --- | --- | --- | --- | --- | --- | --- | --- | --- | --- | --- | --- | --- | --- | --- | --- | --- | --- | --- | --- | --- | --- | --- |
|  | 04 | **Underground Water Tank** |  | 2027-05-21 | 2027-06-03 |  |  |  |  |  |  |  |  |  |  |  |  |  |  |  |  |  |  |  |  |  |  |  |  |  |  |  |  |  |  |
| PC-0070 |  | Prequalification of Vendors / Subcontractors - Underground Water Tank | 14d | 2027-05-21 | 2027-06-03 | MS-0050 | 427d | 0d | PERFORMANCE - Progress Value (SAR, planned earned value) [46620 SAR]; CASH FLOW - Invoiced Cash (SAR, net of advance recovery) [41958 SAR]; Procurement / Contracts Engineer [112 h] | 88,578 | Phase 1 | Phase 1 (Billing) | 4.4 | Procurement | Short Lead | Contractor | Ancillary Buildings | 4.4 UG Water Tank | Procurement | N/A | Prequalification | N/A | Procurement | On completion | Float > 90 d | Other | None | Substation & Utiliti | No site crew | 2027-05 | 2027-06 | 2027-Q2 | Not TGA process | Baseline | Not applicable |
|  | 03 | **External Works** |  | 2027-05-21 | 2027-06-03 |  |  |  |  |  |  |  |  |  |  |  |  |  |  |  |  |  |  |  |  |  |  |  |  |  |  |  |  |  |  |
|  | 01 | **Site Works and Underground Utilities** |  | 2027-05-21 | 2027-06-03 |  |  |  |  |  |  |  |  |  |  |  |  |  |  |  |  |  |  |  |  |  |  |  |  |  |  |  |  |  |  |
| PC-0080 |  | Prequalification of Vendors / Subcontractors - Site Works & Underground Utilities | 14d | 2027-05-21 | 2027-06-03 | MS-0050 | 380d | 0d | PERFORMANCE - Progress Value (SAR, planned earned value) [217600 SAR]; CASH FLOW - Invoiced Cash (SAR, net of advance recovery) [195840 SAR]; Procurement / Contracts Engineer [112 h] | 413,440 | Phase 1 | Phase 1 (Billing) | 5.1 | Procurement | Short Lead | Contractor | External Works | 5.1 Site Works & Uti | Procurement | N/A | Prequalification | N/A | Procurement | On completion | Float > 90 d | Other | None | Substation & Utiliti | No site crew | 2027-05 | 2027-06 | 2027-Q2 | Not TGA process | Baseline | Not applicable |
|  | 02 | **Car Parking Sheds (BOQ 1,375 m²)** |  | 2027-05-21 | 2027-06-03 |  |  |  |  |  |  |  |  |  |  |  |  |  |  |  |  |  |  |  |  |  |  |  |  |  |  |  |  |  |  |
| PC-0090 |  | Prequalification of Vendors / Subcontractors - Car Parking Sheds | 14d | 2027-05-21 | 2027-06-03 | MS-0050 | 367d | 0d | PERFORMANCE - Progress Value (SAR, planned earned value) [15800 SAR]; CASH FLOW - Invoiced Cash (SAR, net of advance recovery) [14220 SAR]; Procurement / Contracts Engineer [112 h] | 30,020 | Phase 1 | Phase 1 (Billing) | 5.2 | Procurement | Short Lead | Contractor | External Works | 5.2 Car Parking Shed | Procurement | N/A | Prequalification | N/A | Procurement | On completion | Float > 90 d | Other | None | Site & External Zone | No site crew | 2027-05 | 2027-06 | 2027-Q2 | Not TGA process | Baseline | Not applicable |
|  | 03 | **Fence Works (BOQ 500 m)** |  | 2027-05-21 | 2027-06-03 |  |  |  |  |  |  |  |  |  |  |  |  |  |  |  |  |  |  |  |  |  |  |  |  |  |  |  |  |  |  |
| PC-0100 |  | Prequalification of Vendors / Subcontractors - Fence Works | 14d | 2027-05-21 | 2027-06-03 | MS-0050 | 441d | 0d | PERFORMANCE - Progress Value (SAR, planned earned value) [4000 SAR]; CASH FLOW - Invoiced Cash (SAR, net of advance recovery) [3600 SAR]; Procurement / Contracts Engineer [112 h] | 7,600 | Phase 1 | Phase 1 (Billing) | 5.3 | Procurement | Short Lead | Contractor | External Works | 5.3 Fence Works | Procurement | N/A | Prequalification | N/A | Procurement | On completion | Float > 90 d | Other | None | Site & External Zone | No site crew | 2027-05 | 2027-06 | 2027-Q2 | Not TGA process | Baseline | Not applicable |
|  | 04 | **Automatic Gate System (BOQ 2 no)** |  | 2027-05-21 | 2027-06-03 |  |  |  |  |  |  |  |  |  |  |  |  |  |  |  |  |  |  |  |  |  |  |  |  |  |  |  |  |  |  |
| PC-0110 |  | Prequalification of Vendors / Subcontractors - Automatic Gate System | 14d | 2027-05-21 | 2027-06-03 | MS-0050 | 440d | 0d | PERFORMANCE - Progress Value (SAR, planned earned value) [6000 SAR]; CASH FLOW - Invoiced Cash (SAR, net of advance recovery) [5400 SAR]; Procurement / Contracts Engineer [112 h] | 11,400 | Phase 1 | Phase 1 (Billing) | 5.4 | Procurement | Short Lead | Contractor | External Works | 5.4 Automatic Gate | Procurement | N/A | Prequalification | N/A | Procurement | On completion | Float > 90 d | Other | None | Site & External Zone | No site crew | 2027-05 | 2027-06 | 2027-Q2 | Not TGA process | Baseline | Not applicable |
|  | 04 | **Road Works** |  | 2027-05-21 | 2027-10-07 |  |  |  |  |  |  |  |  |  |  |  |  |  |  |  |  |  |  |  |  |  |  |  |  |  |  |  |  |  |  |
|  | 01 | **Access Road (BOQ ~1,700 m dual carriageway)** |  | 2027-09-24 | 2027-10-07 |  |  |  |  |  |  |  |  |  |  |  |  |  |  |  |  |  |  |  |  |  |  |  |  |  |  |  |  |  |  |
| PC-0120 |  | Prequalification of Vendors / Subcontractors - Access Road | 14d | 2027-09-24 | 2027-10-07 | MS-0080 | 302d | 0d | PERFORMANCE - Progress Value (SAR, planned earned value) [204000 SAR]; CASH FLOW - Invoiced Cash (SAR, net of advance recovery) [183600 SAR]; Procurement / Contracts Engineer [112 h] | 387,600 | Phase 2 | Phase 2 (Billing) | 6.1 | Procurement | Short Lead | Contractor | Road Works | 6.1 Access Road | Procurement | N/A | Prequalification | N/A | Procurement | On completion | Float > 90 d | Other | None | Road Zone | No site crew | 2027-09 | 2027-10 | 2027-Q3 | Not TGA process | Baseline | Not applicable |
|  | 02 | **External Works (All works above ground)** |  | 2027-05-21 | 2027-06-03 |  |  |  |  |  |  |  |  |  |  |  |  |  |  |  |  |  |  |  |  |  |  |  |  |  |  |  |  |  |  |
| PC-0130 |  | Prequalification of Vendors / Subcontractors - External Works (Above Ground) | 14d | 2027-05-21 | 2027-06-03 | MS-0050 | 348d | 0d | PERFORMANCE - Progress Value (SAR, planned earned value) [179800 SAR]; CASH FLOW - Invoiced Cash (SAR, net of advance recovery) [161820 SAR]; Procurement / Contracts Engineer [112 h] | 341,620 | Phase 1 | Phase 1 (Billing) | 6.3 | Procurement | Short Lead | Contractor | Road Works | 6.3 External Works | Procurement | N/A | Prequalification | N/A | Procurement | On completion | Float > 90 d | Other | None | Site & External Zone | No site crew | 2027-05 | 2027-06 | 2027-Q2 | Not TGA process | Baseline | Not applicable |
|  | 05 | **Railway Systems** |  | 2027-05-21 | 2027-10-07 |  |  |  |  |  |  |  |  |  |  |  |  |  |  |  |  |  |  |  |  |  |  |  |  |  |  |  |  |  |  |
|  | 01 | **Signalling and Telecommunication** |  | 2027-05-21 | 2027-06-03 |  |  |  |  |  |  |  |  |  |  |  |  |  |  |  |  |  |  |  |  |  |  |  |  |  |  |  |  |  |  |
| PC-0140 |  | Prequalification of Vendors / Subcontractors - Signalling & Telecommunication | 14d | 2027-05-21 | 2027-06-03 | MS-0050 | 113d | 0d | PERFORMANCE - Progress Value (SAR, planned earned value) [298000 SAR]; CASH FLOW - Invoiced Cash (SAR, net of advance recovery) [268200 SAR]; Procurement / Contracts Engineer [112 h] | 566,200 | Phase 1 | Phase 1 (Billing) | 6.2 | Procurement | Long Lead | Contractor | Railway Systems | 6.2 Signalling & Tel | Procurement | N/A | Prequalification | N/A | Procurement | On completion | Float > 90 d | Other | Order before IFC | Track Zone | No site crew | 2027-05 | 2027-06 | 2027-Q2 | Not TGA process | Baseline | Not applicable |
|  | 02 | **Railway Track Works (BOQ 2,500 m loop line)** |  | 2027-09-24 | 2027-10-07 |  |  |  |  |  |  |  |  |  |  |  |  |  |  |  |  |  |  |  |  |  |  |  |  |  |  |  |  |  |  |
| PC-0150 |  | Prequalification of Vendors / Subcontractors - Railway Track Works | 14d | 2027-09-24 | 2027-10-07 | MS-0080 | 0d |  | PERFORMANCE - Progress Value (SAR, planned earned value) [438000 SAR]; CASH FLOW - Invoiced Cash (SAR, net of advance recovery) [394200 SAR]; Procurement / Contracts Engineer [112 h] | 832,200 | Phase 2 | Phase 2 (Billing) | 7.2 | Procurement | Long Lead | Contractor | Railway Systems | 7.2 Railway Track | Procurement | N/A | Prequalification | N/A | Procurement | On completion | Critical (0 d) | Longest path | Order before IFC | Track Zone | No site crew | 2027-09 | 2027-10 | 2027-Q3 | Not TGA process | Baseline | Not applicable |
|  | 03 | **Railway Turnout Works** |  | 2027-05-21 | 2027-06-03 |  |  |  |  |  |  |  |  |  |  |  |  |  |  |  |  |  |  |  |  |  |  |  |  |  |  |  |  |  |  |
| PC-0160 |  | Prequalification of Vendors / Subcontractors - Railway Turnout Works | 14d | 2027-05-21 | 2027-06-03 | MS-0050 | 120d | 0d | PERFORMANCE - Progress Value (SAR, planned earned value) [179980 SAR]; CASH FLOW - Invoiced Cash (SAR, net of advance recovery) [161982 SAR]; Procurement / Contracts Engineer [112 h] | 341,962 | Phase 1 | Phase 1 (Billing) | 7.3 | Procurement | Long Lead | Contractor | Railway Systems | 7.3 Railway Turnouts | Procurement | N/A | Prequalification | N/A | Procurement | On completion | Float > 90 d | Other | Order before IFC | Track Zone | No site crew | 2027-05 | 2027-06 | 2027-Q2 | Not TGA process | Baseline | Not applicable |
|  | 02 | **Material Submittal & Approval** |  | 2027-06-04 | 2027-11-07 |  |  |  |  |  |  |  |  |  |  |  |  |  |  |  |  |  |  |  |  |  |  |  |  |  |  |  |  |  |  |
|  | 01 | **Main Building** |  | 2027-06-04 | 2027-10-31 |  |  |  |  |  |  |  |  |  |  |  |  |  |  |  |  |  |  |  |  |  |  |  |  |  |  |  |  |  |  |
|  | 01 | **Main Building (GEA 1,100 m², single storey)** |  | 2027-06-04 | 2027-06-27 |  |  |  |  |  |  |  |  |  |  |  |  |  |  |  |  |  |  |  |  |  |  |  |  |  |  |  |  |  |  |
| PC-0170 |  | Material Submittal to SAR - Main Building | 3d | 2027-06-04 | 2027-06-06 | DS-2380, PC-0010 | 277d | 0d | PERFORMANCE - Progress Value (SAR, planned earned value) [11953.1 SAR]; CASH FLOW - Invoiced Cash (SAR, net of advance recovery) [10757.8 SAR]; Procurement / Contracts Engineer [24 h] | 22,710.93 | Phase 1 | Phase 1 (Billing) | 3.1 | Procurement | Short Lead | Contractor | Main Building | 3.1 Main Building | Procurement | N/A | Submittal | N/A | Procurement | On completion | Float > 90 d | Other | None | Station Building Zon | No site crew | 2027-06 | 2027-06 | 2027-Q2 | Not TGA process | Baseline | Submission |
| PC-2170 |  | Material Approval by SAR - Main Building | 21d | 2027-06-07 | 2027-06-27 | PC-0170 | 277d | 0d | PERFORMANCE - Progress Value (SAR, planned earned value) [83671.9 SAR]; CASH FLOW - Invoiced Cash (SAR, net of advance recovery) [75304.7 SAR] | 158,976.57 | Phase 1 | Phase 1 (Billing) | 3.1 | Procurement | Short Lead | SAR | Main Building | 3.1 Main Building | Procurement | N/A | Approval | N/A | Procurement | On completion | Float > 90 d | Other | SAR dependency | Station Building Zon | No site crew | 2027-06 | 2027-06 | 2027-Q2 | Not TGA process | Baseline | Review / Approval |

| ID | WBS | Activity | Duration | Start | Finish | Predecessors | Total float | Free float | Resources | Cost | Phase | Contract Phase | BOQ Ref | Stage | Lead Class | Responsibility | Package Group | Work Package | Discipline | Design Stage | Procurement Step | Milestone Type | Cost Component | Payment Basis | Path Class | Critical Driver | Risk Flag | Work Zone | Crew Size Class | Start Month | Finish Month | Start Quarter | TGA Process | Duration Basis | Submit / Review |
| --- | --- | --- | --- | --- | --- | --- | --- | --- | --- | --- | --- | --- | --- | --- | --- | --- | --- | --- | --- | --- | --- | --- | --- | --- | --- | --- | --- | --- | --- | --- | --- | --- | --- | --- | --- |
|  | 02 | **IT Equipment** |  | 2027-06-04 | 2027-06-27 |  |  |  |  |  |  |  |  |  |  |  |  |  |  |  |  |  |  |  |  |  |  |  |  |  |  |  |  |  |  |
| PC-0180 |  | Material Submittal to SAR - IT Equipment | 3d | 2027-06-04 | 2027-06-06 | DS-2400, PC-0020 | 411d | 0d | PERFORMANCE - Progress Value (SAR, planned earned value) [2125 SAR]; CASH FLOW - Invoiced Cash (SAR, net of advance recovery) [1912.5 SAR]; Procurement / Contracts Engineer [24 h] | 4,037.5 | Phase 1 | Phase 1 (Billing) | 3.2 | Procurement | Short Lead | Contractor | Main Building | 3.2 IT Equipment | Procurement | N/A | Submittal | N/A | Procurement | On completion | Float > 90 d | Other | None | Station Building Zon | No site crew | 2027-06 | 2027-06 | 2027-Q2 | Not TGA process | Baseline | Submission |
| PC-2180 |  | Material Approval by SAR - IT Equipment | 21d | 2027-06-07 | 2027-06-27 | PC-0180 | 411d | 0d | PERFORMANCE - Progress Value (SAR, planned earned value) [14875 SAR]; CASH FLOW - Invoiced Cash (SAR, net of advance recovery) [13387.5 SAR] | 28,262.5 | Phase 1 | Phase 1 (Billing) | 3.2 | Procurement | Short Lead | SAR | Main Building | 3.2 IT Equipment | Procurement | N/A | Approval | N/A | Procurement | On completion | Float > 90 d | Other | SAR dependency | Station Building Zon | No site crew | 2027-06 | 2027-06 | 2027-Q2 | Not TGA process | Baseline | Review / Approval |
|  | 03 | **Furniture Works (FF&E)** |  | 2027-10-08 | 2027-10-31 |  |  |  |  |  |  |  |  |  |  |  |  |  |  |  |  |  |  |  |  |  |  |  |  |  |  |  |  |  |  |
| PC-0190 |  | Material Submittal to SAR - Furniture Works (FF&E) | 3d | 2027-10-08 | 2027-10-10 | DS-2420, PC-0030 | 300d | 0d | PERFORMANCE - Progress Value (SAR, planned earned value) [10093.8 SAR]; CASH FLOW - Invoiced Cash (SAR, net of advance recovery) [9084.38 SAR]; Procurement / Contracts Engineer [24 h] | 19,178.13 | Phase 2 | Phase 2 (Billing) | 3.3 | Procurement | Short Lead | Contractor | Main Building | 3.3 FF&E | Procurement | N/A | Submittal | N/A | Procurement | On completion | Float > 90 d | Other | None | Station Building Zon | No site crew | 2027-10 | 2027-10 | 2027-Q4 | Not TGA process | Baseline | Submission |
| PC-2190 |  | Material Approval by SAR - Furniture Works (FF&E) | 21d | 2027-10-11 | 2027-10-31 | PC-0190 | 300d | 0d | PERFORMANCE - Progress Value (SAR, planned earned value) [70656.2 SAR]; CASH FLOW - Invoiced Cash (SAR, net of advance recovery) [63590.6 SAR] | 134,246.87 | Phase 2 | Phase 2 (Billing) | 3.3 | Procurement | Short Lead | SAR | Main Building | 3.3 FF&E | Procurement | N/A | Approval | N/A | Procurement | On completion | Float > 90 d | Other | SAR dependency | Station Building Zon | No site crew | 2027-10 | 2027-10 | 2027-Q4 | Not TGA process | Baseline | Review / Approval |
|  | 02 | **Ancillary Buildings** |  | 2027-06-04 | 2027-11-07 |  |  |  |  |  |  |  |  |  |  |  |  |  |  |  |  |  |  |  |  |  |  |  |  |  |  |  |  |  |  |
|  | 01 | **Substation and SEC Works** |  | 2027-06-04 | 2027-07-04 |  |  |  |  |  |  |  |  |  |  |  |  |  |  |  |  |  |  |  |  |  |  |  |  |  |  |  |  |  |  |
| PC-0200 |  | Material Submittal to SAR - Substation & SEC Works | 3d | 2027-06-04 | 2027-06-06 | DS-2440, PC-0040 | 157d | 0d | PERFORMANCE - Progress Value (SAR, planned earned value) [15176.6 SAR]; CASH FLOW - Invoiced Cash (SAR, net of advance recovery) [13659 SAR]; Procurement / Contracts Engineer [24 h] | 28,835.56 | Phase 1 | Phase 1 (Billing) | 4.1 | Procurement | Long Lead | Contractor | Ancillary Buildings | 4.1 Substation & SEC | Procurement | N/A | Submittal | N/A | Procurement | On completion | Float > 90 d | Other | Order before IFC | Substation & Utiliti | No site crew | 2027-06 | 2027-06 | 2027-Q2 | Not TGA process | Baseline | Submission |
| PC-2200 |  | Material Approval by SAR - Substation & SEC Works | 28d | 2027-06-07 | 2027-07-04 | PC-0200 | 157d | 0d | PERFORMANCE - Progress Value (SAR, planned earned value) [141648 SAR]; CASH FLOW - Invoiced Cash (SAR, net of advance recovery) [127484 SAR] | 269,131.94 | Phase 1 | Phase 1 (Billing) | 4.1 | Procurement | Long Lead | SAR | Ancillary Buildings | 4.1 Substation & SEC | Procurement | N/A | Approval | N/A | Procurement | On completion | Float > 90 d | Other | SAR dependency | Substation & Utiliti | No site crew | 2027-06 | 2027-07 | 2027-Q2 | Not TGA process | Baseline | Review / Approval |
|  | 02 | **Firefighting Building (BOQ GEA 518 m²)** |  | 2027-06-04 | 2027-06-27 |  |  |  |  |  |  |  |  |  |  |  |  |  |  |  |  |  |  |  |  |  |  |  |  |  |  |  |  |  |  |
| PC-0210 |  | Material Submittal to SAR - Firefighting Building | 3d | 2027-06-04 | 2027-06-06 | DS-2460, PC-0050 | 397d | 0d | PERFORMANCE - Progress Value (SAR, planned earned value) [7915.62 SAR]; CASH FLOW - Invoiced Cash (SAR, net of advance recovery) [7124.06 SAR]; Procurement / Contracts Engineer [24 h] | 15,039.68 | Phase 1 | Phase 1 (Billing) | 4.2 | Procurement | Short Lead | Contractor | Ancillary Buildings | 4.2 Firefighting Bld | Procurement | N/A | Submittal | N/A | Procurement | On completion | Float > 90 d | Other | None | Station Building Zon | No site crew | 2027-06 | 2027-06 | 2027-Q2 | Not TGA process | Baseline | Submission |
| PC-2210 |  | Material Approval by SAR - Firefighting Building | 21d | 2027-06-07 | 2027-06-27 | PC-0210 | 397d | 0d | PERFORMANCE - Progress Value (SAR, planned earned value) [55409.4 SAR]; CASH FLOW - Invoiced Cash (SAR, net of advance recovery) [49868.4 SAR] | 105,277.82 | Phase 1 | Phase 1 (Billing) | 4.2 | Procurement | Short Lead | SAR | Ancillary Buildings | 4.2 Firefighting Bld | Procurement | N/A | Approval | N/A | Procurement | On completion | Float > 90 d | Other | SAR dependency | Station Building Zon | No site crew | 2027-06 | 2027-06 | 2027-Q2 | Not TGA process | Baseline | Review / Approval |
|  | 03 | **Generator Room (BOQ 62 m²)** |  | 2027-10-08 | 2027-11-07 |  |  |  |  |  |  |  |  |  |  |  |  |  |  |  |  |  |  |  |  |  |  |  |  |  |  |  |  |  |  |
| PC-0220 |  | Material Submittal to SAR - Generator Room | 3d | 2027-10-08 | 2027-10-10 | DS-2480, PC-0060 | 155d | 0d | PERFORMANCE - Progress Value (SAR, planned earned value) [4071.77 SAR]; CASH FLOW - Invoiced Cash (SAR, net of advance recovery) [3664.59 SAR]; Procurement / Contracts Engineer [24 h] | 7,736.36 | Phase 2 | Phase 2 (Billing) | 4.3 | Procurement | Long Lead | Contractor | Ancillary Buildings | 4.3 Generator Room | Procurement | N/A | Submittal | N/A | Procurement | On completion | Float > 90 d | Other | Order before IFC | Substation & Utiliti | No site crew | 2027-10 | 2027-10 | 2027-Q4 | Not TGA process | Baseline | Submission |
| PC-2220 |  | Material Approval by SAR - Generator Room | 28d | 2027-10-11 | 2027-11-07 | PC-0220 | 155d | 0d | PERFORMANCE - Progress Value (SAR, planned earned value) [38003.2 SAR]; CASH FLOW - Invoiced Cash (SAR, net of advance recovery) [34202.9 SAR] | 72,206.14 | Phase 2 | Phase 2 (Billing) | 4.3 | Procurement | Long Lead | SAR | Ancillary Buildings | 4.3 Generator Room | Procurement | N/A | Approval | N/A | Procurement | On completion | Float > 90 d | Other | SAR dependency | Substation & Utiliti | No site crew | 2027-10 | 2027-11 | 2027-Q4 | Not TGA process | Baseline | Review / Approval |
|  | 04 | **Underground Water Tank** |  | 2027-06-04 | 2027-06-27 |  |  |  |  |  |  |  |  |  |  |  |  |  |  |  |  |  |  |  |  |  |  |  |  |  |  |  |  |  |  |
| PC-0230 |  | Material Submittal to SAR - Underground Water Tank | 3d | 2027-06-04 | 2027-06-06 | DS-2500, PC-0070 | 427d | 0d | PERFORMANCE - Progress Value (SAR, planned earned value) [12383.4 SAR]; CASH FLOW - Invoiced Cash (SAR, net of advance recovery) [11145.1 SAR]; Procurement / Contracts Engineer [24 h] | 23,528.54 | Phase 1 | Phase 1 (Billing) | 4.4 | Procurement | Short Lead | Contractor | Ancillary Buildings | 4.4 UG Water Tank | Procurement | N/A | Submittal | N/A | Procurement | On completion | Float > 90 d | Other | None | Substation & Utiliti | No site crew | 2027-06 | 2027-06 | 2027-Q2 | Not TGA process | Baseline | Submission |
| PC-2230 |  | Material Approval by SAR - Underground Water Tank | 21d | 2027-06-07 | 2027-06-27 | PC-0230 | 427d | 0d | PERFORMANCE - Progress Value (SAR, planned earned value) [86684.1 SAR]; CASH FLOW - Invoiced Cash (SAR, net of advance recovery) [78015.6 SAR] | 164,699.71 | Phase 1 | Phase 1 (Billing) | 4.4 | Procurement | Short Lead | SAR | Ancillary Buildings | 4.4 UG Water Tank | Procurement | N/A | Approval | N/A | Procurement | On completion | Float > 90 d | Other | SAR dependency | Substation & Utiliti | No site crew | 2027-06 | 2027-06 | 2027-Q2 | Not TGA process | Baseline | Review / Approval |
|  | 03 | **External Works** |  | 2027-06-04 | 2027-06-27 |  |  |  |  |  |  |  |  |  |  |  |  |  |  |  |  |  |  |  |  |  |  |  |  |  |  |  |  |  |  |
|  | 01 | **Site Works and Underground Utilities** |  | 2027-06-04 | 2027-06-27 |  |  |  |  |  |  |  |  |  |  |  |  |  |  |  |  |  |  |  |  |  |  |  |  |  |  |  |  |  |  |
| PC-0240 |  | Material Submittal to SAR - Site Works & Underground Utilities | 3d | 2027-06-04 | 2027-06-06 | DS-2520, PC-0080 | 380d | 0d | PERFORMANCE - Progress Value (SAR, planned earned value) [57800 SAR]; CASH FLOW - Invoiced Cash (SAR, net of advance recovery) [52020 SAR]; Procurement / Contracts Engineer [24 h] | 109,820 | Phase 1 | Phase 1 (Billing) | 5.1 | Procurement | Short Lead | Contractor | External Works | 5.1 Site Works & Uti | Procurement | N/A | Submittal | N/A | Procurement | On completion | Float > 90 d | Other | None | Substation & Utiliti | No site crew | 2027-06 | 2027-06 | 2027-Q2 | Not TGA process | Baseline | Submission |
| PC-2240 |  | Material Approval by SAR - Site Works & Underground Utilities | 21d | 2027-06-07 | 2027-06-27 | PC-0240 | 380d | 0d | PERFORMANCE - Progress Value (SAR, planned earned value) [404600 SAR]; CASH FLOW - Invoiced Cash (SAR, net of advance recovery) [364140 SAR] | 768,740 | Phase 1 | Phase 1 (Billing) | 5.1 | Procurement | Short Lead | SAR | External Works | 5.1 Site Works & Uti | Procurement | N/A | Approval | N/A | Procurement | On completion | Float > 90 d | Other | SAR dependency | Substation & Utiliti | No site crew | 2027-06 | 2027-06 | 2027-Q2 | Not TGA process | Baseline | Review / Approval |
|  | 02 | **Car Parking Sheds (BOQ 1,375 m²)** |  | 2027-06-04 | 2027-06-27 |  |  |  |  |  |  |  |  |  |  |  |  |  |  |  |  |  |  |  |  |  |  |  |  |  |  |  |  |  |  |
| PC-0250 |  | Material Submittal to SAR - Car Parking Sheds | 3d | 2027-06-04 | 2027-06-06 | DS-2540, PC-0090 | 367d | 0d | PERFORMANCE - Progress Value (SAR, planned earned value) [4196.88 SAR]; CASH FLOW - Invoiced Cash (SAR, net of advance recovery) [3777.19 SAR]; Procurement / Contracts Engineer [24 h] | 7,974.07 | Phase 1 | Phase 1 (Billing) | 5.2 | Procurement | Short Lead | Contractor | External Works | 5.2 Car Parking Shed | Procurement | N/A | Submittal | N/A | Procurement | On completion | Float > 90 d | Other | None | Site & External Zone | No site crew | 2027-06 | 2027-06 | 2027-Q2 | Not TGA process | Baseline | Submission |
| PC-2250 |  | Material Approval by SAR - Car Parking Sheds | 21d | 2027-06-07 | 2027-06-27 | PC-0250 | 367d | 0d | PERFORMANCE - Progress Value (SAR, planned earned value) [29378.1 SAR]; CASH FLOW - Invoiced Cash (SAR, net of advance recovery) [26440.3 SAR] | 55,818.43 | Phase 1 | Phase 1 (Billing) | 5.2 | Procurement | Short Lead | SAR | External Works | 5.2 Car Parking Shed | Procurement | N/A | Approval | N/A | Procurement | On completion | Float > 90 d | Other | SAR dependency | Site & External Zone | No site crew | 2027-06 | 2027-06 | 2027-Q2 | Not TGA process | Baseline | Review / Approval |

| ID | WBS | Activity | Duration | Start | Finish | Predecessors | Total float | Free float | Resources | Cost | Phase | Contract Phase | BOQ Ref | Stage | Lead Class | Responsibility | Package Group | Work Package | Discipline | Design Stage | Procurement Step | Milestone Type | Cost Component | Payment Basis | Path Class | Critical Driver | Risk Flag | Work Zone | Crew Size Class | Start Month | Finish Month | Start Quarter | TGA Process | Duration Basis | Submit / Review |
| --- | --- | --- | --- | --- | --- | --- | --- | --- | --- | --- | --- | --- | --- | --- | --- | --- | --- | --- | --- | --- | --- | --- | --- | --- | --- | --- | --- | --- | --- | --- | --- | --- | --- | --- | --- |
|  | 03 | **Fence Works (BOQ 500 m)** |  | 2027-06-04 | 2027-06-27 |  |  |  |  |  |  |  |  |  |  |  |  |  |  |  |  |  |  |  |  |  |  |  |  |  |  |  |  |  |  |
| PC-0260 |  | Material Submittal to SAR - Fence Works | 3d | 2027-06-04 | 2027-06-06 | DS-2560, PC-0100 | 441d | 0d | PERFORMANCE - Progress Value (SAR, planned earned value) [1062.5 SAR]; CASH FLOW - Invoiced Cash (SAR, net of advance recovery) [956.25 SAR]; Procurement / Contracts Engineer [24 h] | 2,018.75 | Phase 1 | Phase 1 (Billing) | 5.3 | Procurement | Short Lead | Contractor | External Works | 5.3 Fence Works | Procurement | N/A | Submittal | N/A | Procurement | On completion | Float > 90 d | Other | None | Site & External Zone | No site crew | 2027-06 | 2027-06 | 2027-Q2 | Not TGA process | Baseline | Submission |
| PC-2260 |  | Material Approval by SAR - Fence Works | 21d | 2027-06-07 | 2027-06-27 | PC-0260 | 441d | 0d | PERFORMANCE - Progress Value (SAR, planned earned value) [7437.5 SAR]; CASH FLOW - Invoiced Cash (SAR, net of advance recovery) [6693.75 SAR] | 14,131.25 | Phase 1 | Phase 1 (Billing) | 5.3 | Procurement | Short Lead | SAR | External Works | 5.3 Fence Works | Procurement | N/A | Approval | N/A | Procurement | On completion | Float > 90 d | Other | SAR dependency | Site & External Zone | No site crew | 2027-06 | 2027-06 | 2027-Q2 | Not TGA process | Baseline | Review / Approval |
|  | 04 | **Automatic Gate System (BOQ 2 no)** |  | 2027-06-04 | 2027-06-27 |  |  |  |  |  |  |  |  |  |  |  |  |  |  |  |  |  |  |  |  |  |  |  |  |  |  |  |  |  |  |
| PC-0270 |  | Material Submittal to SAR - Automatic Gate System | 3d | 2027-06-04 | 2027-06-06 | DS-2580, PC-0110 | 440d | 0d | PERFORMANCE - Progress Value (SAR, planned earned value) [1593.75 SAR]; CASH FLOW - Invoiced Cash (SAR, net of advance recovery) [1434.38 SAR]; Procurement / Contracts Engineer [24 h] | 3,028.13 | Phase 1 | Phase 1 (Billing) | 5.4 | Procurement | Short Lead | Contractor | External Works | 5.4 Automatic Gate | Procurement | N/A | Submittal | N/A | Procurement | On completion | Float > 90 d | Other | None | Site & External Zone | No site crew | 2027-06 | 2027-06 | 2027-Q2 | Not TGA process | Baseline | Submission |
| PC-2270 |  | Material Approval by SAR - Automatic Gate System | 21d | 2027-06-07 | 2027-06-27 | PC-0270 | 440d | 0d | PERFORMANCE - Progress Value (SAR, planned earned value) [11156.2 SAR]; CASH FLOW - Invoiced Cash (SAR, net of advance recovery) [10040.6 SAR] | 21,196.87 | Phase 1 | Phase 1 (Billing) | 5.4 | Procurement | Short Lead | SAR | External Works | 5.4 Automatic Gate | Procurement | N/A | Approval | N/A | Procurement | On completion | Float > 90 d | Other | SAR dependency | Site & External Zone | No site crew | 2027-06 | 2027-06 | 2027-Q2 | Not TGA process | Baseline | Review / Approval |
|  | 04 | **Road Works** |  | 2027-06-04 | 2027-10-31 |  |  |  |  |  |  |  |  |  |  |  |  |  |  |  |  |  |  |  |  |  |  |  |  |  |  |  |  |  |  |
|  | 01 | **Access Road (BOQ ~1,700 m dual carriageway)** |  | 2027-10-08 | 2027-10-31 |  |  |  |  |  |  |  |  |  |  |  |  |  |  |  |  |  |  |  |  |  |  |  |  |  |  |  |  |  |  |
| PC-0280 |  | Material Submittal to SAR - Access Road | 3d | 2027-10-08 | 2027-10-10 | DS-2600, PC-0120 | 302d | 0d | PERFORMANCE - Progress Value (SAR, planned earned value) [54187.5 SAR]; CASH FLOW - Invoiced Cash (SAR, net of advance recovery) [48768.8 SAR]; Procurement / Contracts Engineer [24 h] | 102,956.25 | Phase 2 | Phase 2 (Billing) | 6.1 | Procurement | Short Lead | Contractor | Road Works | 6.1 Access Road | Procurement | N/A | Submittal | N/A | Procurement | On completion | Float > 90 d | Other | None | Road Zone | No site crew | 2027-10 | 2027-10 | 2027-Q4 | Not TGA process | Baseline | Submission |
| PC-2280 |  | Material Approval by SAR - Access Road | 21d | 2027-10-11 | 2027-10-31 | PC-0280 | 302d | 0d | PERFORMANCE - Progress Value (SAR, planned earned value) [379312 SAR]; CASH FLOW - Invoiced Cash (SAR, net of advance recovery) [341381 SAR] | 720,693.75 | Phase 2 | Phase 2 (Billing) | 6.1 | Procurement | Short Lead | SAR | Road Works | 6.1 Access Road | Procurement | N/A | Approval | N/A | Procurement | On completion | Float > 90 d | Other | SAR dependency | Road Zone | No site crew | 2027-10 | 2027-10 | 2027-Q4 | Not TGA process | Baseline | Review / Approval |
|  | 02 | **External Works (All works above ground)** |  | 2027-06-04 | 2027-06-27 |  |  |  |  |  |  |  |  |  |  |  |  |  |  |  |  |  |  |  |  |  |  |  |  |  |  |  |  |  |  |
| PC-0290 |  | Material Submittal to SAR - External Works (Above Ground) | 3d | 2027-06-04 | 2027-06-06 | DS-2620, PC-0130 | 348d | 0d | PERFORMANCE - Progress Value (SAR, planned earned value) [47759.4 SAR]; CASH FLOW - Invoiced Cash (SAR, net of advance recovery) [42983.4 SAR]; Procurement / Contracts Engineer [24 h] | 90,742.82 | Phase 1 | Phase 1 (Billing) | 6.3 | Procurement | Short Lead | Contractor | Road Works | 6.3 External Works | Procurement | N/A | Submittal | N/A | Procurement | On completion | Float > 90 d | Other | None | Site & External Zone | No site crew | 2027-06 | 2027-06 | 2027-Q2 | Not TGA process | Baseline | Submission |
| PC-2290 |  | Material Approval by SAR - External Works (Above Ground) | 21d | 2027-06-07 | 2027-06-27 | PC-0290 | 348d | 0d | PERFORMANCE - Progress Value (SAR, planned earned value) [334316 SAR]; CASH FLOW - Invoiced Cash (SAR, net of advance recovery) [300884 SAR] | 635,199.68 | Phase 1 | Phase 1 (Billing) | 6.3 | Procurement | Short Lead | SAR | Road Works | 6.3 External Works | Procurement | N/A | Approval | N/A | Procurement | On completion | Float > 90 d | Other | SAR dependency | Site & External Zone | No site crew | 2027-06 | 2027-06 | 2027-Q2 | Not TGA process | Baseline | Review / Approval |
|  | 05 | **Railway Systems** |  | 2027-06-04 | 2027-11-07 |  |  |  |  |  |  |  |  |  |  |  |  |  |  |  |  |  |  |  |  |  |  |  |  |  |  |  |  |  |  |
|  | 01 | **Signalling and Telecommunication** |  | 2027-06-04 | 2027-07-04 |  |  |  |  |  |  |  |  |  |  |  |  |  |  |  |  |  |  |  |  |  |  |  |  |  |  |  |  |  |  |
| PC-0300 |  | Material Submittal to SAR - Signalling & Telecommunication | 3d | 2027-06-04 | 2027-06-06 | DS-2640, PC-0140 | 113d | 0d | PERFORMANCE - Progress Value (SAR, planned earned value) [61282.3 SAR]; CASH FLOW - Invoiced Cash (SAR, net of advance recovery) [55154 SAR]; Procurement / Contracts Engineer [24 h] | 116,436.29 | Phase 1 | Phase 1 (Billing) | 6.2 | Procurement | Long Lead | Contractor | Railway Systems | 6.2 Signalling & Tel | Procurement | N/A | Submittal | N/A | Procurement | On completion | Float > 90 d | Other | Order before IFC | Track Zone | No site crew | 2027-06 | 2027-06 | 2027-Q2 | Not TGA process | Baseline | Submission |
| PC-2300 |  | Material Approval by SAR - Signalling & Telecommunication | 28d | 2027-06-07 | 2027-07-04 | PC-0300 | 113d | 0d | PERFORMANCE - Progress Value (SAR, planned earned value) [571968 SAR]; CASH FLOW - Invoiced Cash (SAR, net of advance recovery) [514771 SAR] | 1,086,738.71 | Phase 1 | Phase 1 (Billing) | 6.2 | Procurement | Long Lead | SAR | Railway Systems | 6.2 Signalling & Tel | Procurement | N/A | Approval | N/A | Procurement | On completion | Float > 90 d | Other | SAR dependency | Track Zone | No site crew | 2027-06 | 2027-07 | 2027-Q2 | Not TGA process | Baseline | Review / Approval |
|  | 02 | **Railway Track Works (BOQ 2,500 m loop line)** |  | 2027-10-08 | 2027-11-07 |  |  |  |  |  |  |  |  |  |  |  |  |  |  |  |  |  |  |  |  |  |  |  |  |  |  |  |  |  |  |
| PC-0310 |  | Material Submittal to SAR - Railway Track Works | 3d | 2027-10-08 | 2027-10-10 | DS-2660, PC-0150 | 0d |  | PERFORMANCE - Progress Value (SAR, planned earned value) [90072.6 SAR]; CASH FLOW - Invoiced Cash (SAR, net of advance recovery) [81065.3 SAR]; Procurement / Contracts Engineer [24 h] | 171,137.9 | Phase 2 | Phase 2 (Billing) | 7.2 | Procurement | Long Lead | Contractor | Railway Systems | 7.2 Railway Track | Procurement | N/A | Submittal | N/A | Procurement | On completion | Critical (0 d) | Longest path | Order before IFC | Track Zone | No site crew | 2027-10 | 2027-10 | 2027-Q4 | Not TGA process | Baseline | Submission |
| PC-2310 |  | Material Approval by SAR - Railway Track Works | 28d | 2027-10-11 | 2027-11-07 | PC-0310 | 0d |  | PERFORMANCE - Progress Value (SAR, planned earned value) [840677 SAR]; CASH FLOW - Invoiced Cash (SAR, net of advance recovery) [756610 SAR] | 1,597,287.1 | Phase 2 | Phase 2 (Billing) | 7.2 | Procurement | Long Lead | SAR | Railway Systems | 7.2 Railway Track | Procurement | N/A | Approval | N/A | Procurement | On completion | Critical (0 d) | Longest path | SAR dependency | Track Zone | No site crew | 2027-10 | 2027-11 | 2027-Q4 | Not TGA process | Baseline | Review / Approval |
|  | 03 | **Railway Turnout Works** |  | 2027-06-04 | 2027-07-04 |  |  |  |  |  |  |  |  |  |  |  |  |  |  |  |  |  |  |  |  |  |  |  |  |  |  |  |  |  |  |
| PC-0320 |  | Material Submittal to SAR - Railway Turnout Works | 3d | 2027-06-04 | 2027-06-06 | DS-2680, PC-0160 | 120d | 0d | PERFORMANCE - Progress Value (SAR, planned earned value) [37012 SAR]; CASH FLOW - Invoiced Cash (SAR, net of advance recovery) [33310.8 SAR]; Procurement / Contracts Engineer [24 h] | 70,322.84 | Phase 1 | Phase 1 (Billing) | 7.3 | Procurement | Long Lead | Contractor | Railway Systems | 7.3 Railway Turnouts | Procurement | N/A | Submittal | N/A | Procurement | On completion | Float > 90 d | Other | Order before IFC | Track Zone | No site crew | 2027-06 | 2027-06 | 2027-Q2 | Not TGA process | Baseline | Submission |
| PC-2320 |  | Material Approval by SAR - Railway Turnout Works | 28d | 2027-06-07 | 2027-07-04 | PC-0320 | 120d | 0d | PERFORMANCE - Progress Value (SAR, planned earned value) [345445 SAR]; CASH FLOW - Invoiced Cash (SAR, net of advance recovery) [310901 SAR] | 656,346.41 | Phase 1 | Phase 1 (Billing) | 7.3 | Procurement | Long Lead | SAR | Railway Systems | 7.3 Railway Turnouts | Procurement | N/A | Approval | N/A | Procurement | On completion | Float > 90 d | Other | SAR dependency | Track Zone | No site crew | 2027-06 | 2027-07 | 2027-Q2 | Not TGA process | Baseline | Review / Approval |
|  | 03 | **Purchase Order** |  | 2027-06-28 | 2027-11-17 |  |  |  |  |  |  |  |  |  |  |  |  |  |  |  |  |  |  |  |  |  |  |  |  |  |  |  |  |  |  |
|  | 01 | **Main Building** |  | 2027-06-28 | 2027-11-10 |  |  |  |  |  |  |  |  |  |  |  |  |  |  |  |  |  |  |  |  |  |  |  |  |  |  |  |  |  |  |
|  | 01 | **Main Building (GEA 1,100 m², single storey)** |  | 2027-06-28 | 2027-07-07 |  |  |  |  |  |  |  |  |  |  |  |  |  |  |  |  |  |  |  |  |  |  |  |  |  |  |  |  |  |  |
| PC-0330 |  | Purchase Order Placement - Main Building | 10d | 2027-06-28 | 2027-07-07 | PC-2170 | 277d | 0d | PERFORMANCE - Progress Value (SAR, planned earned value) [112500 SAR]; CASH FLOW - Invoiced Cash (SAR, net of advance recovery) [101250 SAR]; Procurement / Contracts Engineer [80 h] | 213,750 | Phase 1 | Phase 1 (Billing) | 3.1 | Procurement | Short Lead | Contractor | Main Building | 3.1 Main Building | Procurement | N/A | Purchase Order | N/A | Procurement | On completion | Float > 90 d | Other | None | Station Building Zon | No site crew | 2027-06 | 2027-07 | 2027-Q2 | Not TGA process | Baseline | Not applicable |

| ID | WBS | Activity | Duration | Start | Finish | Predecessors | Total float | Free float | Resources | Cost | Phase | Contract Phase | BOQ Ref | Stage | Lead Class | Responsibility | Package Group | Work Package | Discipline | Design Stage | Procurement Step | Milestone Type | Cost Component | Payment Basis | Path Class | Critical Driver | Risk Flag | Work Zone | Crew Size Class | Start Month | Finish Month | Start Quarter | TGA Process | Duration Basis | Submit / Review |
| --- | --- | --- | --- | --- | --- | --- | --- | --- | --- | --- | --- | --- | --- | --- | --- | --- | --- | --- | --- | --- | --- | --- | --- | --- | --- | --- | --- | --- | --- | --- | --- | --- | --- | --- | --- |
|  | 02 | **IT Equipment** |  | 2027-06-28 | 2027-07-07 |  |  |  |  |  |  |  |  |  |  |  |  |  |  |  |  |  |  |  |  |  |  |  |  |  |  |  |  |  |  |
| PC-0340 |  | Purchase Order Placement - IT Equipment | 10d | 2027-06-28 | 2027-07-07 | PC-2180 | 411d | 0d | PERFORMANCE - Progress Value (SAR, planned earned value) [20000 SAR]; CASH FLOW - Invoiced Cash (SAR, net of advance recovery) [18000 SAR]; Procurement / Contracts Engineer [80 h] | 38,000 | Phase 1 | Phase 1 (Billing) | 3.2 | Procurement | Short Lead | Contractor | Main Building | 3.2 IT Equipment | Procurement | N/A | Purchase Order | N/A | Procurement | On completion | Float > 90 d | Other | None | Station Building Zon | No site crew | 2027-06 | 2027-07 | 2027-Q2 | Not TGA process | Baseline | Not applicable |
|  | 03 | **Furniture Works (FF&E)** |  | 2027-11-01 | 2027-11-10 |  |  |  |  |  |  |  |  |  |  |  |  |  |  |  |  |  |  |  |  |  |  |  |  |  |  |  |  |  |  |
| PC-0350 |  | Purchase Order Placement - Furniture Works (FF&E) | 10d | 2027-11-01 | 2027-11-10 | PC-2190 | 300d | 0d | PERFORMANCE - Progress Value (SAR, planned earned value) [95000 SAR]; CASH FLOW - Invoiced Cash (SAR, net of advance recovery) [85500 SAR]; Procurement / Contracts Engineer [80 h] | 180,500 | Phase 2 | Phase 2 (Billing) | 3.3 | Procurement | Short Lead | Contractor | Main Building | 3.3 FF&E | Procurement | N/A | Purchase Order | N/A | Procurement | On completion | Float > 90 d | Other | None | Station Building Zon | No site crew | 2027-11 | 2027-11 | 2027-Q4 | Not TGA process | Baseline | Not applicable |
|  | 02 | **Ancillary Buildings** |  | 2027-06-28 | 2027-11-17 |  |  |  |  |  |  |  |  |  |  |  |  |  |  |  |  |  |  |  |  |  |  |  |  |  |  |  |  |  |  |
|  | 01 | **Substation and SEC Works** |  | 2027-07-05 | 2027-07-14 |  |  |  |  |  |  |  |  |  |  |  |  |  |  |  |  |  |  |  |  |  |  |  |  |  |  |  |  |  |  |
| PC-0360 |  | Purchase Order Placement - Substation & SEC Works | 10d | 2027-07-05 | 2027-07-14 | PC-2200 | 157d | 0d | PERFORMANCE - Progress Value (SAR, planned earned value) [184500 SAR]; CASH FLOW - Invoiced Cash (SAR, net of advance recovery) [166050 SAR]; Procurement / Contracts Engineer [80 h] | 350,550 | Phase 1 | Phase 1 (Billing) | 4.1 | Procurement | Long Lead | Contractor | Ancillary Buildings | 4.1 Substation & SEC | Procurement | N/A | Purchase Order | N/A | Procurement | On completion | Float > 90 d | Other | Order before IFC | Substation & Utiliti | No site crew | 2027-07 | 2027-07 | 2027-Q3 | Not TGA process | Baseline | Not applicable |
|  | 02 | **Firefighting Building (BOQ GEA 518 m²)** |  | 2027-06-28 | 2027-07-07 |  |  |  |  |  |  |  |  |  |  |  |  |  |  |  |  |  |  |  |  |  |  |  |  |  |  |  |  |  |  |
| PC-0370 |  | Purchase Order Placement - Firefighting Building | 10d | 2027-06-28 | 2027-07-07 | PC-2210 | 397d | 0d | PERFORMANCE - Progress Value (SAR, planned earned value) [74500 SAR]; CASH FLOW - Invoiced Cash (SAR, net of advance recovery) [67050 SAR]; Procurement / Contracts Engineer [80 h] | 141,550 | Phase 1 | Phase 1 (Billing) | 4.2 | Procurement | Short Lead | Contractor | Ancillary Buildings | 4.2 Firefighting Bld | Procurement | N/A | Purchase Order | N/A | Procurement | On completion | Float > 90 d | Other | None | Station Building Zon | No site crew | 2027-06 | 2027-07 | 2027-Q2 | Not TGA process | Baseline | Not applicable |
|  | 03 | **Generator Room (BOQ 62 m²)** |  | 2027-11-08 | 2027-11-17 |  |  |  |  |  |  |  |  |  |  |  |  |  |  |  |  |  |  |  |  |  |  |  |  |  |  |  |  |  |  |
| PC-0380 |  | Purchase Order Placement - Generator Room | 10d | 2027-11-08 | 2027-11-17 | PC-2220 | 155d | 0d | PERFORMANCE - Progress Value (SAR, planned earned value) [49500 SAR]; CASH FLOW - Invoiced Cash (SAR, net of advance recovery) [44550 SAR]; Procurement / Contracts Engineer [80 h] | 94,050 | Phase 2 | Phase 2 (Billing) | 4.3 | Procurement | Long Lead | Contractor | Ancillary Buildings | 4.3 Generator Room | Procurement | N/A | Purchase Order | N/A | Procurement | On completion | Float > 90 d | Other | Order before IFC | Substation & Utiliti | No site crew | 2027-11 | 2027-11 | 2027-Q4 | Not TGA process | Baseline | Not applicable |
|  | 04 | **Underground Water Tank** |  | 2027-06-28 | 2027-07-07 |  |  |  |  |  |  |  |  |  |  |  |  |  |  |  |  |  |  |  |  |  |  |  |  |  |  |  |  |  |  |
| PC-0390 |  | Purchase Order Placement - Underground Water Tank | 10d | 2027-06-28 | 2027-07-07 | PC-2230 | 427d | 0d | PERFORMANCE - Progress Value (SAR, planned earned value) [116550 SAR]; CASH FLOW - Invoiced Cash (SAR, net of advance recovery) [104895 SAR]; Procurement / Contracts Engineer [80 h] | 221,445 | Phase 1 | Phase 1 (Billing) | 4.4 | Procurement | Short Lead | Contractor | Ancillary Buildings | 4.4 UG Water Tank | Procurement | N/A | Purchase Order | N/A | Procurement | On completion | Float > 90 d | Other | None | Substation & Utiliti | No site crew | 2027-06 | 2027-07 | 2027-Q2 | Not TGA process | Baseline | Not applicable |
|  | 03 | **External Works** |  | 2027-06-28 | 2027-07-07 |  |  |  |  |  |  |  |  |  |  |  |  |  |  |  |  |  |  |  |  |  |  |  |  |  |  |  |  |  |  |
|  | 01 | **Site Works and Underground Utilities** |  | 2027-06-28 | 2027-07-07 |  |  |  |  |  |  |  |  |  |  |  |  |  |  |  |  |  |  |  |  |  |  |  |  |  |  |  |  |  |  |
| PC-0400 |  | Purchase Order Placement - Site Works & Underground Utilities | 10d | 2027-06-28 | 2027-07-07 | PC-2240 | 380d | 0d | PERFORMANCE - Progress Value (SAR, planned earned value) [544000 SAR]; CASH FLOW - Invoiced Cash (SAR, net of advance recovery) [489600 SAR]; Procurement / Contracts Engineer [80 h] | 1,033,600 | Phase 1 | Phase 1 (Billing) | 5.1 | Procurement | Short Lead | Contractor | External Works | 5.1 Site Works & Uti | Procurement | N/A | Purchase Order | N/A | Procurement | On completion | Float > 90 d | Other | None | Substation & Utiliti | No site crew | 2027-06 | 2027-07 | 2027-Q2 | Not TGA process | Baseline | Not applicable |
|  | 02 | **Car Parking Sheds (BOQ 1,375 m²)** |  | 2027-06-28 | 2027-07-07 |  |  |  |  |  |  |  |  |  |  |  |  |  |  |  |  |  |  |  |  |  |  |  |  |  |  |  |  |  |  |
| PC-0410 |  | Purchase Order Placement - Car Parking Sheds | 10d | 2027-06-28 | 2027-07-07 | PC-2250 | 367d | 0d | PERFORMANCE - Progress Value (SAR, planned earned value) [39500 SAR]; CASH FLOW - Invoiced Cash (SAR, net of advance recovery) [35550 SAR]; Procurement / Contracts Engineer [80 h] | 75,050 | Phase 1 | Phase 1 (Billing) | 5.2 | Procurement | Short Lead | Contractor | External Works | 5.2 Car Parking Shed | Procurement | N/A | Purchase Order | N/A | Procurement | On completion | Float > 90 d | Other | None | Site & External Zone | No site crew | 2027-06 | 2027-07 | 2027-Q2 | Not TGA process | Baseline | Not applicable |
|  | 03 | **Fence Works (BOQ 500 m)** |  | 2027-06-28 | 2027-07-07 |  |  |  |  |  |  |  |  |  |  |  |  |  |  |  |  |  |  |  |  |  |  |  |  |  |  |  |  |  |  |
| PC-0420 |  | Purchase Order Placement - Fence Works | 10d | 2027-06-28 | 2027-07-07 | PC-2260 | 441d | 0d | PERFORMANCE - Progress Value (SAR, planned earned value) [10000 SAR]; CASH FLOW - Invoiced Cash (SAR, net of advance recovery) [9000 SAR]; Procurement / Contracts Engineer [80 h] | 19,000 | Phase 1 | Phase 1 (Billing) | 5.3 | Procurement | Short Lead | Contractor | External Works | 5.3 Fence Works | Procurement | N/A | Purchase Order | N/A | Procurement | On completion | Float > 90 d | Other | None | Site & External Zone | No site crew | 2027-06 | 2027-07 | 2027-Q2 | Not TGA process | Baseline | Not applicable |
|  | 04 | **Automatic Gate System (BOQ 2 no)** |  | 2027-06-28 | 2027-07-07 |  |  |  |  |  |  |  |  |  |  |  |  |  |  |  |  |  |  |  |  |  |  |  |  |  |  |  |  |  |  |
| PC-0430 |  | Purchase Order Placement - Automatic Gate System | 10d | 2027-06-28 | 2027-07-07 | PC-2270 | 440d | 0d | PERFORMANCE - Progress Value (SAR, planned earned value) [15000 SAR]; CASH FLOW - Invoiced Cash (SAR, net of advance recovery) [13500 SAR]; Procurement / Contracts Engineer [80 h] | 28,500 | Phase 1 | Phase 1 (Billing) | 5.4 | Procurement | Short Lead | Contractor | External Works | 5.4 Automatic Gate | Procurement | N/A | Purchase Order | N/A | Procurement | On completion | Float > 90 d | Other | None | Site & External Zone | No site crew | 2027-06 | 2027-07 | 2027-Q2 | Not TGA process | Baseline | Not applicable |
|  | 04 | **Road Works** |  | 2027-06-28 | 2027-11-10 |  |  |  |  |  |  |  |  |  |  |  |  |  |  |  |  |  |  |  |  |  |  |  |  |  |  |  |  |  |  |
|  | 01 | **Access Road (BOQ ~1,700 m dual carriageway)** |  | 2027-11-01 | 2027-11-10 |  |  |  |  |  |  |  |  |  |  |  |  |  |  |  |  |  |  |  |  |  |  |  |  |  |  |  |  |  |  |
| PC-0440 |  | Purchase Order Placement - Access Road | 10d | 2027-11-01 | 2027-11-10 | PC-2280 | 302d | 0d | PERFORMANCE - Progress Value (SAR, planned earned value) [510000 SAR]; CASH FLOW - Invoiced Cash (SAR, net of advance recovery) [459000 SAR]; Procurement / Contracts Engineer [80 h] | 969,000 | Phase 2 | Phase 2 (Billing) | 6.1 | Procurement | Short Lead | Contractor | Road Works | 6.1 Access Road | Procurement | N/A | Purchase Order | N/A | Procurement | On completion | Float > 90 d | Other | None | Road Zone | No site crew | 2027-11 | 2027-11 | 2027-Q4 | Not TGA process | Baseline | Not applicable |

| ID | WBS | Activity | Duration | Start | Finish | Predecessors | Total float | Free float | Constraint | Resources | Cost | Phase | Contract Phase | BOQ Ref | Stage | Lead Class | Responsibility | Package Group | Work Package | Discipline | Design Stage | Procurement Step | Milestone Type | Cost Component | Payment Basis | Path Class | Critical Driver | Risk Flag | Work Zone | Crew Size Class | Start Month | Finish Month | Start Quarter | TGA Process | Duration Basis | Submit / Review |
| --- | --- | --- | --- | --- | --- | --- | --- | --- | --- | --- | --- | --- | --- | --- | --- | --- | --- | --- | --- | --- | --- | --- | --- | --- | --- | --- | --- | --- | --- | --- | --- | --- | --- | --- | --- | --- |
|  | 02 | **External Works (All works above ground)** |  | 2027-06-28 | 2027-07-07 |  |  |  |  |  |  |  |  |  |  |  |  |  |  |  |  |  |  |  |  |  |  |  |  |  |  |  |  |  |  |  |
| PC-0450 |  | Purchase Order Placement - External Works (Above Ground) | 10d | 2027-06-28 | 2027-07-07 | PC-2290 | 348d | 0d |  | PERFORMANCE - Progress Value (SAR, planned earned value) [449500 SAR]; CASH FLOW - Invoiced Cash (SAR, net of advance recovery) [404550 SAR]; Procurement / Contracts Engineer [80 h] | 854,050 | Phase 1 | Phase 1 (Billing) | 6.3 | Procurement | Short Lead | Contractor | Road Works | 6.3 External Works | Procurement | N/A | Purchase Order | N/A | Procurement | On completion | Float > 90 d | Other | None | Site & External Zone | No site crew | 2027-06 | 2027-07 | 2027-Q2 | Not TGA process | Baseline | Not applicable |
|  | 05 | **Railway Systems** |  | 2027-07-05 | 2027-11-17 |  |  |  |  |  |  |  |  |  |  |  |  |  |  |  |  |  |  |  |  |  |  |  |  |  |  |  |  |  |  |  |
|  | 01 | **Signalling and Telecommunication** |  | 2027-07-05 | 2027-07-14 |  |  |  |  |  |  |  |  |  |  |  |  |  |  |  |  |  |  |  |  |  |  |  |  |  |  |  |  |  |  |  |
| PC-0460 |  | Purchase Order Placement - Signalling & Telecommunication | 10d | 2027-07-05 | 2027-07-14 | PC-2300 | 113d | 0d |  | PERFORMANCE - Progress Value (SAR, planned earned value) [745000 SAR]; CASH FLOW - Invoiced Cash (SAR, net of advance recovery) [670500 SAR]; Procurement / Contracts Engineer [80 h] | 1,415,500 | Phase 1 | Phase 1 (Billing) | 6.2 | Procurement | Long Lead | Contractor | Railway Systems | 6.2 Signalling & Tel | Procurement | N/A | Purchase Order | N/A | Procurement | On completion | Float > 90 d | Other | Order before IFC | Track Zone | No site crew | 2027-07 | 2027-07 | 2027-Q3 | Not TGA process | Baseline | Not applicable |
|  | 02 | **Railway Track Works (BOQ 2,500 m loop line)** |  | 2027-11-08 | 2027-11-17 |  |  |  |  |  |  |  |  |  |  |  |  |  |  |  |  |  |  |  |  |  |  |  |  |  |  |  |  |  |  |  |
| PC-0470 |  | Purchase Order Placement - Railway Track Works | 10d | 2027-11-08 | 2027-11-17 | PC-2310 | 0d |  |  | PERFORMANCE - Progress Value (SAR, planned earned value) [1095000 SAR]; CASH FLOW - Invoiced Cash (SAR, net of advance recovery) [985500 SAR]; Procurement / Contracts Engineer [80 h] | 2,080,500 | Phase 2 | Phase 2 (Billing) | 7.2 | Procurement | Long Lead | Contractor | Railway Systems | 7.2 Railway Track | Procurement | N/A | Purchase Order | N/A | Procurement | On completion | Critical (0 d) | Longest path | Order before IFC | Track Zone | No site crew | 2027-11 | 2027-11 | 2027-Q4 | Not TGA process | Baseline | Not applicable |
|  | 03 | **Railway Turnout Works** |  | 2027-07-05 | 2027-07-14 |  |  |  |  |  |  |  |  |  |  |  |  |  |  |  |  |  |  |  |  |  |  |  |  |  |  |  |  |  |  |  |
| PC-0480 |  | Purchase Order Placement - Railway Turnout Works | 10d | 2027-07-05 | 2027-07-14 | PC-2320 | 120d | 0d |  | PERFORMANCE - Progress Value (SAR, planned earned value) [449950 SAR]; CASH FLOW - Invoiced Cash (SAR, net of advance recovery) [404955 SAR]; Procurement / Contracts Engineer [80 h] | 854,905 | Phase 1 | Phase 1 (Billing) | 7.3 | Procurement | Long Lead | Contractor | Railway Systems | 7.3 Railway Turnouts | Procurement | N/A | Purchase Order | N/A | Procurement | On completion | Float > 90 d | Other | Order before IFC | Track Zone | No site crew | 2027-07 | 2027-07 | 2027-Q3 | Not TGA process | Baseline | Not applicable |
|  | 04 | **Short Lead Item** |  | 2027-07-27 | 2028-02-16 |  |  |  |  |  |  |  |  |  |  |  |  |  |  |  |  |  |  |  |  |  |  |  |  |  |  |  |  |  |  |  |
|  | 01 | **Main Building** |  | 2027-09-21 | 2028-02-16 |  |  |  |  |  |  |  |  |  |  |  |  |  |  |  |  |  |  |  |  |  |  |  |  |  |  |  |  |  |  |  |
|  | 01 | **Main Building (GEA 1,100 m², single storey)** |  | 2027-09-21 | 2027-11-20 |  |  |  |  |  |  |  |  |  |  |  |  |  |  |  |  |  |  |  |  |  |  |  |  |  |  |  |  |  |  |  |
| PC-0490 |  | Supply & Delivery to Site (Short Lead) - Main Building | 60d | 2027-09-21 | 2027-11-20 | PC-0330 | 202d | 0d | start on or after 2027-09-21 | PERFORMANCE - Progress Value (SAR, planned earned value) [337500 SAR]; CASH FLOW - Invoiced Cash (SAR, net of advance recovery) [303750 SAR] | 641,250 | Phase 1 | Phase 1 (Billing) | 3.1 | Procurement | Short Lead | Contractor | Main Building | 3.1 Main Building | Procurement | N/A | Supply & Delivery | N/A | Material Delivered | On delivery | Float > 90 d | Other | None | Station Building Zon | No site crew | 2027-09 | 2027-11 | 2027-Q3 | Not TGA process | Baseline | Not applicable |
|  | 02 | **IT Equipment** |  | 2027-10-28 | 2027-12-26 |  |  |  |  |  |  |  |  |  |  |  |  |  |  |  |  |  |  |  |  |  |  |  |  |  |  |  |  |  |  |  |
| PC-0500 |  | Supply & Delivery to Site (Short Lead) - IT Equipment | 60d | 2027-10-28 | 2027-12-26 | PC-0340 | 300d | 0d | start on or after 2027-10-28 | PERFORMANCE - Progress Value (SAR, planned earned value) [100000 SAR]; CASH FLOW - Invoiced Cash (SAR, net of advance recovery) [90000 SAR] | 190,000 | Phase 1 | Phase 1 (Billing) | 3.2 | Procurement | Short Lead | Contractor | Main Building | 3.2 IT Equipment | Procurement | N/A | Supply & Delivery | N/A | Material Delivered | On delivery | Float > 90 d | Other | None | Station Building Zon | No site crew | 2027-10 | 2027-12 | 2027-Q4 | Not TGA process | Baseline | Not applicable |
|  | 03 | **Furniture Works (FF&E)** |  | 2027-12-19 | 2028-02-16 |  |  |  |  |  |  |  |  |  |  |  |  |  |  |  |  |  |  |  |  |  |  |  |  |  |  |  |  |  |  |  |
| PC-0510 |  | Supply & Delivery to Site (Short Lead) - Furniture Works (FF&E) | 60d | 2027-12-19 | 2028-02-16 | PC-0350 | 262d | 0d | start on or after 2027-12-19 | PERFORMANCE - Progress Value (SAR, planned earned value) [475000 SAR]; CASH FLOW - Invoiced Cash (SAR, net of advance recovery) [427500 SAR] | 902,500 | Phase 2 | Phase 2 (Billing) | 3.3 | Procurement | Short Lead | Contractor | Main Building | 3.3 FF&E | Procurement | N/A | Supply & Delivery | N/A | Material Delivered | On delivery | Float > 90 d | Other | None | Station Building Zon | No site crew | 2027-12 | 2028-02 | 2027-Q4 | Not TGA process | Baseline | Not applicable |
|  | 02 | **Ancillary Buildings** |  | 2027-09-05 | 2027-11-30 |  |  |  |  |  |  |  |  |  |  |  |  |  |  |  |  |  |  |  |  |  |  |  |  |  |  |  |  |  |  |  |
|  | 01 | **Firefighting Building (BOQ GEA 518 m²)** |  | 2027-09-05 | 2027-11-04 |  |  |  |  |  |  |  |  |  |  |  |  |  |  |  |  |  |  |  |  |  |  |  |  |  |  |  |  |  |  |  |
| PC-0520 |  | Supply & Delivery to Site (Short Lead) - Firefighting Building | 60d | 2027-09-05 | 2027-11-04 | PC-0370 | 338d | 0d | start on or after 2027-09-05 | PERFORMANCE - Progress Value (SAR, planned earned value) [223500 SAR]; CASH FLOW - Invoiced Cash (SAR, net of advance recovery) [201150 SAR] | 424,650 | Phase 1 | Phase 1 (Billing) | 4.2 | Procurement | Short Lead | Contractor | Ancillary Buildings | 4.2 Firefighting Bld | Procurement | N/A | Supply & Delivery | N/A | Material Delivered | On delivery | Float > 90 d | Other | None | Station Building Zon | No site crew | 2027-09 | 2027-11 | 2027-Q3 | Not TGA process | Baseline | Not applicable |
|  | 02 | **Underground Water Tank** |  | 2027-10-17 | 2027-11-30 |  |  |  |  |  |  |  |  |  |  |  |  |  |  |  |  |  |  |  |  |  |  |  |  |  |  |  |  |  |  |  |
| PC-0530 |  | Supply & Delivery to Site (Short Lead) - Underground Water Tank | 45d | 2027-10-17 | 2027-11-30 | PC-0390 | 327d | 0d | start on or after 2027-10-17 | PERFORMANCE - Progress Value (SAR, planned earned value) [349650 SAR]; CASH FLOW - Invoiced Cash (SAR, net of advance recovery) [314685 SAR] | 664,335 | Phase 1 | Phase 1 (Billing) | 4.4 | Procurement | Short Lead | Contractor | Ancillary Buildings | 4.4 UG Water Tank | Procurement | N/A | Supply & Delivery | N/A | Material Delivered | On delivery | Float > 90 d | Other | None | Substation & Utiliti | No site crew | 2027-10 | 2027-11 | 2027-Q4 | Not TGA process | Baseline | Not applicable |
|  | 03 | **External Works** |  | 2027-07-27 | 2028-01-07 |  |  |  |  |  |  |  |  |  |  |  |  |  |  |  |  |  |  |  |  |  |  |  |  |  |  |  |  |  |  |  |
|  | 01 | **Site Works and Underground Utilities** |  | 2027-07-27 | 2027-09-25 |  |  |  |  |  |  |  |  |  |  |  |  |  |  |  |  |  |  |  |  |  |  |  |  |  |  |  |  |  |  |  |
| PC-0540 |  | Supply & Delivery to Site (Short Lead) - Site Works & Underground Utilities | 60d | 2027-07-27 | 2027-09-25 | PC-0400 | 361d | 0d | start on or after 2027-07-27 | PERFORMANCE - Progress Value (SAR, planned earned value) [1632000 SAR]; CASH FLOW - Invoiced Cash (SAR, net of advance recovery) [1468800 SAR] | 3,100,800 | Phase 1 | Phase 1 (Billing) | 5.1 | Procurement | Short Lead | Contractor | External Works | 5.1 Site Works & Uti | Procurement | N/A | Supply & Delivery | N/A | Material Delivered | On delivery | Float > 90 d | Other | None | Substation & Utiliti | No site crew | 2027-07 | 2027-09 | 2027-Q3 | Not TGA process | Baseline | Not applicable |

| ID | WBS | Activity | Duration | Start | Finish | Predecessors | Total float | Free float | Constraint | Calendar | Resources | Cost | Phase | Contract Phase | BOQ Ref | Stage | Lead Class | Responsibility | Package Group | Work Package | Discipline | Design Stage | Procurement Step | Milestone Type | Cost Component | Payment Basis | Path Class | Critical Driver | Risk Flag | Work Zone | Crew Size Class | Start Month | Finish Month | Start Quarter | TGA Process | Duration Basis | Submit / Review |
| --- | --- | --- | --- | --- | --- | --- | --- | --- | --- | --- | --- | --- | --- | --- | --- | --- | --- | --- | --- | --- | --- | --- | --- | --- | --- | --- | --- | --- | --- | --- | --- | --- | --- | --- | --- | --- | --- |
|  | 02 | **Car Parking Sheds (BOQ 1,375 m²)** |  | 2027-11-09 | 2028-01-07 |  |  |  |  |  |  |  |  |  |  |  |  |  |  |  |  |  |  |  |  |  |  |  |  |  |  |  |  |  |  |  |  |
| PC-0550 |  | Supply & Delivery to Site (Short Lead) - Car Parking Sheds | 60d | 2027-11-09 | 2028-01-07 | PC-0410 | 244d | 0d | start on or after 2027-11-09 |  | PERFORMANCE - Progress Value (SAR, planned earned value) [118500 SAR]; CASH FLOW - Invoiced Cash (SAR, net of advance recovery) [106650 SAR] | 225,150 | Phase 1 | Phase 1 (Billing) | 5.2 | Procurement | Short Lead | Contractor | External Works | 5.2 Car Parking Shed | Procurement | N/A | Supply & Delivery | N/A | Material Delivered | On delivery | Float > 90 d | Other | None | Site & External Zone | No site crew | 2027-11 | 2028-01 | 2027-Q4 | Not TGA process | Baseline | Not applicable |
|  | 03 | **Fence Works (BOQ 500 m)** |  | 2027-09-29 | 2027-11-12 |  |  |  |  |  |  |  |  |  |  |  |  |  |  |  |  |  |  |  |  |  |  |  |  |  |  |  |  |  |  |  |  |
| PC-0560 |  | Supply & Delivery to Site (Short Lead) - Fence Works | 45d | 2027-09-29 | 2027-11-12 | PC-0420 | 359d | 0d | start on or after 2027-09-29 |  | PERFORMANCE - Progress Value (SAR, planned earned value) [20000 SAR]; CASH FLOW - Invoiced Cash (SAR, net of advance recovery) [18000 SAR] | 38,000 | Phase 1 | Phase 1 (Billing) | 5.3 | Procurement | Short Lead | Contractor | External Works | 5.3 Fence Works | Procurement | N/A | Supply & Delivery | N/A | Material Delivered | On delivery | Float > 90 d | Other | None | Site & External Zone | No site crew | 2027-09 | 2027-11 | 2027-Q3 | Not TGA process | Baseline | Not applicable |
|  | 04 | **Automatic Gate System (BOQ 2 no)** |  | 2027-08-05 | 2027-10-04 |  |  |  |  |  |  |  |  |  |  |  |  |  |  |  |  |  |  |  |  |  |  |  |  |  |  |  |  |  |  |  |  |
| PC-0570 |  | Supply & Delivery to Site (Short Lead) - Automatic Gate System | 60d | 2027-08-05 | 2027-10-04 | PC-0430 | 412d | 0d | start on or after 2027-08-05 |  | PERFORMANCE - Progress Value (SAR, planned earned value) [75000 SAR]; CASH FLOW - Invoiced Cash (SAR, net of advance recovery) [67500 SAR] | 142,500 | Phase 1 | Phase 1 (Billing) | 5.4 | Procurement | Short Lead | Contractor | External Works | 5.4 Automatic Gate | Procurement | N/A | Supply & Delivery | N/A | Material Delivered | On delivery | Float > 90 d | Other | None | Site & External Zone | No site crew | 2027-08 | 2027-10 | 2027-Q3 | Not TGA process | Baseline | Not applicable |
|  | 04 | **Road Works** |  | 2027-11-04 | 2027-12-18 |  |  |  |  |  |  |  |  |  |  |  |  |  |  |  |  |  |  |  |  |  |  |  |  |  |  |  |  |  |  |  |  |
|  | 01 | **Access Road (BOQ ~1,700 m dual carriageway)** |  | 2027-11-11 | 2027-12-10 |  |  |  |  |  |  |  |  |  |  |  |  |  |  |  |  |  |  |  |  |  |  |  |  |  |  |  |  |  |  |  |  |
| PC-0580 |  | Supply & Delivery to Site (Short Lead) - Access Road | 30d | 2027-11-11 | 2027-12-10 | PC-0440 | 302d | 0d | start on or after 2027-10-28 |  | PERFORMANCE - Progress Value (SAR, planned earned value) [1530000 SAR]; CASH FLOW - Invoiced Cash (SAR, net of advance recovery) [1377000 SAR] | 2,907,000 | Phase 2 | Phase 2 (Billing) | 6.1 | Procurement | Short Lead | Contractor | Road Works | 6.1 Access Road | Procurement | N/A | Supply & Delivery | N/A | Material Delivered | On delivery | Float > 90 d | Other | None | Road Zone | No site crew | 2027-11 | 2027-12 | 2027-Q4 | Not TGA process | Baseline | Not applicable |
|  | 02 | **External Works (All works above ground)** |  | 2027-11-04 | 2027-12-18 |  |  |  |  |  |  |  |  |  |  |  |  |  |  |  |  |  |  |  |  |  |  |  |  |  |  |  |  |  |  |  |  |
| PC-0590 |  | Supply & Delivery to Site (Short Lead) - External Works (Above Ground) | 45d | 2027-11-04 | 2027-12-18 | PC-0450 | 230d | 0d | start on or after 2027-11-04 |  | PERFORMANCE - Progress Value (SAR, planned earned value) [1348500 SAR]; CASH FLOW - Invoiced Cash (SAR, net of advance recovery) [1213650 SAR] | 2,562,150 | Phase 1 | Phase 1 (Billing) | 6.3 | Procurement | Short Lead | Contractor | Road Works | 6.3 External Works | Procurement | N/A | Supply & Delivery | N/A | Material Delivered | On delivery | Float > 90 d | Other | None | Site & External Zone | No site crew | 2027-11 | 2027-12 | 2027-Q4 | Not TGA process | Baseline | Not applicable |
|  | 05 | **Long Lead Item** |  | 2027-07-15 | 2028-08-09 |  |  |  |  |  |  |  |  |  |  |  |  |  |  |  |  |  |  |  |  |  |  |  |  |  |  |  |  |  |  |  |  |
|  | 01 | **Ancillary Buildings** |  | 2027-07-15 | 2028-05-06 |  |  |  |  |  |  |  |  |  |  |  |  |  |  |  |  |  |  |  |  |  |  |  |  |  |  |  |  |  |  |  |  |
|  | 01 | **Substation and SEC Works** |  | 2027-07-15 | 2028-01-31 |  |  |  |  |  |  |  |  |  |  |  |  |  |  |  |  |  |  |  |  |  |  |  |  |  |  |  |  |  |  |  |  |
| PC-0600 |  | Manufacture (Long Lead) - Substation & SEC Works | 180d | 2027-07-15 | 2028-01-10 | PC-0360 | 158d | 0d |  | SAR-24/7 Manufacturing & Shipping (calendar days) | PERFORMANCE - Progress Value (SAR, planned earned value) [784125 SAR]; CASH FLOW - Invoiced Cash (SAR, net of advance recovery) [705712 SAR] | 1,489,837.5 | Phase 1 | Phase 1 (Billing) | 4.1 | Procurement | Long Lead | Contractor | Ancillary Buildings | 4.1 Substation & SEC | Procurement | N/A | Manufacture | N/A | Material Delivered | On delivery | Float > 90 d | Other | Long-lead manufactur | Substation & Utiliti | No site crew | 2027-07 | 2028-01 | 2027-Q3 | Not TGA process | Baseline | Not applicable |
| PC-0610 |  | Shipping & Delivery to Site - Substation & SEC Works | 21d | 2028-01-11 | 2028-01-31 | PC-0600 | 158d | 0d |  | SAR-24/7 Manufacturing & Shipping (calendar days) | PERFORMANCE - Progress Value (SAR, planned earned value) [138375 SAR]; CASH FLOW - Invoiced Cash (SAR, net of advance recovery) [124538 SAR] | 262,912.5 | Phase 1 | Phase 1 (Billing) | 4.1 | Procurement | Long Lead | Contractor | Ancillary Buildings | 4.1 Substation & SEC | Procurement | N/A | Shipping | N/A | Material Delivered | On delivery | Float > 90 d | Other | Long-lead manufactur | Substation & Utiliti | No site crew | 2028-01 | 2028-01 | 2028-Q1 | Not TGA process | Baseline | Not applicable |
|  | 02 | **Generator Room (BOQ 62 m²)** |  | 2027-11-18 | 2028-05-06 |  |  |  |  |  |  |  |  |  |  |  |  |  |  |  |  |  |  |  |  |  |  |  |  |  |  |  |  |  |  |  |  |
| PC-0620 |  | Manufacture (Long Lead) - Generator Room | 150d | 2027-11-18 | 2028-04-15 | PC-0380 | 163d | 0d |  | SAR-24/7 Manufacturing & Shipping (calendar days) | PERFORMANCE - Progress Value (SAR, planned earned value) [210375 SAR]; CASH FLOW - Invoiced Cash (SAR, net of advance recovery) [189338 SAR] | 399,712.5 | Phase 2 | Phase 2 (Billing) | 4.3 | Procurement | Long Lead | Contractor | Ancillary Buildings | 4.3 Generator Room | Procurement | N/A | Manufacture | N/A | Material Delivered | On delivery | Float > 90 d | Other | Long-lead manufactur | Substation & Utiliti | No site crew | 2027-11 | 2028-04 | 2027-Q4 | Not TGA process | Baseline | Not applicable |
| PC-0630 |  | Shipping & Delivery to Site - Generator Room | 21d | 2028-04-16 | 2028-05-06 | PC-0620 | 163d | 0d |  | SAR-24/7 Manufacturing & Shipping (calendar days) | PERFORMANCE - Progress Value (SAR, planned earned value) [37125 SAR]; CASH FLOW - Invoiced Cash (SAR, net of advance recovery) [33412.5 SAR] | 70,537.5 | Phase 2 | Phase 2 (Billing) | 4.3 | Procurement | Long Lead | Contractor | Ancillary Buildings | 4.3 Generator Room | Procurement | N/A | Shipping | N/A | Material Delivered | On delivery | Float > 90 d | Other | Long-lead manufactur | Substation & Utiliti | No site crew | 2028-04 | 2028-05 | 2028-Q2 | Not TGA process | Baseline | Not applicable |
|  | 02 | **Railway Systems** |  | 2027-07-15 | 2028-08-09 |  |  |  |  |  |  |  |  |  |  |  |  |  |  |  |  |  |  |  |  |  |  |  |  |  |  |  |  |  |  |  |  |
|  | 01 | **Signalling and Telecommunication** |  | 2027-07-15 | 2028-04-05 |  |  |  |  |  |  |  |  |  |  |  |  |  |  |  |  |  |  |  |  |  |  |  |  |  |  |  |  |  |  |  |  |
| PC-0640 |  | Manufacture (Long Lead) - Signalling & Telecommunication | 245d | 2027-07-15 | 2028-03-15 | PC-0460 | 114d | 0d |  | SAR-24/7 Manufacturing & Shipping (calendar days) | PERFORMANCE - Progress Value (SAR, planned earned value) [4432750 SAR]; CASH FLOW - Invoiced Cash (SAR, net of advance recovery) [3989475 SAR] | 8,422,225 | Phase 1 | Phase 1 (Billing) | 6.2 | Procurement | Long Lead | Contractor | Railway Systems | 6.2 Signalling & Tel | Procurement | N/A | Manufacture | N/A | Material Delivered | On delivery | Float > 90 d | Other | Long-lead manufactur | Track Zone | No site crew | 2027-07 | 2028-03 | 2027-Q3 | Not TGA process | Baseline | Not applicable |
| PC-0650 |  | Shipping & Delivery to Site - Signalling & Telecommunication | 21d | 2028-03-16 | 2028-04-05 | PC-0640 | 114d | 0d |  | SAR-24/7 Manufacturing & Shipping (calendar days) | PERFORMANCE - Progress Value (SAR, planned earned value) [782250 SAR]; CASH FLOW - Invoiced Cash (SAR, net of advance recovery) [704025 SAR] | 1,486,275 | Phase 1 | Phase 1 (Billing) | 6.2 | Procurement | Long Lead | Contractor | Railway Systems | 6.2 Signalling & Tel | Procurement | N/A | Shipping | N/A | Material Delivered | On delivery | Float > 90 d | Other | Long-lead manufactur | Track Zone | No site crew | 2028-03 | 2028-04 | 2028-Q1 | Not TGA process | Baseline | Not applicable |
|  | 02 | **Railway Track Works (BOQ 2,500 m loop line)** |  | 2027-11-18 | 2028-08-09 |  |  |  |  |  |  |  |  |  |  |  |  |  |  |  |  |  |  |  |  |  |  |  |  |  |  |  |  |  |  |  |  |
| PC-0660 |  | Manufacture (Long Lead) - Railway Track Works | 245d | 2027-11-18 | 2028-07-19 | PC-0470 | 0d |  |  | SAR-24/7 Manufacturing & Shipping (calendar days) | PERFORMANCE - Progress Value (SAR, planned earned value) [6515250 SAR]; CASH FLOW - Invoiced Cash (SAR, net of advance recovery) [5863725 SAR] | 12,378,975 | Phase 2 | Phase 2 (Billing) | 7.2 | Procurement | Long Lead | Contractor | Railway Systems | 7.2 Railway Track | Procurement | N/A | Manufacture | N/A | Material Delivered | On delivery | Critical (0 d) | Longest path | Long-lead manufactur | Track Zone | No site crew | 2027-11 | 2028-07 | 2027-Q4 | Not TGA process | Baseline | Not applicable |
| PC-0670 |  | Shipping & Delivery to Site - Railway Track Works | 21d | 2028-07-20 | 2028-08-09 | PC-0660 | 0d |  |  | SAR-24/7 Manufacturing & Shipping (calendar days) | PERFORMANCE - Progress Value (SAR, planned earned value) [1149750 SAR]; CASH FLOW - Invoiced Cash (SAR, net of advance recovery) [1034775 SAR] | 2,184,525 | Phase 2 | Phase 2 (Billing) | 7.2 | Procurement | Long Lead | Contractor | Railway Systems | 7.2 Railway Track | Procurement | N/A | Shipping | N/A | Material Delivered | On delivery | Critical (0 d) | Longest path | Long-lead manufactur | Track Zone | No site crew | 2028-07 | 2028-08 | 2028-Q3 | Not TGA process | Baseline | Not applicable |

| ID | WBS | Activity | Duration | Start | Finish | Predecessors | Total float | Free float | Calendar | Resources | Cost | Phase | Contract Phase | BOQ Ref | Stage | Lead Class | Responsibility | Package Group | Work Package | Discipline | Design Stage | Procurement Step | Milestone Type | Cost Component | Payment Basis | Path Class | Critical Driver | Risk Flag | Work Zone | Crew Size Class | Start Month | Finish Month | Start Quarter | TGA Process | Duration Basis | Submit / Review |
| --- | --- | --- | --- | --- | --- | --- | --- | --- | --- | --- | --- | --- | --- | --- | --- | --- | --- | --- | --- | --- | --- | --- | --- | --- | --- | --- | --- | --- | --- | --- | --- | --- | --- | --- | --- | --- |
|  | 03 | **Railway Turnout Works** |  | 2027-07-15 | 2028-04-05 |  |  |  |  |  |  |  |  |  |  |  |  |  |  |  |  |  |  |  |  |  |  |  |  |  |  |  |  |  |  |  |
| PC-0680 |  | Manufacture (Long Lead) - Railway Turnout Works | 245d | 2027-07-15 | 2028-03-15 | PC-0480 | 121d | 0d | SAR-24/7 Manufacturing & Shipping (calendar days) | PERFORMANCE - Progress Value (SAR, planned earned value) [2677202 SAR]; CASH FLOW - Invoiced Cash (SAR, net of advance recovery) [2409482 SAR] | 5,086,684.75 | Phase 1 | Phase 1 (Billing) | 7.3 | Procurement | Long Lead | Contractor | Railway Systems | 7.3 Railway Turnouts | Procurement | N/A | Manufacture | N/A | Material Delivered | On delivery | Float > 90 d | Railway convergence | Long-lead manufactur | Track Zone | No site crew | 2027-07 | 2028-03 | 2027-Q3 | Not TGA process | Baseline | Not applicable |
| PC-0690 |  | Shipping & Delivery to Site - Railway Turnout Works | 21d | 2028-03-16 | 2028-04-05 | PC-0680 | 121d | 0d | SAR-24/7 Manufacturing & Shipping (calendar days) | PERFORMANCE - Progress Value (SAR, planned earned value) [472448 SAR]; CASH FLOW - Invoiced Cash (SAR, net of advance recovery) [425203 SAR] | 897,650.25 | Phase 1 | Phase 1 (Billing) | 7.3 | Procurement | Long Lead | Contractor | Railway Systems | 7.3 Railway Turnouts | Procurement | N/A | Shipping | N/A | Material Delivered | On delivery | Float > 90 d | Railway convergence | Long-lead manufactur | Track Zone | No site crew | 2028-03 | 2028-04 | 2028-Q1 | Not TGA process | Baseline | Not applicable |
|  | 05 | **Construction** |  | 2027-10-09 | 2028-10-21 |  |  |  |  |  |  |  |  |  |  |  |  |  |  |  |  |  |  |  |  |  |  |  |  |  |  |  |  |  |  |  |
|  | 01 | **Main Building** |  | 2027-10-16 | 2028-03-30 |  |  |  |  |  |  |  |  |  |  |  |  |  |  |  |  |  |  |  |  |  |  |  |  |  |  |  |  |  |  |  |
|  | 01 | **Main Building (GEA 1,100 m², single storey)** |  | 2027-10-16 | 2028-03-19 |  |  |  |  |  |  |  |  |  |  |  |  |  |  |  |  |  |  |  |  |  |  |  |  |  |  |  |  |  |  |  |
|  | 01 | **Earthwork** |  | 2027-10-16 | 2027-11-07 |  |  |  |  |  |  |  |  |  |  |  |  |  |  |  |  |  |  |  |  |  |  |  |  |  |  |  |  |  |  |  |
| CN-0010 |  | Excavation, Shoring & Dewatering | 8d | 2027-10-16 | 2027-10-24 | MS-0090 FS+7d, PR-0150 | 281d | 0d | SAR-6D Construction (Fri off, public holidays off) | PERFORMANCE - Progress Value (SAR, planned earned value) [24623.7 SAR]; CASH FLOW - Invoiced Cash (SAR, net of advance recovery) [22161.3 SAR]; Foreman [64 h]; Surveyor / Setting-out Crew [64 h]; General Labourer [448 h]; Plant Operator / Driver [448 h]; Site Engineer / Supervisor [64 h]; Excavator [128 h]; Wheel Loader / Backhoe [64 h]; Dump Truck / Tipper [256 h]; Vibratory Roller / Compactor [64 h]; Water Tanker [64 h] | 46,785.03 | Phase 1 | Phase 1 (Billing) | 3.1 | Construction | N/A | Contractor | Main Building | 3.1 Main Building | Civil & Earthworks | N/A | N/A | N/A | Construction | Monthly progress | Float > 90 d | Other | None | Station Building Zon | Medium (15-40) | 2027-10 | 2027-10 | 2027-Q4 | Not TGA process | Baseline | Not applicable |
| CN-0020 |  | Backfilling & Compaction around Foundations | 6d | 2027-11-01 | 2027-11-07 | CN-0040 | 253d | 0d | SAR-6D Construction (Fri off, public holidays off) | PERFORMANCE - Progress Value (SAR, planned earned value) [18467.8 SAR]; CASH FLOW - Invoiced Cash (SAR, net of advance recovery) [16621 SAR]; Foreman [48 h]; Surveyor / Setting-out Crew [48 h]; General Labourer [336 h]; Plant Operator / Driver [336 h]; Site Engineer / Supervisor [48 h]; Excavator [96 h]; Wheel Loader / Backhoe [48 h]; Dump Truck / Tipper [192 h]; Vibratory Roller / Compactor [48 h]; Water Tanker [48 h] | 35,088.78 | Phase 1 | Phase 1 (Billing) | 3.1 | Construction | N/A | Contractor | Main Building | 3.1 Main Building | Civil & Earthworks | N/A | N/A | N/A | Construction | Monthly progress | Float > 90 d | Other | None | Station Building Zon | Medium (15-40) | 2027-11 | 2027-11 | 2027-Q4 | Not TGA process | Baseline | Not applicable |
|  | 02 | **Concrete Work** |  | 2027-10-16 | 2027-12-11 |  |  |  |  |  |  |  |  |  |  |  |  |  |  |  |  |  |  |  |  |  |  |  |  |  |  |  |  |  |  |  |
|  | 01 | **Sub Structure** |  | 2027-10-16 | 2027-11-25 |  |  |  |  |  |  |  |  |  |  |  |  |  |  |  |  |  |  |  |  |  |  |  |  |  |  |  |  |  |  |  |
| CN-0030 |  | Blinding & Foundation Waterproofing | 3d | 2027-10-16 | 2027-10-18 | MS-0090 FS+7d, PR-0150 | 286d | 0d | SAR-6D Construction (Fri off, public holidays off) | PERFORMANCE - Progress Value (SAR, planned earned value) [9233.89 SAR]; CASH FLOW - Invoiced Cash (SAR, net of advance recovery) [8310.5 SAR]; Site Engineer / Supervisor [24 h]; Foreman [48 h]; Carpenter (Formwork) [168 h]; Steel Fixer [168 h]; Concrete / Mason Gang [264 h]; General Labourer [120 h]; Surveyor / Setting-out Crew [24 h]; Concrete Pump [24 h]; Transit Mixer [72 h]; Mobile Crane (50-100 t) [24 h]; Scissor Lift / Scaffolding Set [24 h] | 17,544.39 | Phase 1 | Phase 1 (Billing) | 3.1 | Construction | N/A | Contractor | Main Building | 3.1 Main Building | Structure (RC / Stee | N/A | N/A | N/A | Construction | Monthly progress | Float > 90 d | Other | None | Station Building Zon | Medium (15-40) | 2027-10 | 2027-10 | 2027-Q4 | Not TGA process | Baseline | Not applicable |
| CN-0040 |  | Footings & Ground Beams - Formwork, Rebar & Concrete | 14d | 2027-10-16 | 2027-10-31 | MS-0090 FS+7d, PR-0150 | 162d | 0d | SAR-6D Construction (Fri off, public holidays off) | PERFORMANCE - Progress Value (SAR, planned earned value) [43091.5 SAR]; CASH FLOW - Invoiced Cash (SAR, net of advance recovery) [38782.3 SAR]; Site Engineer / Supervisor [112 h]; Foreman [224 h]; Carpenter (Formwork) [784 h]; Steel Fixer [784 h]; Concrete / Mason Gang [1232 h]; General Labourer [560 h]; Surveyor / Setting-out Crew [112 h]; Concrete Pump [112 h]; Transit Mixer [336 h]; Mobile Crane (50-100 t) [112 h]; Scissor Lift / Scaffolding Set [112 h] | 81,873.81 | Phase 1 | Phase 1 (Billing) | 3.1 | Construction | N/A | Contractor | Main Building | 3.1 Main Building | Structure (RC / Stee | N/A | N/A | N/A | Construction | Monthly progress | Float > 90 d | Other | None | Station Building Zon | Medium (15-40) | 2027-10 | 2027-10 | 2027-Q4 | Not TGA process | Baseline | Not applicable |
| CN-0050 |  | Slab on Grade & Plinth Beams | 8d | 2027-11-17 | 2027-11-25 | CN-0060, CN-0090 | 253d | 0d | SAR-6D Construction (Fri off, public holidays off) | PERFORMANCE - Progress Value (SAR, planned earned value) [24623.7 SAR]; CASH FLOW - Invoiced Cash (SAR, net of advance recovery) [22161.3 SAR]; Site Engineer / Supervisor [64 h]; Foreman [128 h]; Carpenter (Formwork) [448 h]; Steel Fixer [448 h]; Concrete / Mason Gang [704 h]; General Labourer [320 h]; Surveyor / Setting-out Crew [64 h]; Concrete Pump [64 h]; Transit Mixer [192 h]; Mobile Crane (50-100 t) [64 h]; Scissor Lift / Scaffolding Set [64 h] | 46,785.03 | Phase 1 | Phase 1 (Billing) | 3.1 | Construction | N/A | Contractor | Main Building | 3.1 Main Building | Structure (RC / Stee | N/A | N/A | N/A | Construction | Monthly progress | Float > 90 d | Other | None | Station Building Zon | Medium (15-40) | 2027-11 | 2027-11 | 2027-Q4 | Not TGA process | Baseline | Not applicable |
|  | 02 | **Super Structure** |  | 2027-11-01 | 2027-12-11 |  |  |  |  |  |  |  |  |  |  |  |  |  |  |  |  |  |  |  |  |  |  |  |  |  |  |  |  |  |  |  |
| CN-0060 |  | RC Columns & Walls | 12d | 2027-11-01 | 2027-11-14 | CN-0040 | 162d | 0d | SAR-6D Construction (Fri off, public holidays off) | PERFORMANCE - Progress Value (SAR, planned earned value) [36935.6 SAR]; CASH FLOW - Invoiced Cash (SAR, net of advance recovery) [33242 SAR]; Site Engineer / Supervisor [96 h]; Foreman [192 h]; Carpenter (Formwork) [672 h]; Steel Fixer [672 h]; Concrete / Mason Gang [1056 h]; General Labourer [480 h]; Surveyor / Setting-out Crew [96 h]; Concrete Pump [96 h]; Transit Mixer [288 h]; Mobile Crane (50-100 t) [96 h]; Scissor Lift / Scaffolding Set [96 h] | 70,177.55 | Phase 1 | Phase 1 (Billing) | 3.1 | Construction | N/A | Contractor | Main Building | 3.1 Main Building | Structure (RC / Stee | N/A | N/A | N/A | Construction | Monthly progress | Float > 90 d | Other | None | Station Building Zon | Medium (15-40) | 2027-11 | 2027-11 | 2027-Q4 | Not TGA process | Baseline | Not applicable |
| CN-0070 |  | Roof Beams & Slab - Formwork & Reinforcement | 16d | 2027-11-15 | 2027-12-02 | CN-0060 | 162d | 0d | SAR-6D Construction (Fri off, public holidays off) | PERFORMANCE - Progress Value (SAR, planned earned value) [49247.4 SAR]; CASH FLOW - Invoiced Cash (SAR, net of advance recovery) [44322.7 SAR]; Site Engineer / Supervisor [128 h]; Foreman [256 h]; Carpenter (Formwork) [896 h]; Steel Fixer [896 h]; Concrete / Mason Gang [1408 h]; General Labourer [640 h]; Surveyor / Setting-out Crew [128 h]; Concrete Pump [128 h]; Transit Mixer [384 h]; Mobile Crane (50-100 t) [128 h]; Scissor Lift / Scaffolding Set [128 h] | 93,570.06 | Phase 1 | Phase 1 (Billing) | 3.1 | Construction | N/A | Contractor | Main Building | 3.1 Main Building | Structure (RC / Stee | N/A | N/A | N/A | Construction | Monthly progress | Float > 90 d | Other | None | Station Building Zon | Medium (15-40) | 2027-11 | 2027-12 | 2027-Q4 | Not TGA process | Baseline | Not applicable |
| CN-0080 |  | Roof Slab Concrete Pour & Curing | 7d | 2027-12-04 | 2027-12-11 | CN-0070, CN-0190 | 220d | 0d | SAR-6D Construction (Fri off, public holidays off) | PERFORMANCE - Progress Value (SAR, planned earned value) [21545.7 SAR]; CASH FLOW - Invoiced Cash (SAR, net of advance recovery) [19391.2 SAR]; Site Engineer / Supervisor [56 h]; Foreman [112 h]; Carpenter (Formwork) [392 h]; Steel Fixer [392 h]; Concrete / Mason Gang [616 h]; General Labourer [280 h]; Surveyor / Setting-out Crew [56 h]; Concrete Pump [56 h]; Transit Mixer [168 h]; Mobile Crane (50-100 t) [56 h]; Scissor Lift / Scaffolding Set [56 h] | 40,936.91 | Phase 1 | Phase 1 (Billing) | 3.1 | Construction | N/A | Contractor | Main Building | 3.1 Main Building | Structure (RC / Stee | N/A | N/A | N/A | Construction | Monthly progress | Float > 90 d | Other | None | Station Building Zon | Medium (15-40) | 2027-12 | 2027-12 | 2027-Q4 | Not TGA process | Baseline | Not applicable |
|  | 03 | **MEP Works** |  | 2027-11-08 | 2028-02-21 |  |  |  |  |  |  |  |  |  |  |  |  |  |  |  |  |  |  |  |  |  |  |  |  |  |  |  |  |  |  |  |
|  | 01 | **Plumbing** |  | 2027-11-08 | 2028-02-21 |  |  |  |  |  |  |  |  |  |  |  |  |  |  |  |  |  |  |  |  |  |  |  |  |  |  |  |  |  |  |  |
| CN-0090 |  | Underground Drainage & Sleeves | 8d | 2027-11-08 | 2027-11-16 | CN-0020 | 253d | 0d | SAR-6D Construction (Fri off, public holidays off) | PERFORMANCE - Progress Value (SAR, planned earned value) [24623.7 SAR]; CASH FLOW - Invoiced Cash (SAR, net of advance recovery) [22161.3 SAR]; Site Engineer / Supervisor [64 h]; Foreman [64 h]; General Labourer [320 h]; Wheel Loader / Backhoe [64 h] | 46,785.03 | Phase 1 | Phase 1 (Billing) | 3.1 | Construction | N/A | Contractor | Main Building | 3.1 Main Building | Civil & Earthworks | N/A | N/A | N/A | Construction | Monthly progress | Float > 90 d | Other | None | Station Building Zon | Small (<15) | 2027-11 | 2027-11 | 2027-Q4 | Not TGA process | Baseline | Not applicable |
| CN-0100 |  | Water Supply & Drainage Piping - First Fix | 18d | 2027-12-04 | 2027-12-23 | CN-0070, CN-0190 | 164d | 0d | SAR-6D Construction (Fri off, public holidays off) | PERFORMANCE - Progress Value (SAR, planned earned value) [55403.3 SAR]; CASH FLOW - Invoiced Cash (SAR, net of advance recovery) [49863 SAR]; Site Engineer / Supervisor [144 h]; Foreman [144 h]; Plumber / Pipe Fitter [1008 h]; HVAC Technician [576 h]; General Labourer [720 h]; Scissor Lift / Scaffolding Set [144 h]; Mobile Crane (50-100 t) [144 h] | 105,266.33 | Phase 1 | Phase 1 (Billing) | 3.1 | Construction | N/A | Contractor | Main Building | 3.1 Main Building | MEP - Mechanical | N/A | N/A | N/A | Construction | Monthly progress | Float > 90 d | Other | None | Station Building Zon | Medium (15-40) | 2027-12 | 2027-12 | 2027-Q4 | Not TGA process | Baseline | Not applicable |
| CN-0110 |  | Sanitary Fixtures & Second Fix | 13d | 2028-02-07 | 2028-02-21 | CN-0280 | 178d | 0d | SAR-6D Construction (Fri off, public holidays off) | PERFORMANCE - Progress Value (SAR, planned earned value) [40013.5 SAR]; CASH FLOW - Invoiced Cash (SAR, net of advance recovery) [36012.2 SAR]; Site Engineer / Supervisor [104 h]; Foreman [104 h]; Plumber / Pipe Fitter [728 h]; HVAC Technician [416 h]; General Labourer [520 h]; Scissor Lift / Scaffolding Set [104 h]; Mobile Crane (50-100 t) [104 h] | 76,025.67 | Phase 1 | Phase 1 (Billing) | 3.1 | Construction | N/A | Contractor | Main Building | 3.1 Main Building | MEP - Mechanical | N/A | N/A | N/A | Construction | Monthly progress | Float > 90 d | Other | Ramadan productivity | Station Building Zon | Medium (15-40) | 2028-02 | 2028-02 | 2028-Q1 | Not TGA process | Baseline | Not applicable |
|  | 02 | **HVAC** |  | 2027-12-04 | 2028-02-17 |  |  |  |  |  |  |  |  |  |  |  |  |  |  |  |  |  |  |  |  |  |  |  |  |  |  |  |  |  |  |  |
| CN-0120 |  | Ductwork & Piping - First Fix | 20d | 2027-12-04 | 2027-12-26 | PC-0490, CN-0070, CN-0190 | 162d | 0d | SAR-6D Construction (Fri off, public holidays off) | PERFORMANCE - Progress Value (SAR, planned earned value) [61559.2 SAR]; CASH FLOW - Invoiced Cash (SAR, net of advance recovery) [55403.3 SAR]; Site Engineer / Supervisor [160 h]; Foreman [160 h]; Plumber / Pipe Fitter [1120 h]; HVAC Technician [640 h]; General Labourer [800 h]; Scissor Lift / Scaffolding Set [160 h]; Mobile Crane (50-100 t) [160 h] | 116,962.58 | Phase 1 | Phase 1 (Billing) | 3.1 | Construction | N/A | Contractor | Main Building | 3.1 Main Building | MEP - Mechanical | N/A | N/A | N/A | Construction | Monthly progress | Float > 90 d | Other | None | Station Building Zon | Medium (15-40) | 2027-12 | 2027-12 | 2027-Q4 | Not TGA process | Baseline | Not applicable |
| CN-0130 |  | AC Units, Diffusers & Equipment Installation | 15d | 2028-02-01 | 2028-02-17 | CN-0290, CN-0340 | 181d | 0d | SAR-6D Construction (Fri off, public holidays off) | PERFORMANCE - Progress Value (SAR, planned earned value) [46169.4 SAR]; CASH FLOW - Invoiced Cash (SAR, net of advance recovery) [41552.5 SAR]; Site Engineer / Supervisor [120 h]; Foreman [120 h]; Plumber / Pipe Fitter [840 h]; HVAC Technician [480 h]; General Labourer [600 h]; Scissor Lift / Scaffolding Set [120 h]; Mobile Crane (50-100 t) [120 h] | 87,721.94 | Phase 1 | Phase 1 (Billing) | 3.1 | Construction | N/A | Contractor | Main Building | 3.1 Main Building | MEP - Mechanical | N/A | N/A | N/A | Construction | Monthly progress | Float > 90 d | Other | Ramadan productivity | Station Building Zon | Medium (15-40) | 2028-02 | 2028-02 | 2028-Q1 | Not TGA process | Baseline | Not applicable |

| ID | WBS | Activity | Duration | Start | Finish | Predecessors | Total float | Free float | Calendar | Resources | Cost | Phase | Contract Phase | BOQ Ref | Stage | Lead Class | Responsibility | Package Group | Work Package | Discipline | Design Stage | Procurement Step | Milestone Type | Cost Component | Payment Basis | Path Class | Critical Driver | Risk Flag | Work Zone | Crew Size Class | Start Month | Finish Month | Start Quarter | TGA Process | Duration Basis | Submit / Review |
| --- | --- | --- | --- | --- | --- | --- | --- | --- | --- | --- | --- | --- | --- | --- | --- | --- | --- | --- | --- | --- | --- | --- | --- | --- | --- | --- | --- | --- | --- | --- | --- | --- | --- | --- | --- | --- |
|  | 03 | **Electrical** |  | 2027-12-04 | 2028-02-17 |  |  |  |  |  |  |  |  |  |  |  |  |  |  |  |  |  |  |  |  |  |  |  |  |  |  |  |  |  |  |  |
| CN-0140 |  | Conduits, Containment & Back Boxes | 16d | 2027-12-04 | 2027-12-21 | CN-0070, CN-0190 | 164d | 0d | SAR-6D Construction (Fri off, public holidays off) | PERFORMANCE - Progress Value (SAR, planned earned value) [49247.4 SAR]; CASH FLOW - Invoiced Cash (SAR, net of advance recovery) [44322.7 SAR]; Site Engineer / Supervisor [128 h]; Foreman [128 h]; Electrician / Cable Technician [1152 h]; General Labourer [640 h]; Scissor Lift / Scaffolding Set [128 h]; Cable Drum Trailer / Pulling Winch [128 h] | 93,570.06 | Phase 1 | Phase 1 (Billing) | 3.1 | Construction | N/A | Contractor | Main Building | 3.1 Main Building | MEP - Electrical | N/A | N/A | N/A | Construction | Monthly progress | Float > 90 d | Other | None | Station Building Zon | Medium (15-40) | 2027-12 | 2027-12 | 2027-Q4 | Not TGA process | Baseline | Not applicable |
| CN-0150 |  | Cable Pulling, Panel Boards & Distribution Boards | 18d | 2027-12-22 | 2028-01-11 | CN-0140, CN-0170, CN-0200 | 164d | 0d | SAR-6D Construction (Fri off, public holidays off) | PERFORMANCE - Progress Value (SAR, planned earned value) [55403.3 SAR]; CASH FLOW - Invoiced Cash (SAR, net of advance recovery) [49863 SAR]; Site Engineer / Supervisor [144 h]; Foreman [144 h]; Electrician / Cable Technician [1296 h]; General Labourer [720 h]; Scissor Lift / Scaffolding Set [144 h]; Cable Drum Trailer / Pulling Winch [144 h] | 105,266.33 | Phase 1 | Phase 1 (Billing) | 3.1 | Construction | N/A | Contractor | Main Building | 3.1 Main Building | MEP - Electrical | N/A | N/A | N/A | Construction | Monthly progress | Float > 90 d | Other | None | Station Building Zon | Medium (15-40) | 2027-12 | 2028-01 | 2027-Q4 | Not TGA process | Baseline | Not applicable |
| CN-0160 |  | Lighting, Small Power & Fixtures | 15d | 2028-02-01 | 2028-02-17 | CN-0290, CN-0340 | 181d | 0d | SAR-6D Construction (Fri off, public holidays off) | PERFORMANCE - Progress Value (SAR, planned earned value) [46169.4 SAR]; CASH FLOW - Invoiced Cash (SAR, net of advance recovery) [41552.5 SAR]; Site Engineer / Supervisor [120 h]; Foreman [120 h]; Electrician / Cable Technician [1080 h]; General Labourer [600 h]; Scissor Lift / Scaffolding Set [120 h]; Cable Drum Trailer / Pulling Winch [120 h] | 87,721.94 | Phase 1 | Phase 1 (Billing) | 3.1 | Construction | N/A | Contractor | Main Building | 3.1 Main Building | MEP - Electrical | N/A | N/A | N/A | Construction | Monthly progress | Float > 90 d | Other | Ramadan productivity | Station Building Zon | Medium (15-40) | 2028-02 | 2028-02 | 2028-Q1 | Not TGA process | Baseline | Not applicable |
|  | 04 | **Fire Suppression** |  | 2027-12-04 | 2028-02-12 |  |  |  |  |  |  |  |  |  |  |  |  |  |  |  |  |  |  |  |  |  |  |  |  |  |  |  |  |  |  |  |
| CN-0170 |  | Sprinkler & Fire Water Pipework | 14d | 2027-12-04 | 2027-12-19 | CN-0070, CN-0190 | 166d | 0d | SAR-6D Construction (Fri off, public holidays off) | PERFORMANCE - Progress Value (SAR, planned earned value) [43091.5 SAR]; CASH FLOW - Invoiced Cash (SAR, net of advance recovery) [38782.3 SAR]; Site Engineer / Supervisor [112 h]; Foreman [112 h]; Plumber / Pipe Fitter [784 h]; HVAC Technician [448 h]; General Labourer [560 h]; Scissor Lift / Scaffolding Set [112 h]; Mobile Crane (50-100 t) [112 h] | 81,873.81 | Phase 1 | Phase 1 (Billing) | 3.1 | Construction | N/A | Contractor | Main Building | 3.1 Main Building | Fire & Life Safety | N/A | N/A | N/A | Construction | Monthly progress | Float > 90 d | Other | None | Station Building Zon | Medium (15-40) | 2027-12 | 2027-12 | 2027-Q4 | Not TGA process | Baseline | Not applicable |
| CN-0180 |  | Sprinkler Heads, Hose Cabinets & Accessories | 10d | 2028-02-01 | 2028-02-12 | CN-0290, CN-0340 | 186d | 0d | SAR-6D Construction (Fri off, public holidays off) | PERFORMANCE - Progress Value (SAR, planned earned value) [30779.6 SAR]; CASH FLOW - Invoiced Cash (SAR, net of advance recovery) [27701.7 SAR]; Site Engineer / Supervisor [80 h]; Foreman [80 h]; Plumber / Pipe Fitter [560 h]; HVAC Technician [320 h]; General Labourer [400 h]; Scissor Lift / Scaffolding Set [80 h]; Mobile Crane (50-100 t) [80 h] | 58,481.3 | Phase 1 | Phase 1 (Billing) | 3.1 | Construction | N/A | Contractor | Main Building | 3.1 Main Building | Fire & Life Safety | N/A | N/A | N/A | Construction | Monthly progress | Float > 90 d | Other | Ramadan productivity | Station Building Zon | Medium (15-40) | 2028-02 | 2028-02 | 2028-Q1 | Not TGA process | Baseline | Not applicable |
|  | 04 | **Masonry** |  | 2027-11-15 | 2027-12-19 |  |  |  |  |  |  |  |  |  |  |  |  |  |  |  |  |  |  |  |  |  |  |  |  |  |  |  |  |  |  |  |
| CN-0190 |  | External Blockwork | 16d | 2027-11-15 | 2027-12-02 | CN-0060 | 162d | 0d | SAR-6D Construction (Fri off, public holidays off) | PERFORMANCE - Progress Value (SAR, planned earned value) [49247.4 SAR]; CASH FLOW - Invoiced Cash (SAR, net of advance recovery) [44322.7 SAR]; Site Engineer / Supervisor [128 h]; Foreman [256 h]; Finishing Trades (Plaster, Tile, Paint, Ceiling) [1536 h]; Concrete / Mason Gang [512 h]; General Labourer [896 h]; Scissor Lift / Scaffolding Set [256 h]; Welding / Generator Set [128 h] | 93,570.06 | Phase 1 | Phase 1 (Billing) | 3.1 | Construction | N/A | Contractor | Main Building | 3.1 Main Building | Architectural & Fini | N/A | N/A | N/A | Construction | Monthly progress | Float > 90 d | Other | None | Station Building Zon | Medium (15-40) | 2027-11 | 2027-12 | 2027-Q4 | Not TGA process | Baseline | Not applicable |
| CN-0200 |  | Internal Blockwork & Partitions | 14d | 2027-12-04 | 2027-12-19 | CN-0070, CN-0190 | 166d | 0d | SAR-6D Construction (Fri off, public holidays off) | PERFORMANCE - Progress Value (SAR, planned earned value) [43091.5 SAR]; CASH FLOW - Invoiced Cash (SAR, net of advance recovery) [38782.3 SAR]; Site Engineer / Supervisor [112 h]; Foreman [224 h]; Finishing Trades (Plaster, Tile, Paint, Ceiling) [1344 h]; Concrete / Mason Gang [448 h]; General Labourer [784 h]; Scissor Lift / Scaffolding Set [224 h]; Welding / Generator Set [112 h] | 81,873.81 | Phase 1 | Phase 1 (Billing) | 3.1 | Construction | N/A | Contractor | Main Building | 3.1 Main Building | Architectural & Fini | N/A | N/A | N/A | Construction | Monthly progress | Float > 90 d | Other | None | Station Building Zon | Medium (15-40) | 2027-12 | 2027-12 | 2027-Q4 | Not TGA process | Baseline | Not applicable |
|  | 05 | **Metal Works** |  | 2027-11-15 | 2027-12-30 |  |  |  |  |  |  |  |  |  |  |  |  |  |  |  |  |  |  |  |  |  |  |  |  |  |  |  |  |  |  |  |
| CN-0210 |  | Embeds, Miscellaneous Steel & Supports | 12d | 2027-11-15 | 2027-11-28 | CN-0060 | 251d | 0d | SAR-6D Construction (Fri off, public holidays off) | PERFORMANCE - Progress Value (SAR, planned earned value) [36935.6 SAR]; CASH FLOW - Invoiced Cash (SAR, net of advance recovery) [33242 SAR]; Site Engineer / Supervisor [96 h]; Foreman [96 h]; Steel Erector / Welder [672 h]; General Labourer [384 h]; Mobile Crane (50-100 t) [96 h]; Welding / Generator Set [288 h]; Scissor Lift / Scaffolding Set [96 h] | 70,177.55 | Phase 1 | Phase 1 (Billing) | 3.1 | Construction | N/A | Contractor | Main Building | 3.1 Main Building | Structure (RC / Stee | N/A | N/A | N/A | Construction | Monthly progress | Float > 90 d | Other | None | Station Building Zon | Small (<15) | 2027-11 | 2027-11 | 2027-Q4 | Not TGA process | Baseline | Not applicable |
| CN-0220 |  | Handrails, Louvers & Metal Cladding | 10d | 2027-12-20 | 2027-12-30 | CN-0170, CN-0200 | 223d | 0d | SAR-6D Construction (Fri off, public holidays off) | PERFORMANCE - Progress Value (SAR, planned earned value) [30779.6 SAR]; CASH FLOW - Invoiced Cash (SAR, net of advance recovery) [27701.7 SAR]; Site Engineer / Supervisor [80 h]; Foreman [80 h]; Steel Erector / Welder [560 h]; General Labourer [320 h]; Mobile Crane (50-100 t) [80 h]; Welding / Generator Set [240 h]; Scissor Lift / Scaffolding Set [80 h] | 58,481.3 | Phase 1 | Phase 1 (Billing) | 3.1 | Construction | N/A | Contractor | Main Building | 3.1 Main Building | Structure (RC / Stee | N/A | N/A | N/A | Construction | Monthly progress | Float > 90 d | Other | None | Station Building Zon | Small (<15) | 2027-12 | 2027-12 | 2027-Q4 | Not TGA process | Baseline | Not applicable |
|  | 06 | **Thermal And Moisture Protection** |  | 2027-12-12 | 2027-12-28 |  |  |  |  |  |  |  |  |  |  |  |  |  |  |  |  |  |  |  |  |  |  |  |  |  |  |  |  |  |  |  |
| CN-0230 |  | Roof Waterproofing & Thermal Insulation | 14d | 2027-12-12 | 2027-12-27 | CN-0080 | 226d | 0d | SAR-6D Construction (Fri off, public holidays off) | PERFORMANCE - Progress Value (SAR, planned earned value) [43091.5 SAR]; CASH FLOW - Invoiced Cash (SAR, net of advance recovery) [38782.3 SAR]; Site Engineer / Supervisor [112 h]; Foreman [224 h]; Finishing Trades (Plaster, Tile, Paint, Ceiling) [1344 h]; Concrete / Mason Gang [448 h]; General Labourer [784 h]; Scissor Lift / Scaffolding Set [224 h]; Welding / Generator Set [112 h] | 81,873.81 | Phase 1 | Phase 1 (Billing) | 3.1 | Construction | N/A | Contractor | Main Building | 3.1 Main Building | Architectural & Fini | N/A | N/A | N/A | Construction | Monthly progress | Float > 90 d | Other | None | Station Building Zon | Medium (15-40) | 2027-12 | 2027-12 | 2027-Q4 | Not TGA process | Baseline | Not applicable |
| CN-0240 |  | Wall Insulation, Sealants & Flashings | 8d | 2027-12-20 | 2027-12-28 | CN-0170, CN-0200 | 225d | 0d | SAR-6D Construction (Fri off, public holidays off) | PERFORMANCE - Progress Value (SAR, planned earned value) [24623.7 SAR]; CASH FLOW - Invoiced Cash (SAR, net of advance recovery) [22161.3 SAR]; Site Engineer / Supervisor [64 h]; Foreman [128 h]; Finishing Trades (Plaster, Tile, Paint, Ceiling) [768 h]; Concrete / Mason Gang [256 h]; General Labourer [448 h]; Scissor Lift / Scaffolding Set [128 h]; Welding / Generator Set [64 h] | 46,785.03 | Phase 1 | Phase 1 (Billing) | 3.1 | Construction | N/A | Contractor | Main Building | 3.1 Main Building | Architectural & Fini | N/A | N/A | N/A | Construction | Monthly progress | Float > 90 d | Other | None | Station Building Zon | Medium (15-40) | 2027-12 | 2027-12 | 2027-Q4 | Not TGA process | Baseline | Not applicable |
|  | 07 | **Door And Windows** |  | 2027-12-20 | 2028-03-19 |  |  |  |  |  |  |  |  |  |  |  |  |  |  |  |  |  |  |  |  |  |  |  |  |  |  |  |  |  |  |  |
| CN-0250 |  | Door & Window Frames and Glazing Installation | 14d | 2027-12-20 | 2028-01-04 | CN-0170, CN-0200 | 219d | 0d | SAR-6D Construction (Fri off, public holidays off) | PERFORMANCE - Progress Value (SAR, planned earned value) [43091.5 SAR]; CASH FLOW - Invoiced Cash (SAR, net of advance recovery) [38782.3 SAR]; Site Engineer / Supervisor [112 h]; Foreman [224 h]; Finishing Trades (Plaster, Tile, Paint, Ceiling) [1344 h]; Concrete / Mason Gang [448 h]; General Labourer [784 h]; Scissor Lift / Scaffolding Set [224 h]; Welding / Generator Set [112 h] | 81,873.81 | Phase 1 | Phase 1 (Billing) | 3.1 | Construction | N/A | Contractor | Main Building | 3.1 Main Building | Architectural & Fini | N/A | N/A | N/A | Construction | Monthly progress | Float > 90 d | Other | None | Station Building Zon | Medium (15-40) | 2027-12 | 2028-01 | 2027-Q4 | Not TGA process | Baseline | Not applicable |
| CN-0260 |  | Door Leaves & Ironmongery | 10d | 2028-03-08 | 2028-03-19 | CN-0300 | 162d | 0d | SAR-6D Construction (Fri off, public holidays off) | PERFORMANCE - Progress Value (SAR, planned earned value) [30779.6 SAR]; CASH FLOW - Invoiced Cash (SAR, net of advance recovery) [27701.7 SAR]; Site Engineer / Supervisor [80 h]; Foreman [160 h]; Finishing Trades (Plaster, Tile, Paint, Ceiling) [960 h]; Concrete / Mason Gang [320 h]; General Labourer [560 h]; Scissor Lift / Scaffolding Set [160 h]; Welding / Generator Set [80 h] | 58,481.3 | Phase 1 | Phase 1 (Billing) | 3.1 | Construction | N/A | Contractor | Main Building | 3.1 Main Building | Architectural & Fini | N/A | N/A | N/A | Construction | Monthly progress | Float > 90 d | Other | None | Station Building Zon | Medium (15-40) | 2028-03 | 2028-03 | 2028-Q1 | Not TGA process | Baseline | Not applicable |
|  | 08 | **Finishes** |  | 2027-12-27 | 2028-03-07 |  |  |  |  |  |  |  |  |  |  |  |  |  |  |  |  |  |  |  |  |  |  |  |  |  |  |  |  |  |  |  |
| CN-0270 |  | Internal & External Plastering | 16d | 2027-12-27 | 2028-01-13 | CN-0100, CN-0120 | 162d | 0d | SAR-6D Construction (Fri off, public holidays off) | PERFORMANCE - Progress Value (SAR, planned earned value) [49247.4 SAR]; CASH FLOW - Invoiced Cash (SAR, net of advance recovery) [44322.7 SAR]; Site Engineer / Supervisor [128 h]; Foreman [256 h]; Finishing Trades (Plaster, Tile, Paint, Ceiling) [1536 h]; Concrete / Mason Gang [512 h]; General Labourer [896 h]; Scissor Lift / Scaffolding Set [256 h]; Welding / Generator Set [128 h] | 93,570.06 | Phase 1 | Phase 1 (Billing) | 3.1 | Construction | N/A | Contractor | Main Building | 3.1 Main Building | Architectural & Fini | N/A | N/A | N/A | Construction | Monthly progress | Float > 90 d | Other | None | Station Building Zon | Medium (15-40) | 2027-12 | 2028-01 | 2027-Q4 | Not TGA process | Baseline | Not applicable |
| CN-0280 |  | Floor Screed & Tiling | 20d | 2028-01-15 | 2028-02-06 | CN-0150, CN-0270 | 162d | 0d | SAR-6D Construction (Fri off, public holidays off) | PERFORMANCE - Progress Value (SAR, planned earned value) [61559.2 SAR]; CASH FLOW - Invoiced Cash (SAR, net of advance recovery) [55403.3 SAR]; Site Engineer / Supervisor [160 h]; Foreman [320 h]; Finishing Trades (Plaster, Tile, Paint, Ceiling) [1920 h]; Concrete / Mason Gang [640 h]; General Labourer [1120 h]; Scissor Lift / Scaffolding Set [320 h]; Welding / Generator Set [160 h] | 116,962.58 | Phase 1 | Phase 1 (Billing) | 3.1 | Construction | N/A | Contractor | Main Building | 3.1 Main Building | Architectural & Fini | N/A | N/A | N/A | Construction | Monthly progress | Float > 90 d | Other | Ramadan productivity | Station Building Zon | Medium (15-40) | 2028-01 | 2028-02 | 2028-Q1 | Not TGA process | Baseline | Not applicable |
| CN-0290 |  | False Ceiling & Bulkheads | 15d | 2028-01-15 | 2028-01-31 | CN-0150, CN-0270 | 181d | 0d | SAR-6D Construction (Fri off, public holidays off) | PERFORMANCE - Progress Value (SAR, planned earned value) [46169.4 SAR]; CASH FLOW - Invoiced Cash (SAR, net of advance recovery) [41552.5 SAR]; Site Engineer / Supervisor [120 h]; Foreman [240 h]; Finishing Trades (Plaster, Tile, Paint, Ceiling) [1440 h]; Concrete / Mason Gang [480 h]; General Labourer [840 h]; Scissor Lift / Scaffolding Set [240 h]; Welding / Generator Set [120 h] | 87,721.94 | Phase 1 | Phase 1 (Billing) | 3.1 | Construction | N/A | Contractor | Main Building | 3.1 Main Building | Architectural & Fini | N/A | N/A | N/A | Construction | Monthly progress | Float > 90 d | Other | Ramadan productivity | Station Building Zon | Medium (15-40) | 2028-01 | 2028-01 | 2028-Q1 | Not TGA process | Baseline | Not applicable |
| CN-0300 |  | Painting - Internal & External | 19d | 2028-02-07 | 2028-03-07 | CN-0280 | 162d | 0d | SAR-6D Construction (Fri off, public holidays off) | PERFORMANCE - Progress Value (SAR, planned earned value) [58481.3 SAR]; CASH FLOW - Invoiced Cash (SAR, net of advance recovery) [52633.2 SAR]; Site Engineer / Supervisor [152 h]; Foreman [304 h]; Finishing Trades (Plaster, Tile, Paint, Ceiling) [1824 h]; Concrete / Mason Gang [608 h]; General Labourer [1064 h]; Scissor Lift / Scaffolding Set [304 h]; Welding / Generator Set [152 h] | 111,114.45 | Phase 1 | Phase 1 (Billing) | 3.1 | Construction | N/A | Contractor | Main Building | 3.1 Main Building | Architectural & Fini | N/A | N/A | N/A | Construction | Monthly progress | Float > 90 d | Other | Ramadan productivity | Station Building Zon | Medium (15-40) | 2028-02 | 2028-03 | 2028-Q1 | Not TGA process | Baseline | Not applicable |

| ID | WBS | Activity | Duration | Start | Finish | Predecessors | Total float | Free float | Calendar | Resources | Cost | Phase | Contract Phase | BOQ Ref | Stage | Lead Class | Responsibility | Package Group | Work Package | Discipline | Design Stage | Procurement Step | Milestone Type | Cost Component | Payment Basis | Path Class | Critical Driver | Risk Flag | Work Zone | Crew Size Class | Start Month | Finish Month | Start Quarter | TGA Process | Duration Basis | Submit / Review |
| --- | --- | --- | --- | --- | --- | --- | --- | --- | --- | --- | --- | --- | --- | --- | --- | --- | --- | --- | --- | --- | --- | --- | --- | --- | --- | --- | --- | --- | --- | --- | --- | --- | --- | --- | --- | --- |
|  | 09 | **Specialities** |  | 2028-03-08 | 2028-03-19 |  |  |  |  |  |  |  |  |  |  |  |  |  |  |  |  |  |  |  |  |  |  |  |  |  |  |  |  |  |  |  |
| CN-0310 |  | Signage, Toilet Partitions & Accessories | 10d | 2028-03-08 | 2028-03-19 | CN-0300 | 162d | 0d | SAR-6D Construction (Fri off, public holidays off) | PERFORMANCE - Progress Value (SAR, planned earned value) [30779.6 SAR]; CASH FLOW - Invoiced Cash (SAR, net of advance recovery) [27701.7 SAR]; Site Engineer / Supervisor [80 h]; Foreman [160 h]; Finishing Trades (Plaster, Tile, Paint, Ceiling) [960 h]; Concrete / Mason Gang [320 h]; General Labourer [560 h]; Scissor Lift / Scaffolding Set [160 h]; Welding / Generator Set [80 h] | 58,481.3 | Phase 1 | Phase 1 (Billing) | 3.1 | Construction | N/A | Contractor | Main Building | 3.1 Main Building | Architectural & Fini | N/A | N/A | N/A | Construction | Monthly progress | Float > 90 d | Other | None | Station Building Zon | Medium (15-40) | 2028-03 | 2028-03 | 2028-Q1 | Not TGA process | Baseline | Not applicable |
|  | 10 | **Furnishing** |  | 2028-03-08 | 2028-03-19 |  |  |  |  |  |  |  |  |  |  |  |  |  |  |  |  |  |  |  |  |  |  |  |  |  |  |  |  |  |  |  |
| CN-0320 |  | Built-in Fittings & Window Treatments | 10d | 2028-03-08 | 2028-03-19 | CN-0300 | 162d | 0d | SAR-6D Construction (Fri off, public holidays off) | PERFORMANCE - Progress Value (SAR, planned earned value) [30779.6 SAR]; CASH FLOW - Invoiced Cash (SAR, net of advance recovery) [27701.7 SAR]; Site Engineer / Supervisor [80 h]; Foreman [160 h]; Finishing Trades (Plaster, Tile, Paint, Ceiling) [960 h]; Concrete / Mason Gang [320 h]; General Labourer [560 h]; Scissor Lift / Scaffolding Set [160 h]; Welding / Generator Set [80 h] | 58,481.3 | Phase 1 | Phase 1 (Billing) | 3.1 | Construction | N/A | Contractor | Main Building | 3.1 Main Building | Architectural & Fini | N/A | N/A | N/A | Construction | Monthly progress | Float > 90 d | Other | None | Station Building Zon | Medium (15-40) | 2028-03 | 2028-03 | 2028-Q1 | Not TGA process | Baseline | Not applicable |
|  | 11 | **Conveying System** |  | 2027-12-20 | 2028-01-05 |  |  |  |  |  |  |  |  |  |  |  |  |  |  |  |  |  |  |  |  |  |  |  |  |  |  |  |  |  |  |  |
| CN-0330 |  | Accessibility Platform Lift - Supply & Installation | 15d | 2027-12-20 | 2028-01-05 | CN-0170, CN-0200 | 218d | 0d | SAR-6D Construction (Fri off, public holidays off) | PERFORMANCE - Progress Value (SAR, planned earned value) [46169.4 SAR]; CASH FLOW - Invoiced Cash (SAR, net of advance recovery) [41552.5 SAR]; Site Engineer / Supervisor [120 h]; Foreman [120 h]; Plumber / Pipe Fitter [840 h]; HVAC Technician [480 h]; General Labourer [600 h]; Scissor Lift / Scaffolding Set [120 h]; Mobile Crane (50-100 t) [120 h] | 87,721.94 | Phase 1 | Phase 1 (Billing) | 3.1 | Construction | N/A | Contractor | Main Building | 3.1 Main Building | MEP - Mechanical | N/A | N/A | N/A | Construction | Monthly progress | Float > 90 d | Other | None | Station Building Zon | Medium (15-40) | 2027-12 | 2028-01 | 2027-Q4 | Not TGA process | Baseline | Not applicable |
|  | 12 | **Automation** |  | 2028-01-12 | 2028-01-30 |  |  |  |  |  |  |  |  |  |  |  |  |  |  |  |  |  |  |  |  |  |  |  |  |  |  |  |  |  |  |  |
| CN-0340 |  | Building Management System (BMS) Installation | 16d | 2028-01-12 | 2028-01-30 | CN-0150 | 182d | 0d | SAR-6D Construction (Fri off, public holidays off) | PERFORMANCE - Progress Value (SAR, planned earned value) [49247.4 SAR]; CASH FLOW - Invoiced Cash (SAR, net of advance recovery) [44322.7 SAR]; Site Engineer / Supervisor [128 h]; Foreman [128 h]; Electrician / Cable Technician [1152 h]; General Labourer [640 h]; Scissor Lift / Scaffolding Set [128 h]; Cable Drum Trailer / Pulling Winch [128 h] | 93,570.06 | Phase 1 | Phase 1 (Billing) | 3.1 | Construction | N/A | Contractor | Main Building | 3.1 Main Building | MEP - Electrical | N/A | N/A | N/A | Construction | Monthly progress | Float > 90 d | Other | Ramadan productivity | Station Building Zon | Medium (15-40) | 2028-01 | 2028-01 | 2028-Q1 | Not TGA process | Baseline | Not applicable |
|  | 13 | **Communication** |  | 2028-01-12 | 2028-01-25 |  |  |  |  |  |  |  |  |  |  |  |  |  |  |  |  |  |  |  |  |  |  |  |  |  |  |  |  |  |  |  |
| CN-0350 |  | Telephone, PA & Communication Cabling | 12d | 2028-01-12 | 2028-01-25 | CN-0150 | 184d | 0d | SAR-6D Construction (Fri off, public holidays off) | PERFORMANCE - Progress Value (SAR, planned earned value) [36935.6 SAR]; CASH FLOW - Invoiced Cash (SAR, net of advance recovery) [33242 SAR]; Site Engineer / Supervisor [96 h]; Foreman [96 h]; Electrician / Cable Technician [864 h]; General Labourer [480 h]; Scissor Lift / Scaffolding Set [96 h]; Cable Drum Trailer / Pulling Winch [96 h] | 70,177.55 | Phase 1 | Phase 1 (Billing) | 3.1 | Construction | N/A | Contractor | Main Building | 3.1 Main Building | MEP - Electrical | N/A | N/A | N/A | Construction | Monthly progress | Float > 90 d | Other | None | Station Building Zon | Medium (15-40) | 2028-01 | 2028-01 | 2028-Q1 | Not TGA process | Baseline | Not applicable |
|  | 14 | **Electronic Safety & Security** |  | 2028-01-12 | 2028-02-14 |  |  |  |  |  |  |  |  |  |  |  |  |  |  |  |  |  |  |  |  |  |  |  |  |  |  |  |  |  |  |  |
| CN-0360 |  | Fire Alarm System Installation | 12d | 2028-01-12 | 2028-01-25 | CN-0150 | 184d | 0d | SAR-6D Construction (Fri off, public holidays off) | PERFORMANCE - Progress Value (SAR, planned earned value) [36935.6 SAR]; CASH FLOW - Invoiced Cash (SAR, net of advance recovery) [33242 SAR]; Site Engineer / Supervisor [96 h]; Foreman [96 h]; Electrician / Cable Technician [864 h]; General Labourer [480 h]; Scissor Lift / Scaffolding Set [96 h]; Cable Drum Trailer / Pulling Winch [96 h] | 70,177.55 | Phase 1 | Phase 1 (Billing) | 3.1 | Construction | N/A | Contractor | Main Building | 3.1 Main Building | Fire & Life Safety | N/A | N/A | N/A | Construction | Monthly progress | Float > 90 d | Other | None | Station Building Zon | Medium (15-40) | 2028-01 | 2028-01 | 2028-Q1 | Not TGA process | Baseline | Not applicable |
| CN-0370 |  | Security Systems - Field Devices & Cabling | 17d | 2028-01-26 | 2028-02-14 | CN-0350, CN-0360 | 184d | 0d | SAR-6D Construction (Fri off, public holidays off) | PERFORMANCE - Progress Value (SAR, planned earned value) [52325.4 SAR]; CASH FLOW - Invoiced Cash (SAR, net of advance recovery) [47092.8 SAR]; Site Engineer / Supervisor [136 h]; Foreman [136 h]; Electrician / Cable Technician [1224 h]; General Labourer [680 h]; Scissor Lift / Scaffolding Set [136 h]; Cable Drum Trailer / Pulling Winch [136 h] | 99,418.18 | Phase 1 | Phase 1 (Billing) | 3.1 | Construction | N/A | Contractor | Main Building | 3.1 Main Building | MEP - Electrical | N/A | N/A | N/A | Construction | Monthly progress | Float > 90 d | Other | Ramadan productivity | Station Building Zon | Medium (15-40) | 2028-01 | 2028-02 | 2028-Q1 | Not TGA process | Baseline | Not applicable |
|  | 02 | **IT Equipment** |  | 2027-12-12 | 2028-03-04 |  |  |  |  |  |  |  |  |  |  |  |  |  |  |  |  |  |  |  |  |  |  |  |  |  |  |  |  |  |  |  |
|  | 01 | **Passive Infrastructure (Containment, Cabling, Fiber, Racks)** |  | 2027-12-12 | 2028-01-09 |  |  |  |  |  |  |  |  |  |  |  |  |  |  |  |  |  |  |  |  |  |  |  |  |  |  |  |  |  |  |  |
| CN-0380 |  | Containment, Structured Cabling, Fibre & Racks Installation | 25d | 2027-12-12 | 2028-01-09 | CN-0080 | 220d | 0d | SAR-6D Construction (Fri off, public holidays off) | PERFORMANCE - Progress Value (SAR, planned earned value) [63750 SAR]; CASH FLOW - Invoiced Cash (SAR, net of advance recovery) [57375 SAR]; Site Engineer / Supervisor [200 h]; Signalling & Telecom Technician / Fibre Splicer [1000 h]; Electrician / Cable Technician [400 h]; General Labourer [800 h]; Foreman [200 h]; Cable Drum Trailer / Pulling Winch [200 h]; Fibre Splicing & OTDR Test Kit [200 h]; Hi-rail Truck / Locomotive & Wagons [200 h]; Mobile Crane (50-100 t) [200 h] | 121,125 | Phase 1 | Phase 1 (Billing) | 3.2 | Construction | N/A | Contractor | Main Building | 3.2 IT Equipment | Signalling & Telecom | N/A | N/A | N/A | Construction | Monthly progress | Float > 90 d | Other | None | Station Building Zon | Small (<15) | 2027-12 | 2028-01 | 2027-Q4 | Not TGA process | Baseline | Not applicable |
|  | 02 | **Active Network & Servers** |  | 2028-01-10 | 2028-01-26 |  |  |  |  |  |  |  |  |  |  |  |  |  |  |  |  |  |  |  |  |  |  |  |  |  |  |  |  |  |  |  |
| CN-0390 |  | Active Network Equipment & Servers Installation | 15d | 2028-01-10 | 2028-01-26 | PC-0500, CN-0380 | 245d | 0d | SAR-6D Construction (Fri off, public holidays off) | PERFORMANCE - Progress Value (SAR, planned earned value) [38250 SAR]; CASH FLOW - Invoiced Cash (SAR, net of advance recovery) [34425 SAR]; Site Engineer / Supervisor [120 h]; Foreman [120 h]; Electrician / Cable Technician [600 h]; General Labourer [360 h]; Scissor Lift / Scaffolding Set [120 h]; Cable Drum Trailer / Pulling Winch [120 h] | 72,675 | Phase 1 | Phase 1 (Billing) | 3.2 | Construction | N/A | Contractor | Main Building | 3.2 IT Equipment | MEP - Electrical | N/A | N/A | N/A | Construction | Monthly progress | Float > 90 d | Other | None | Station Building Zon | Small (<15) | 2028-01 | 2028-01 | 2028-Q1 | Not TGA process | Baseline | Not applicable |
|  | 03 | **Low-Voltage Systems (CCTV, Access Control, PA)** |  | 2028-01-10 | 2028-02-10 |  |  |  |  |  |  |  |  |  |  |  |  |  |  |  |  |  |  |  |  |  |  |  |  |  |  |  |  |  |  |  |
| CN-0400 |  | CCTV, Access Control & Public Address Systems Installation | 28d | 2028-01-10 | 2028-02-10 | CN-0380 | 220d | 0d | SAR-6D Construction (Fri off, public holidays off) | PERFORMANCE - Progress Value (SAR, planned earned value) [71400 SAR]; CASH FLOW - Invoiced Cash (SAR, net of advance recovery) [64260 SAR]; Site Engineer / Supervisor [224 h]; Foreman [224 h]; Electrician / Cable Technician [1120 h]; General Labourer [672 h]; Scissor Lift / Scaffolding Set [224 h]; Cable Drum Trailer / Pulling Winch [224 h] | 135,660 | Phase 1 | Phase 1 (Billing) | 3.2 | Construction | N/A | Contractor | Main Building | 3.2 IT Equipment | MEP - Electrical | N/A | N/A | N/A | Construction | Monthly progress | Float > 90 d | Other | Ramadan productivity | Station Building Zon | Small (<15) | 2028-01 | 2028-02 | 2028-Q1 | Not TGA process | Baseline | Not applicable |
|  | 04 | **Integration** |  | 2028-02-12 | 2028-03-04 |  |  |  |  |  |  |  |  |  |  |  |  |  |  |  |  |  |  |  |  |  |  |  |  |  |  |  |  |  |  |  |
| CN-0410 |  | System Integration & Configuration with Existing Infrastructure | 12d | 2028-02-12 | 2028-03-04 | CN-0400 | 220d | 0d | SAR-6D Construction (Fri off, public holidays off) | PERFORMANCE - Progress Value (SAR, planned earned value) [30600 SAR]; CASH FLOW - Invoiced Cash (SAR, net of advance recovery) [27540 SAR]; Site Engineer / Supervisor [96 h]; Foreman [96 h]; General Labourer [288 h]; Wheel Loader / Backhoe [96 h] | 58,140 | Phase 1 | Phase 1 (Billing) | 3.2 | Construction | N/A | Contractor | Main Building | 3.2 IT Equipment | Civil & Earthworks | N/A | N/A | N/A | Construction | Monthly progress | Float > 90 d | Other | Ramadan productivity | Station Building Zon | Small (<15) | 2028-02 | 2028-03 | 2028-Q1 | Not TGA process | Baseline | Not applicable |
|  | 03 | **Furniture Works (FF&E)** |  | 2028-01-19 | 2028-03-30 |  |  |  |  |  |  |  |  |  |  |  |  |  |  |  |  |  |  |  |  |  |  |  |  |  |  |  |  |  |  |  |
|  | 01 | **Main Building** |  | 2028-03-08 | 2028-03-30 |  |  |  |  |  |  |  |  |  |  |  |  |  |  |  |  |  |  |  |  |  |  |  |  |  |  |  |  |  |  |  |
|  | 01 | **Fittings and Equipment** |  | 2028-03-08 | 2028-03-30 |  |  |  |  |  |  |  |  |  |  |  |  |  |  |  |  |  |  |  |  |  |  |  |  |  |  |  |  |  |  |  |
| CN-0420 |  | Supply & Installation of Furniture, Fittings & Equipment - Main Building | 20d | 2028-03-08 | 2028-03-30 | PC-0510, CN-0300, CN-0430 | 214d | 0d | SAR-6D Construction (Fri off, public holidays off) | PERFORMANCE - Progress Value (SAR, planned earned value) [713419 SAR]; CASH FLOW - Invoiced Cash (SAR, net of advance recovery) [642077 SAR]; Site Engineer / Supervisor [160 h]; Foreman [320 h]; Finishing Trades (Plaster, Tile, Paint, Ceiling) [1920 h]; Concrete / Mason Gang [480 h]; General Labourer [1120 h]; Scissor Lift / Scaffolding Set [320 h]; Welding / Generator Set [160 h] | 1,355,496.77 | Phase 2 | Phase 2 (Billing) | 3.3 | Construction | N/A | Contractor | Main Building | 3.3 FF&E | Architectural & Fini | N/A | N/A | N/A | Construction | Monthly progress | Float > 90 d | Other | None | Station Building Zon | Medium (15-40) | 2028-03 | 2028-03 | 2028-Q1 | Not TGA process | Baseline | Not applicable |

| ID | WBS | Activity | Duration | Start | Finish | Predecessors | Total float | Free float | Calendar | Resources | Cost | Phase | Contract Phase | BOQ Ref | Stage | Lead Class | Responsibility | Package Group | Work Package | Discipline | Design Stage | Procurement Step | Milestone Type | Cost Component | Payment Basis | Path Class | Critical Driver | Risk Flag | Work Zone | Crew Size Class | Start Month | Finish Month | Start Quarter | TGA Process | Duration Basis | Submit / Review |
| --- | --- | --- | --- | --- | --- | --- | --- | --- | --- | --- | --- | --- | --- | --- | --- | --- | --- | --- | --- | --- | --- | --- | --- | --- | --- | --- | --- | --- | --- | --- | --- | --- | --- | --- | --- | --- |
|  | 02 | **Firefighting Building (GEA 518 m²)** |  | 2028-01-19 | 2028-01-31 |  |  |  |  |  |  |  |  |  |  |  |  |  |  |  |  |  |  |  |  |  |  |  |  |  |  |  |  |  |  |  |
|  | 01 | **Fittings and Equipment** |  | 2028-01-19 | 2028-01-31 |  |  |  |  |  |  |  |  |  |  |  |  |  |  |  |  |  |  |  |  |  |  |  |  |  |  |  |  |  |  |  |
| CN-0430 |  | Supply & Installation of Furniture, Fittings & Equipment - Firefighting Building | 11d | 2028-01-19 | 2028-01-31 | CN-0820 | 238d | 0d | SAR-6D Construction (Fri off, public holidays off) | PERFORMANCE - Progress Value (SAR, planned earned value) [392381 SAR]; CASH FLOW - Invoiced Cash (SAR, net of advance recovery) [353143 SAR]; Site Engineer / Supervisor [88 h]; Foreman [176 h]; Finishing Trades (Plaster, Tile, Paint, Ceiling) [1056 h]; Concrete / Mason Gang [264 h]; General Labourer [616 h]; Scissor Lift / Scaffolding Set [176 h]; Welding / Generator Set [88 h] | 745,523.24 | Phase 2 | Phase 2 (Billing) | 3.3 | Construction | N/A | Contractor | Main Building | 3.3 FF&E | Fire & Life Safety | N/A | N/A | N/A | Construction | Monthly progress | Float > 90 d | Other | Ramadan productivity | Station Building Zon | Medium (15-40) | 2028-01 | 2028-01 | 2028-Q1 | Not TGA process | Baseline | Not applicable |
|  | 02 | **Ancillary Buildings** |  | 2027-10-09 | 2028-06-19 |  |  |  |  |  |  |  |  |  |  |  |  |  |  |  |  |  |  |  |  |  |  |  |  |  |  |  |  |  |  |  |
|  | 01 | **Substation and SEC Works** |  | 2027-10-09 | 2028-04-17 |  |  |  |  |  |  |  |  |  |  |  |  |  |  |  |  |  |  |  |  |  |  |  |  |  |  |  |  |  |  |  |
|  | 01 | **Substation & Package Units** |  | 2027-10-09 | 2028-02-23 |  |  |  |  |  |  |  |  |  |  |  |  |  |  |  |  |  |  |  |  |  |  |  |  |  |  |  |  |  |  |  |
| CN-0440 |  | Foundations, Plinths & Cable Trenches (Civil) | 20d | 2027-10-09 | 2027-10-31 | MS-0090, PR-0150 | 201d | 0d | SAR-6D Construction (Fri off, public holidays off) | PERFORMANCE - Progress Value (SAR, planned earned value) [267463 SAR]; CASH FLOW - Invoiced Cash (SAR, net of advance recovery) [240717 SAR]; Foreman [160 h]; Surveyor / Setting-out Crew [160 h]; General Labourer [1280 h]; Plant Operator / Driver [1280 h]; Site Engineer / Supervisor [160 h]; Excavator [320 h]; Wheel Loader / Backhoe [160 h]; Dump Truck / Tipper [640 h]; Vibratory Roller / Compactor [160 h]; Water Tanker [160 h] | 508,179.87 | Phase 1 | Phase 1 (Billing) | 4.1 | Construction | N/A | Contractor | Ancillary Buildings | 4.1 Substation & SEC | Civil & Earthworks | N/A | N/A | N/A | Construction | Monthly progress | Float > 90 d | Other | None | Substation & Utiliti | Medium (15-40) | 2027-10 | 2027-10 | 2027-Q4 | Not TGA process | Baseline | Not applicable |
| CN-0450 |  | Installation of RMU, Transformers & Package Units | 19d | 2028-02-01 | 2028-02-23 | PC-0610, CN-0440, CN-0490 | 122d | 0d | SAR-6D Construction (Fri off, public holidays off) | PERFORMANCE - Progress Value (SAR, planned earned value) [254090 SAR]; CASH FLOW - Invoiced Cash (SAR, net of advance recovery) [228681 SAR]; Site Engineer / Supervisor [152 h]; HV / Substation Technician & Jointer [1216 h]; Electrician / Cable Technician [608 h]; General Labourer [912 h]; Foreman [152 h]; Mobile Crane (50-100 t) [152 h]; Cable Drum Trailer / Pulling Winch [152 h]; Welding / Generator Set [152 h] | 482,770.87 | Phase 1 | Phase 1 (Billing) | 4.1 | Construction | N/A | Contractor | Ancillary Buildings | 4.1 Substation & SEC | Substation & HV | N/A | N/A | N/A | Construction | Monthly progress | Float > 90 d | Other | Ramadan productivity | Substation & Utiliti | Medium (15-40) | 2028-02 | 2028-02 | 2028-Q1 | Not TGA process | Baseline | Preparation |
|  | 02 | **MV/LV Feeders, Grounding & Panel Boards** |  | 2027-10-09 | 2028-03-25 |  |  |  |  |  |  |  |  |  |  |  |  |  |  |  |  |  |  |  |  |  |  |  |  |  |  |  |  |  |  |  |
| CN-0460 |  | Trenching & Duct Banks for MV/LV Feeders | 25d | 2027-10-09 | 2027-11-06 | MS-0090, PR-0150 | 338d | 0d | SAR-6D Construction (Fri off, public holidays off) | PERFORMANCE - Progress Value (SAR, planned earned value) [334329 SAR]; CASH FLOW - Invoiced Cash (SAR, net of advance recovery) [300896 SAR]; Foreman [200 h]; Surveyor / Setting-out Crew [200 h]; General Labourer [1600 h]; Plant Operator / Driver [1600 h]; Site Engineer / Supervisor [200 h]; Excavator [400 h]; Wheel Loader / Backhoe [200 h]; Dump Truck / Tipper [800 h]; Vibratory Roller / Compactor [200 h]; Water Tanker [200 h] | 635,224.83 | Phase 1 | Phase 1 (Billing) | 4.1 | Construction | N/A | Contractor | Ancillary Buildings | 4.1 Substation & SEC | Civil & Earthworks | N/A | N/A | N/A | Construction | Monthly progress | Float > 90 d | Other | None | Substation & Utiliti | Medium (15-40) | 2027-10 | 2027-11 | 2027-Q4 | Not TGA process | Baseline | Not applicable |
| CN-0470 |  | MV/LV Cable Laying, Jointing & Terminations | 20d | 2028-03-02 | 2028-03-25 | CN-0450 | 122d | 0d | SAR-6D Construction (Fri off, public holidays off) | PERFORMANCE - Progress Value (SAR, planned earned value) [267463 SAR]; CASH FLOW - Invoiced Cash (SAR, net of advance recovery) [240717 SAR]; Site Engineer / Supervisor [160 h]; HV / Substation Technician & Jointer [1280 h]; Electrician / Cable Technician [640 h]; General Labourer [960 h]; Foreman [160 h]; Mobile Crane (50-100 t) [160 h]; Cable Drum Trailer / Pulling Winch [160 h]; Welding / Generator Set [160 h] | 508,179.87 | Phase 1 | Phase 1 (Billing) | 4.1 | Construction | N/A | Contractor | Ancillary Buildings | 4.1 Substation & SEC | Substation & HV | N/A | N/A | N/A | Construction | Monthly progress | Float > 90 d | Other | None | Substation & Utiliti | Medium (15-40) | 2028-03 | 2028-03 | 2028-Q1 | Not TGA process | Baseline | Not applicable |
| CN-0480 |  | Grounding & Panel Boards Installation | 15d | 2028-03-02 | 2028-03-19 | CN-0450 | 137d | 0d | SAR-6D Construction (Fri off, public holidays off) | PERFORMANCE - Progress Value (SAR, planned earned value) [200597 SAR]; CASH FLOW - Invoiced Cash (SAR, net of advance recovery) [180538 SAR]; Site Engineer / Supervisor [120 h]; HV / Substation Technician & Jointer [960 h]; Electrician / Cable Technician [480 h]; General Labourer [720 h]; Foreman [120 h]; Mobile Crane (50-100 t) [120 h]; Cable Drum Trailer / Pulling Winch [120 h]; Welding / Generator Set [120 h] | 381,134.91 | Phase 1 | Phase 1 (Billing) | 4.1 | Construction | N/A | Contractor | Ancillary Buildings | 4.1 Substation & SEC | Substation & HV | N/A | N/A | N/A | Construction | Monthly progress | Float > 90 d | Other | None | Substation & Utiliti | Medium (15-40) | 2028-03 | 2028-03 | 2028-Q1 | Not TGA process | Baseline | Not applicable |
|  | 03 | **Associated Works & SEC Connection** |  | 2027-10-09 | 2028-04-17 |  |  |  |  |  |  |  |  |  |  |  |  |  |  |  |  |  |  |  |  |  |  |  |  |  |  |  |  |  |  |  |
| CN-0490 |  | Manholes & Associated Civil Works | 20d | 2027-10-09 | 2027-10-31 | MS-0090, PR-0150 | 201d | 0d | SAR-6D Construction (Fri off, public holidays off) | PERFORMANCE - Progress Value (SAR, planned earned value) [267463 SAR]; CASH FLOW - Invoiced Cash (SAR, net of advance recovery) [240717 SAR]; Site Engineer / Supervisor [160 h]; Foreman [160 h]; General Labourer [960 h]; Wheel Loader / Backhoe [160 h] | 508,179.87 | Phase 1 | Phase 1 (Billing) | 4.1 | Construction | N/A | Contractor | Ancillary Buildings | 4.1 Substation & SEC | Civil & Earthworks | N/A | N/A | N/A | Construction | Monthly progress | Float > 90 d | Other | None | Substation & Utiliti | Small (<15) | 2027-10 | 2027-10 | 2027-Q4 | Not TGA process | Baseline | Not applicable |
| CN-0500 |  | Protection, Metering & Terminations | 10d | 2028-03-26 | 2028-04-05 | CN-0470, CN-0480 | 132d | 0d | SAR-6D Construction (Fri off, public holidays off) | PERFORMANCE - Progress Value (SAR, planned earned value) [133732 SAR]; CASH FLOW - Invoiced Cash (SAR, net of advance recovery) [120358 SAR]; Site Engineer / Supervisor [80 h]; HV / Substation Technician & Jointer [640 h]; Electrician / Cable Technician [320 h]; General Labourer [480 h]; Foreman [80 h]; Mobile Crane (50-100 t) [80 h]; Cable Drum Trailer / Pulling Winch [80 h]; Welding / Generator Set [80 h] | 254,089.93 | Phase 1 | Phase 1 (Billing) | 4.1 | Construction | N/A | Contractor | Ancillary Buildings | 4.1 Substation & SEC | Substation & HV | N/A | N/A | N/A | Construction | Monthly progress | Float > 90 d | Other | None | Substation & Utiliti | Medium (15-40) | 2028-03 | 2028-04 | 2028-Q1 | Not TGA process | Baseline | Not applicable |
| CN-0510 |  | SEC Connection Works (Source Point to Station) | 20d | 2028-03-26 | 2028-04-17 | CN-0470, PR-0165 | 122d | 0d | SAR-6D Construction (Fri off, public holidays off) | PERFORMANCE - Progress Value (SAR, planned earned value) [267463 SAR]; CASH FLOW - Invoiced Cash (SAR, net of advance recovery) [240717 SAR]; Site Engineer / Supervisor [160 h]; HV / Substation Technician & Jointer [1280 h]; Electrician / Cable Technician [640 h]; General Labourer [960 h]; Foreman [160 h]; Mobile Crane (50-100 t) [160 h]; Cable Drum Trailer / Pulling Winch [160 h]; Welding / Generator Set [160 h] | 508,179.87 | Phase 1 | Phase 1 (Billing) | 4.1 | Construction | N/A | Contractor | Ancillary Buildings | 4.1 Substation & SEC | Substation & HV | N/A | N/A | N/A | Construction | Monthly progress | Float > 90 d | Other | None | Substation & Utiliti | Medium (15-40) | 2028-03 | 2028-04 | 2028-Q1 | Not TGA process | Baseline | Not applicable |
|  | 02 | **Firefighting Building (BOQ GEA 518 m²)** |  | 2027-10-16 | 2028-01-26 |  |  |  |  |  |  |  |  |  |  |  |  |  |  |  |  |  |  |  |  |  |  |  |  |  |  |  |  |  |  |  |
|  | 01 | **Earthwork** |  | 2027-10-16 | 2027-10-31 |  |  |  |  |  |  |  |  |  |  |  |  |  |  |  |  |  |  |  |  |  |  |  |  |  |  |  |  |  |  |  |
| CN-0520 |  | Excavation, Shoring & Dewatering | 6d | 2027-10-16 | 2027-10-21 | MS-0090 FS+7d, PR-0150 | 315d | 0d | SAR-6D Construction (Fri off, public holidays off) | PERFORMANCE - Progress Value (SAR, planned earned value) [17117.5 SAR]; CASH FLOW - Invoiced Cash (SAR, net of advance recovery) [15405.7 SAR]; Foreman [48 h]; Surveyor / Setting-out Crew [48 h]; General Labourer [288 h]; Plant Operator / Driver [288 h]; Site Engineer / Supervisor [48 h]; Excavator [96 h]; Wheel Loader / Backhoe [48 h]; Dump Truck / Tipper [144 h]; Vibratory Roller / Compactor [48 h]; Water Tanker [48 h] | 32,523.19 | Phase 1 | Phase 1 (Billing) | 4.2 | Construction | N/A | Contractor | Ancillary Buildings | 4.2 Firefighting Bld | Civil & Earthworks | N/A | N/A | N/A | Construction | Monthly progress | Float > 90 d | Other | None | Station Building Zon | Medium (15-40) | 2027-10 | 2027-10 | 2027-Q4 | Not TGA process | Baseline | Not applicable |
| CN-0530 |  | Backfilling & Compaction around Foundations | 4d | 2027-10-27 | 2027-10-31 | CN-0550 | 295d | 0d | SAR-6D Construction (Fri off, public holidays off) | PERFORMANCE - Progress Value (SAR, planned earned value) [11411.6 SAR]; CASH FLOW - Invoiced Cash (SAR, net of advance recovery) [10270.5 SAR]; Foreman [32 h]; Surveyor / Setting-out Crew [32 h]; General Labourer [192 h]; Plant Operator / Driver [192 h]; Site Engineer / Supervisor [32 h]; Excavator [64 h]; Wheel Loader / Backhoe [32 h]; Dump Truck / Tipper [96 h]; Vibratory Roller / Compactor [32 h]; Water Tanker [32 h] | 21,682.14 | Phase 1 | Phase 1 (Billing) | 4.2 | Construction | N/A | Contractor | Ancillary Buildings | 4.2 Firefighting Bld | Civil & Earthworks | N/A | N/A | N/A | Construction | Monthly progress | Float > 90 d | Other | None | Station Building Zon | Medium (15-40) | 2027-10 | 2027-10 | 2027-Q4 | Not TGA process | Baseline | Not applicable |
|  | 02 | **Concrete Work** |  | 2027-10-16 | 2027-11-23 |  |  |  |  |  |  |  |  |  |  |  |  |  |  |  |  |  |  |  |  |  |  |  |  |  |  |  |  |  |  |  |
|  | 01 | **Sub Structure** |  | 2027-10-16 | 2027-11-14 |  |  |  |  |  |  |  |  |  |  |  |  |  |  |  |  |  |  |  |  |  |  |  |  |  |  |  |  |  |  |  |
| CN-0540 |  | Blinding & Foundation Waterproofing | 2d | 2027-10-16 | 2027-10-17 | MS-0090 FS+7d, PR-0150 | 319d | 0d | SAR-6D Construction (Fri off, public holidays off) | PERFORMANCE - Progress Value (SAR, planned earned value) [5705.82 SAR]; CASH FLOW - Invoiced Cash (SAR, net of advance recovery) [5135.24 SAR]; Site Engineer / Supervisor [16 h]; Foreman [32 h]; Carpenter (Formwork) [96 h]; Steel Fixer [96 h]; Concrete / Mason Gang [144 h]; General Labourer [80 h]; Surveyor / Setting-out Crew [16 h]; Concrete Pump [16 h]; Transit Mixer [32 h]; Mobile Crane (50-100 t) [16 h]; Scissor Lift / Scaffolding Set [16 h] | 10,841.06 | Phase 1 | Phase 1 (Billing) | 4.2 | Construction | N/A | Contractor | Ancillary Buildings | 4.2 Firefighting Bld | Structure (RC / Stee | N/A | N/A | N/A | Construction | Monthly progress | Float > 90 d | Other | None | Station Building Zon | Medium (15-40) | 2027-10 | 2027-10 | 2027-Q4 | Not TGA process | Baseline | Not applicable |
| CN-0550 |  | Footings & Ground Beams - Formwork, Rebar & Concrete | 10d | 2027-10-16 | 2027-10-26 | MS-0090 FS+7d, PR-0150 | 232d | 0d | SAR-6D Construction (Fri off, public holidays off) | PERFORMANCE - Progress Value (SAR, planned earned value) [28529.1 SAR]; CASH FLOW - Invoiced Cash (SAR, net of advance recovery) [25676.2 SAR]; Site Engineer / Supervisor [80 h]; Foreman [160 h]; Carpenter (Formwork) [480 h]; Steel Fixer [480 h]; Concrete / Mason Gang [720 h]; General Labourer [400 h]; Surveyor / Setting-out Crew [80 h]; Concrete Pump [80 h]; Transit Mixer [160 h]; Mobile Crane (50-100 t) [80 h]; Scissor Lift / Scaffolding Set [80 h] | 54,205.33 | Phase 1 | Phase 1 (Billing) | 4.2 | Construction | N/A | Contractor | Ancillary Buildings | 4.2 Firefighting Bld | Structure (RC / Stee | N/A | N/A | N/A | Construction | Monthly progress | Float > 90 d | Other | None | Station Building Zon | Medium (15-40) | 2027-10 | 2027-10 | 2027-Q4 | Not TGA process | Baseline | Not applicable |
| CN-0560 |  | Slab on Grade & Plinth Beams | 6d | 2027-11-08 | 2027-11-14 | CN-0570, CN-0600 | 295d | 0d | SAR-6D Construction (Fri off, public holidays off) | PERFORMANCE - Progress Value (SAR, planned earned value) [17117.5 SAR]; CASH FLOW - Invoiced Cash (SAR, net of advance recovery) [15405.7 SAR]; Site Engineer / Supervisor [48 h]; Foreman [96 h]; Carpenter (Formwork) [288 h]; Steel Fixer [288 h]; Concrete / Mason Gang [432 h]; General Labourer [240 h]; Surveyor / Setting-out Crew [48 h]; Concrete Pump [48 h]; Transit Mixer [96 h]; Mobile Crane (50-100 t) [48 h]; Scissor Lift / Scaffolding Set [48 h] | 32,523.19 | Phase 1 | Phase 1 (Billing) | 4.2 | Construction | N/A | Contractor | Ancillary Buildings | 4.2 Firefighting Bld | Structure (RC / Stee | N/A | N/A | N/A | Construction | Monthly progress | Float > 90 d | Other | None | Station Building Zon | Medium (15-40) | 2027-11 | 2027-11 | 2027-Q4 | Not TGA process | Baseline | Not applicable |

| ID | WBS | Activity | Duration | Start | Finish | Predecessors | Total float | Free float | Calendar | Resources | Cost | Phase | Contract Phase | BOQ Ref | Stage | Lead Class | Responsibility | Package Group | Work Package | Discipline | Design Stage | Procurement Step | Milestone Type | Cost Component | Payment Basis | Path Class | Critical Driver | Risk Flag | Work Zone | Crew Size Class | Start Month | Finish Month | Start Quarter | TGA Process | Duration Basis | Submit / Review |
| --- | --- | --- | --- | --- | --- | --- | --- | --- | --- | --- | --- | --- | --- | --- | --- | --- | --- | --- | --- | --- | --- | --- | --- | --- | --- | --- | --- | --- | --- | --- | --- | --- | --- | --- | --- | --- |
|  | 02 | **Super Structure** |  | 2027-10-27 | 2027-11-23 |  |  |  |  |  |  |  |  |  |  |  |  |  |  |  |  |  |  |  |  |  |  |  |  |  |  |  |  |  |  |  |
| CN-0570 |  | RC Columns & Walls | 8d | 2027-10-27 | 2027-11-04 | CN-0550 | 232d | 0d | SAR-6D Construction (Fri off, public holidays off) | PERFORMANCE - Progress Value (SAR, planned earned value) [22823.3 SAR]; CASH FLOW - Invoiced Cash (SAR, net of advance recovery) [20541 SAR]; Site Engineer / Supervisor [64 h]; Foreman [128 h]; Carpenter (Formwork) [384 h]; Steel Fixer [384 h]; Concrete / Mason Gang [576 h]; General Labourer [320 h]; Surveyor / Setting-out Crew [64 h]; Concrete Pump [64 h]; Transit Mixer [128 h]; Mobile Crane (50-100 t) [64 h]; Scissor Lift / Scaffolding Set [64 h] | 43,364.25 | Phase 1 | Phase 1 (Billing) | 4.2 | Construction | N/A | Contractor | Ancillary Buildings | 4.2 Firefighting Bld | Structure (RC / Stee | N/A | N/A | N/A | Construction | Monthly progress | Float > 90 d | Other | None | Station Building Zon | Medium (15-40) | 2027-10 | 2027-11 | 2027-Q4 | Not TGA process | Baseline | Not applicable |
| CN-0580 |  | Roof Beams & Slab - Formwork & Reinforcement | 11d | 2027-11-06 | 2027-11-17 | CN-0570 | 232d | 0d | SAR-6D Construction (Fri off, public holidays off) | PERFORMANCE - Progress Value (SAR, planned earned value) [31382 SAR]; CASH FLOW - Invoiced Cash (SAR, net of advance recovery) [28243.8 SAR]; Site Engineer / Supervisor [88 h]; Foreman [176 h]; Carpenter (Formwork) [528 h]; Steel Fixer [528 h]; Concrete / Mason Gang [792 h]; General Labourer [440 h]; Surveyor / Setting-out Crew [88 h]; Concrete Pump [88 h]; Transit Mixer [176 h]; Mobile Crane (50-100 t) [88 h]; Scissor Lift / Scaffolding Set [88 h] | 59,625.86 | Phase 1 | Phase 1 (Billing) | 4.2 | Construction | N/A | Contractor | Ancillary Buildings | 4.2 Firefighting Bld | Structure (RC / Stee | N/A | N/A | N/A | Construction | Monthly progress | Float > 90 d | Other | None | Station Building Zon | Medium (15-40) | 2027-11 | 2027-11 | 2027-Q4 | Not TGA process | Baseline | Not applicable |
| CN-0590 |  | Roof Slab Concrete Pour & Curing | 5d | 2027-11-18 | 2027-11-23 | CN-0580, CN-0710 | 277d | 0d | SAR-6D Construction (Fri off, public holidays off) | PERFORMANCE - Progress Value (SAR, planned earned value) [14264.6 SAR]; CASH FLOW - Invoiced Cash (SAR, net of advance recovery) [12838.1 SAR]; Site Engineer / Supervisor [40 h]; Foreman [80 h]; Carpenter (Formwork) [240 h]; Steel Fixer [240 h]; Concrete / Mason Gang [360 h]; General Labourer [200 h]; Surveyor / Setting-out Crew [40 h]; Concrete Pump [40 h]; Transit Mixer [80 h]; Mobile Crane (50-100 t) [40 h]; Scissor Lift / Scaffolding Set [40 h] | 27,102.66 | Phase 1 | Phase 1 (Billing) | 4.2 | Construction | N/A | Contractor | Ancillary Buildings | 4.2 Firefighting Bld | Structure (RC / Stee | N/A | N/A | N/A | Construction | Monthly progress | Float > 90 d | Other | None | Station Building Zon | Medium (15-40) | 2027-11 | 2027-11 | 2027-Q4 | Not TGA process | Baseline | Not applicable |
|  | 03 | **MEP Works** |  | 2027-11-01 | 2028-01-13 |  |  |  |  |  |  |  |  |  |  |  |  |  |  |  |  |  |  |  |  |  |  |  |  |  |  |  |  |  |  |  |
|  | 01 | **Plumbing** |  | 2027-11-01 | 2028-01-13 |  |  |  |  |  |  |  |  |  |  |  |  |  |  |  |  |  |  |  |  |  |  |  |  |  |  |  |  |  |  |  |
| CN-0600 |  | Underground Drainage & Sleeves | 6d | 2027-11-01 | 2027-11-07 | CN-0530 | 295d | 0d | SAR-6D Construction (Fri off, public holidays off) | PERFORMANCE - Progress Value (SAR, planned earned value) [17117.5 SAR]; CASH FLOW - Invoiced Cash (SAR, net of advance recovery) [15405.7 SAR]; Site Engineer / Supervisor [48 h]; Foreman [48 h]; General Labourer [240 h]; Wheel Loader / Backhoe [48 h] | 32,523.19 | Phase 1 | Phase 1 (Billing) | 4.2 | Construction | N/A | Contractor | Ancillary Buildings | 4.2 Firefighting Bld | Civil & Earthworks | N/A | N/A | N/A | Construction | Monthly progress | Float > 90 d | Other | None | Station Building Zon | Small (<15) | 2027-11 | 2027-11 | 2027-Q4 | Not TGA process | Baseline | Not applicable |
| CN-0610 |  | Water Supply & Drainage Piping - First Fix | 13d | 2027-11-18 | 2027-12-02 | CN-0580, CN-0710 | 279d | 0d | SAR-6D Construction (Fri off, public holidays off) | PERFORMANCE - Progress Value (SAR, planned earned value) [37087.8 SAR]; CASH FLOW - Invoiced Cash (SAR, net of advance recovery) [33379.1 SAR]; Site Engineer / Supervisor [104 h]; Foreman [104 h]; Plumber / Pipe Fitter [624 h]; HVAC Technician [312 h]; General Labourer [520 h]; Scissor Lift / Scaffolding Set [104 h]; Mobile Crane (50-100 t) [104 h] | 70,466.92 | Phase 1 | Phase 1 (Billing) | 4.2 | Construction | N/A | Contractor | Ancillary Buildings | 4.2 Firefighting Bld | MEP - Mechanical | N/A | N/A | N/A | Construction | Monthly progress | Float > 90 d | Other | None | Station Building Zon | Medium (15-40) | 2027-11 | 2027-12 | 2027-Q4 | Not TGA process | Baseline | Not applicable |
| CN-0620 |  | Sanitary Fixtures & Second Fix | 7d | 2028-01-06 | 2028-01-13 | CN-0800, CN-0890 | 243d | 0d | SAR-6D Construction (Fri off, public holidays off) | PERFORMANCE - Progress Value (SAR, planned earned value) [19970.4 SAR]; CASH FLOW - Invoiced Cash (SAR, net of advance recovery) [17973.3 SAR]; Site Engineer / Supervisor [56 h]; Foreman [56 h]; Plumber / Pipe Fitter [336 h]; HVAC Technician [168 h]; General Labourer [280 h]; Scissor Lift / Scaffolding Set [56 h]; Mobile Crane (50-100 t) [56 h] | 37,943.72 | Phase 1 | Phase 1 (Billing) | 4.2 | Construction | N/A | Contractor | Ancillary Buildings | 4.2 Firefighting Bld | MEP - Mechanical | N/A | N/A | N/A | Construction | Monthly progress | Float > 90 d | Other | None | Station Building Zon | Medium (15-40) | 2028-01 | 2028-01 | 2028-Q1 | Not TGA process | Baseline | Not applicable |
|  | 02 | **HVAC** |  | 2027-11-18 | 2028-01-11 |  |  |  |  |  |  |  |  |  |  |  |  |  |  |  |  |  |  |  |  |  |  |  |  |  |  |  |  |  |  |  |
| CN-0630 |  | Ductwork & Piping - First Fix | 14d | 2027-11-18 | 2027-12-04 | PC-0520, CN-0580, CN-0710 | 278d | 0d | SAR-6D Construction (Fri off, public holidays off) | PERFORMANCE - Progress Value (SAR, planned earned value) [39940.8 SAR]; CASH FLOW - Invoiced Cash (SAR, net of advance recovery) [35946.7 SAR]; Site Engineer / Supervisor [112 h]; Foreman [112 h]; Plumber / Pipe Fitter [672 h]; HVAC Technician [336 h]; General Labourer [560 h]; Scissor Lift / Scaffolding Set [112 h]; Mobile Crane (50-100 t) [112 h] | 75,887.44 | Phase 1 | Phase 1 (Billing) | 4.2 | Construction | N/A | Contractor | Ancillary Buildings | 4.2 Firefighting Bld | MEP - Mechanical | N/A | N/A | N/A | Construction | Monthly progress | Float > 90 d | Other | None | Station Building Zon | Medium (15-40) | 2027-11 | 2027-12 | 2027-Q4 | Not TGA process | Baseline | Not applicable |
| CN-0640 |  | AC Units, Diffusers & Equipment Installation | 8d | 2028-01-03 | 2028-01-11 | CN-0810 | 245d | 0d | SAR-6D Construction (Fri off, public holidays off) | PERFORMANCE - Progress Value (SAR, planned earned value) [22823.3 SAR]; CASH FLOW - Invoiced Cash (SAR, net of advance recovery) [20541 SAR]; Site Engineer / Supervisor [64 h]; Foreman [64 h]; Plumber / Pipe Fitter [384 h]; HVAC Technician [192 h]; General Labourer [320 h]; Scissor Lift / Scaffolding Set [64 h]; Mobile Crane (50-100 t) [64 h] | 43,364.25 | Phase 1 | Phase 1 (Billing) | 4.2 | Construction | N/A | Contractor | Ancillary Buildings | 4.2 Firefighting Bld | MEP - Mechanical | N/A | N/A | N/A | Construction | Monthly progress | Float > 90 d | Other | None | Station Building Zon | Medium (15-40) | 2028-01 | 2028-01 | 2028-Q1 | Not TGA process | Baseline | Not applicable |
|  | 03 | **Electrical** |  | 2027-11-18 | 2028-01-11 |  |  |  |  |  |  |  |  |  |  |  |  |  |  |  |  |  |  |  |  |  |  |  |  |  |  |  |  |  |  |  |
| CN-0650 |  | Conduits, Containment & Back Boxes | 11d | 2027-11-18 | 2027-11-30 | CN-0580, CN-0710 | 232d | 0d | SAR-6D Construction (Fri off, public holidays off) | PERFORMANCE - Progress Value (SAR, planned earned value) [31382 SAR]; CASH FLOW - Invoiced Cash (SAR, net of advance recovery) [28243.8 SAR]; Site Engineer / Supervisor [88 h]; Foreman [88 h]; Electrician / Cable Technician [704 h]; General Labourer [440 h]; Scissor Lift / Scaffolding Set [88 h]; Cable Drum Trailer / Pulling Winch [88 h] | 59,625.86 | Phase 1 | Phase 1 (Billing) | 4.2 | Construction | N/A | Contractor | Ancillary Buildings | 4.2 Firefighting Bld | MEP - Electrical | N/A | N/A | N/A | Construction | Monthly progress | Float > 90 d | Other | None | Station Building Zon | Medium (15-40) | 2027-11 | 2027-11 | 2027-Q4 | Not TGA process | Baseline | Not applicable |
| CN-0660 |  | Cable Pulling, Panel Boards & Distribution Boards | 13d | 2027-12-01 | 2027-12-15 | CN-0650, CN-0720 | 232d | 0d | SAR-6D Construction (Fri off, public holidays off) | PERFORMANCE - Progress Value (SAR, planned earned value) [37087.8 SAR]; CASH FLOW - Invoiced Cash (SAR, net of advance recovery) [33379.1 SAR]; Site Engineer / Supervisor [104 h]; Foreman [104 h]; Electrician / Cable Technician [832 h]; General Labourer [520 h]; Scissor Lift / Scaffolding Set [104 h]; Cable Drum Trailer / Pulling Winch [104 h] | 70,466.92 | Phase 1 | Phase 1 (Billing) | 4.2 | Construction | N/A | Contractor | Ancillary Buildings | 4.2 Firefighting Bld | MEP - Electrical | N/A | N/A | N/A | Construction | Monthly progress | Float > 90 d | Other | None | Station Building Zon | Medium (15-40) | 2027-12 | 2027-12 | 2027-Q4 | Not TGA process | Baseline | Not applicable |
| CN-0670 |  | Lighting, Small Power & Fixtures | 8d | 2028-01-03 | 2028-01-11 | CN-0810 | 245d | 0d | SAR-6D Construction (Fri off, public holidays off) | PERFORMANCE - Progress Value (SAR, planned earned value) [22823.3 SAR]; CASH FLOW - Invoiced Cash (SAR, net of advance recovery) [20541 SAR]; Site Engineer / Supervisor [64 h]; Foreman [64 h]; Electrician / Cable Technician [512 h]; General Labourer [320 h]; Scissor Lift / Scaffolding Set [64 h]; Cable Drum Trailer / Pulling Winch [64 h] | 43,364.25 | Phase 1 | Phase 1 (Billing) | 4.2 | Construction | N/A | Contractor | Ancillary Buildings | 4.2 Firefighting Bld | MEP - Electrical | N/A | N/A | N/A | Construction | Monthly progress | Float > 90 d | Other | None | Station Building Zon | Medium (15-40) | 2028-01 | 2028-01 | 2028-Q1 | Not TGA process | Baseline | Not applicable |
|  | 04 | **Fire Suppression** |  | 2027-11-18 | 2028-01-09 |  |  |  |  |  |  |  |  |  |  |  |  |  |  |  |  |  |  |  |  |  |  |  |  |  |  |  |  |  |  |  |
| CN-0680 |  | Fire Pump Room - Duty / Standby / Jockey Pumps, Controllers & Pipework | 18d | 2027-11-18 | 2027-12-08 | CN-0580, CN-0710 | 232d | 0d | SAR-6D Construction (Fri off, public holidays off) | PERFORMANCE - Progress Value (SAR, planned earned value) [51352.4 SAR]; CASH FLOW - Invoiced Cash (SAR, net of advance recovery) [46217.2 SAR]; Site Engineer / Supervisor [144 h]; Foreman [144 h]; Plumber / Pipe Fitter [864 h]; HVAC Technician [432 h]; General Labourer [720 h]; Scissor Lift / Scaffolding Set [144 h]; Mobile Crane (50-100 t) [144 h] | 97,569.58 | Phase 1 | Phase 1 (Billing) | 4.2 | Construction | N/A | Contractor | Ancillary Buildings | 4.2 Firefighting Bld | Fire & Life Safety | N/A | N/A | N/A | Construction | Monthly progress | Float > 90 d | Other | None | Station Building Zon | Medium (15-40) | 2027-11 | 2027-12 | 2027-Q4 | Not TGA process | Baseline | Not applicable |
| CN-0690 |  | Hydrants, Hose Reel Connections & Link to Water Tank / Fire Ring Main | 10d | 2027-12-12 | 2027-12-22 | CN-0680, CN-0770, CN-0850 | 234d | 0d | SAR-6D Construction (Fri off, public holidays off) | PERFORMANCE - Progress Value (SAR, planned earned value) [28529.1 SAR]; CASH FLOW - Invoiced Cash (SAR, net of advance recovery) [25676.2 SAR]; Site Engineer / Supervisor [80 h]; Foreman [80 h]; Plumber / Pipe Fitter [480 h]; HVAC Technician [240 h]; General Labourer [400 h]; Scissor Lift / Scaffolding Set [80 h]; Mobile Crane (50-100 t) [80 h] | 54,205.33 | Phase 1 | Phase 1 (Billing) | 4.2 | Construction | N/A | Contractor | Ancillary Buildings | 4.2 Firefighting Bld | Fire & Life Safety | N/A | N/A | N/A | Construction | Monthly progress | Float > 90 d | Other | None | Station Building Zon | Medium (15-40) | 2027-12 | 2027-12 | 2027-Q4 | Not TGA process | Baseline | Not applicable |
| CN-0700 |  | Sprinkler Heads, Hose Cabinets & Accessories | 6d | 2028-01-03 | 2028-01-09 | CN-0810 | 247d | 0d | SAR-6D Construction (Fri off, public holidays off) | PERFORMANCE - Progress Value (SAR, planned earned value) [17117.5 SAR]; CASH FLOW - Invoiced Cash (SAR, net of advance recovery) [15405.7 SAR]; Site Engineer / Supervisor [48 h]; Foreman [48 h]; Plumber / Pipe Fitter [288 h]; HVAC Technician [144 h]; General Labourer [240 h]; Scissor Lift / Scaffolding Set [48 h]; Mobile Crane (50-100 t) [48 h] | 32,523.19 | Phase 1 | Phase 1 (Billing) | 4.2 | Construction | N/A | Contractor | Ancillary Buildings | 4.2 Firefighting Bld | Fire & Life Safety | N/A | N/A | N/A | Construction | Monthly progress | Float > 90 d | Other | None | Station Building Zon | Medium (15-40) | 2028-01 | 2028-01 | 2028-Q1 | Not TGA process | Baseline | Not applicable |
|  | 04 | **Masonry** |  | 2027-11-06 | 2027-11-29 |  |  |  |  |  |  |  |  |  |  |  |  |  |  |  |  |  |  |  |  |  |  |  |  |  |  |  |  |  |  |  |
| CN-0710 |  | External Blockwork | 11d | 2027-11-06 | 2027-11-17 | CN-0570 | 232d | 0d | SAR-6D Construction (Fri off, public holidays off) | PERFORMANCE - Progress Value (SAR, planned earned value) [31382 SAR]; CASH FLOW - Invoiced Cash (SAR, net of advance recovery) [28243.8 SAR]; Site Engineer / Supervisor [88 h]; Foreman [176 h]; Finishing Trades (Plaster, Tile, Paint, Ceiling) [968 h]; Concrete / Mason Gang [264 h]; General Labourer [528 h]; Scissor Lift / Scaffolding Set [176 h]; Welding / Generator Set [88 h] | 59,625.86 | Phase 1 | Phase 1 (Billing) | 4.2 | Construction | N/A | Contractor | Ancillary Buildings | 4.2 Firefighting Bld | Architectural & Fini | N/A | N/A | N/A | Construction | Monthly progress | Float > 90 d | Other | None | Station Building Zon | Medium (15-40) | 2027-11 | 2027-11 | 2027-Q4 | Not TGA process | Baseline | Not applicable |
| CN-0720 |  | Internal Blockwork & Partitions | 10d | 2027-11-18 | 2027-11-29 | CN-0580, CN-0710 | 233d | 0d | SAR-6D Construction (Fri off, public holidays off) | PERFORMANCE - Progress Value (SAR, planned earned value) [28529.1 SAR]; CASH FLOW - Invoiced Cash (SAR, net of advance recovery) [25676.2 SAR]; Site Engineer / Supervisor [80 h]; Foreman [160 h]; Finishing Trades (Plaster, Tile, Paint, Ceiling) [880 h]; Concrete / Mason Gang [240 h]; General Labourer [480 h]; Scissor Lift / Scaffolding Set [160 h]; Welding / Generator Set [80 h] | 54,205.33 | Phase 1 | Phase 1 (Billing) | 4.2 | Construction | N/A | Contractor | Ancillary Buildings | 4.2 Firefighting Bld | Architectural & Fini | N/A | N/A | N/A | Construction | Monthly progress | Float > 90 d | Other | None | Station Building Zon | Medium (15-40) | 2027-11 | 2027-11 | 2027-Q4 | Not TGA process | Baseline | Not applicable |
|  | 05 | **Metal Works** |  | 2027-11-06 | 2027-12-07 |  |  |  |  |  |  |  |  |  |  |  |  |  |  |  |  |  |  |  |  |  |  |  |  |  |  |  |  |  |  |  |
| CN-0730 |  | Embeds, Miscellaneous Steel & Supports | 8d | 2027-11-06 | 2027-11-14 | CN-0570 | 295d | 0d | SAR-6D Construction (Fri off, public holidays off) | PERFORMANCE - Progress Value (SAR, planned earned value) [22823.3 SAR]; CASH FLOW - Invoiced Cash (SAR, net of advance recovery) [20541 SAR]; Site Engineer / Supervisor [64 h]; Foreman [64 h]; Steel Erector / Welder [384 h]; General Labourer [192 h]; Mobile Crane (50-100 t) [64 h]; Welding / Generator Set [128 h]; Scissor Lift / Scaffolding Set [64 h] | 43,364.25 | Phase 1 | Phase 1 (Billing) | 4.2 | Construction | N/A | Contractor | Ancillary Buildings | 4.2 Firefighting Bld | Structure (RC / Stee | N/A | N/A | N/A | Construction | Monthly progress | Float > 90 d | Other | None | Station Building Zon | Small (<15) | 2027-11 | 2027-11 | 2027-Q4 | Not TGA process | Baseline | Not applicable |
| CN-0740 |  | Handrails, Louvers & Metal Cladding | 7d | 2027-11-30 | 2027-12-07 | CN-0720 | 233d | 0d | SAR-6D Construction (Fri off, public holidays off) | PERFORMANCE - Progress Value (SAR, planned earned value) [19970.4 SAR]; CASH FLOW - Invoiced Cash (SAR, net of advance recovery) [17973.3 SAR]; Site Engineer / Supervisor [56 h]; Foreman [56 h]; Steel Erector / Welder [336 h]; General Labourer [168 h]; Mobile Crane (50-100 t) [56 h]; Welding / Generator Set [112 h]; Scissor Lift / Scaffolding Set [56 h] | 37,943.72 | Phase 1 | Phase 1 (Billing) | 4.2 | Construction | N/A | Contractor | Ancillary Buildings | 4.2 Firefighting Bld | Structure (RC / Stee | N/A | N/A | N/A | Construction | Monthly progress | Float > 90 d | Other | None | Station Building Zon | Small (<15) | 2027-11 | 2027-12 | 2027-Q4 | Not TGA process | Baseline | Not applicable |

| ID | WBS | Activity | Duration | Start | Finish | Predecessors | Total float | Free float | Calendar | Resources | Cost | Phase | Contract Phase | BOQ Ref | Stage | Lead Class | Responsibility | Package Group | Work Package | Discipline | Design Stage | Procurement Step | Milestone Type | Cost Component | Payment Basis | Path Class | Critical Driver | Risk Flag | Work Zone | Crew Size Class | Start Month | Finish Month | Start Quarter | TGA Process | Duration Basis | Submit / Review |
| --- | --- | --- | --- | --- | --- | --- | --- | --- | --- | --- | --- | --- | --- | --- | --- | --- | --- | --- | --- | --- | --- | --- | --- | --- | --- | --- | --- | --- | --- | --- | --- | --- | --- | --- | --- | --- |
|  | 06 | **Thermal And Moisture Protection** |  | 2027-11-24 | 2027-12-06 |  |  |  |  |  |  |  |  |  |  |  |  |  |  |  |  |  |  |  |  |  |  |  |  |  |  |  |  |  |  |  |
| CN-0750 |  | Roof Waterproofing & Thermal Insulation | 10d | 2027-11-24 | 2027-12-05 | CN-0590 | 277d | 0d | SAR-6D Construction (Fri off, public holidays off) | PERFORMANCE - Progress Value (SAR, planned earned value) [28529.1 SAR]; CASH FLOW - Invoiced Cash (SAR, net of advance recovery) [25676.2 SAR]; Site Engineer / Supervisor [80 h]; Foreman [160 h]; Finishing Trades (Plaster, Tile, Paint, Ceiling) [880 h]; Concrete / Mason Gang [240 h]; General Labourer [480 h]; Scissor Lift / Scaffolding Set [160 h]; Welding / Generator Set [80 h] | 54,205.33 | Phase 1 | Phase 1 (Billing) | 4.2 | Construction | N/A | Contractor | Ancillary Buildings | 4.2 Firefighting Bld | Architectural & Fini | N/A | N/A | N/A | Construction | Monthly progress | Float > 90 d | Other | None | Station Building Zon | Medium (15-40) | 2027-11 | 2027-12 | 2027-Q4 | Not TGA process | Baseline | Not applicable |
| CN-0760 |  | Wall Insulation, Sealants & Flashings | 6d | 2027-11-30 | 2027-12-06 | CN-0720 | 234d | 0d | SAR-6D Construction (Fri off, public holidays off) | PERFORMANCE - Progress Value (SAR, planned earned value) [17117.5 SAR]; CASH FLOW - Invoiced Cash (SAR, net of advance recovery) [15405.7 SAR]; Site Engineer / Supervisor [48 h]; Foreman [96 h]; Finishing Trades (Plaster, Tile, Paint, Ceiling) [528 h]; Concrete / Mason Gang [144 h]; General Labourer [288 h]; Scissor Lift / Scaffolding Set [96 h]; Welding / Generator Set [48 h] | 32,523.19 | Phase 1 | Phase 1 (Billing) | 4.2 | Construction | N/A | Contractor | Ancillary Buildings | 4.2 Firefighting Bld | Architectural & Fini | N/A | N/A | N/A | Construction | Monthly progress | Float > 90 d | Other | None | Station Building Zon | Medium (15-40) | 2027-11 | 2027-12 | 2027-Q4 | Not TGA process | Baseline | Not applicable |
|  | 07 | **Door And Windows** |  | 2027-11-30 | 2028-01-26 |  |  |  |  |  |  |  |  |  |  |  |  |  |  |  |  |  |  |  |  |  |  |  |  |  |  |  |  |  |  |  |
| CN-0770 |  | Door & Window Frames and Glazing Installation | 10d | 2027-11-30 | 2027-12-11 | CN-0720 | 234d | 0d | SAR-6D Construction (Fri off, public holidays off) | PERFORMANCE - Progress Value (SAR, planned earned value) [28529.1 SAR]; CASH FLOW - Invoiced Cash (SAR, net of advance recovery) [25676.2 SAR]; Site Engineer / Supervisor [80 h]; Foreman [160 h]; Finishing Trades (Plaster, Tile, Paint, Ceiling) [880 h]; Concrete / Mason Gang [240 h]; General Labourer [480 h]; Scissor Lift / Scaffolding Set [160 h]; Welding / Generator Set [80 h] | 54,205.33 | Phase 1 | Phase 1 (Billing) | 4.2 | Construction | N/A | Contractor | Ancillary Buildings | 4.2 Firefighting Bld | Architectural & Fini | N/A | N/A | N/A | Construction | Monthly progress | Float > 90 d | Other | None | Station Building Zon | Medium (15-40) | 2027-11 | 2027-12 | 2027-Q4 | Not TGA process | Baseline | Not applicable |
| CN-0780 |  | Door Leaves & Ironmongery | 7d | 2028-01-19 | 2028-01-26 | CN-0820 | 232d | 0d | SAR-6D Construction (Fri off, public holidays off) | PERFORMANCE - Progress Value (SAR, planned earned value) [19970.4 SAR]; CASH FLOW - Invoiced Cash (SAR, net of advance recovery) [17973.3 SAR]; Site Engineer / Supervisor [56 h]; Foreman [112 h]; Finishing Trades (Plaster, Tile, Paint, Ceiling) [616 h]; Concrete / Mason Gang [168 h]; General Labourer [336 h]; Scissor Lift / Scaffolding Set [112 h]; Welding / Generator Set [56 h] | 37,943.72 | Phase 1 | Phase 1 (Billing) | 4.2 | Construction | N/A | Contractor | Ancillary Buildings | 4.2 Firefighting Bld | Architectural & Fini | N/A | N/A | N/A | Construction | Monthly progress | Float > 90 d | Other | None | Station Building Zon | Medium (15-40) | 2028-01 | 2028-01 | 2028-Q1 | Not TGA process | Baseline | Not applicable |
|  | 08 | **Finishes** |  | 2027-12-09 | 2028-01-18 |  |  |  |  |  |  |  |  |  |  |  |  |  |  |  |  |  |  |  |  |  |  |  |  |  |  |  |  |  |  |  |
| CN-0790 |  | Internal & External Plastering | 11d | 2027-12-09 | 2027-12-21 | CN-0680, CN-0740, CN-0760 | 232d | 0d | SAR-6D Construction (Fri off, public holidays off) | PERFORMANCE - Progress Value (SAR, planned earned value) [31382 SAR]; CASH FLOW - Invoiced Cash (SAR, net of advance recovery) [28243.8 SAR]; Site Engineer / Supervisor [88 h]; Foreman [176 h]; Finishing Trades (Plaster, Tile, Paint, Ceiling) [968 h]; Concrete / Mason Gang [264 h]; General Labourer [528 h]; Scissor Lift / Scaffolding Set [176 h]; Welding / Generator Set [88 h] | 59,625.86 | Phase 1 | Phase 1 (Billing) | 4.2 | Construction | N/A | Contractor | Ancillary Buildings | 4.2 Firefighting Bld | Architectural & Fini | N/A | N/A | N/A | Construction | Monthly progress | Float > 90 d | Other | None | Station Building Zon | Medium (15-40) | 2027-12 | 2027-12 | 2027-Q4 | Not TGA process | Baseline | Not applicable |
| CN-0800 |  | Floor Screed & Tiling | 13d | 2027-12-22 | 2028-01-05 | CN-0790 | 232d | 0d | SAR-6D Construction (Fri off, public holidays off) | PERFORMANCE - Progress Value (SAR, planned earned value) [37087.8 SAR]; CASH FLOW - Invoiced Cash (SAR, net of advance recovery) [33379.1 SAR]; Site Engineer / Supervisor [104 h]; Foreman [208 h]; Finishing Trades (Plaster, Tile, Paint, Ceiling) [1144 h]; Concrete / Mason Gang [312 h]; General Labourer [624 h]; Scissor Lift / Scaffolding Set [208 h]; Welding / Generator Set [104 h] | 70,466.92 | Phase 1 | Phase 1 (Billing) | 4.2 | Construction | N/A | Contractor | Ancillary Buildings | 4.2 Firefighting Bld | Architectural & Fini | N/A | N/A | N/A | Construction | Monthly progress | Float > 90 d | Other | None | Station Building Zon | Medium (15-40) | 2027-12 | 2028-01 | 2027-Q4 | Not TGA process | Baseline | Not applicable |
| CN-0810 |  | False Ceiling & Bulkheads | 10d | 2027-12-22 | 2028-01-02 | CN-0790 | 245d | 0d | SAR-6D Construction (Fri off, public holidays off) | PERFORMANCE - Progress Value (SAR, planned earned value) [28529.1 SAR]; CASH FLOW - Invoiced Cash (SAR, net of advance recovery) [25676.2 SAR]; Site Engineer / Supervisor [80 h]; Foreman [160 h]; Finishing Trades (Plaster, Tile, Paint, Ceiling) [880 h]; Concrete / Mason Gang [240 h]; General Labourer [480 h]; Scissor Lift / Scaffolding Set [160 h]; Welding / Generator Set [80 h] | 54,205.33 | Phase 1 | Phase 1 (Billing) | 4.2 | Construction | N/A | Contractor | Ancillary Buildings | 4.2 Firefighting Bld | Architectural & Fini | N/A | N/A | N/A | Construction | Monthly progress | Float > 90 d | Other | None | Station Building Zon | Medium (15-40) | 2027-12 | 2028-01 | 2027-Q4 | Not TGA process | Baseline | Not applicable |
| CN-0820 |  | Painting - Internal & External | 11d | 2028-01-06 | 2028-01-18 | CN-0800, CN-0890 | 232d | 0d | SAR-6D Construction (Fri off, public holidays off) | PERFORMANCE - Progress Value (SAR, planned earned value) [31382 SAR]; CASH FLOW - Invoiced Cash (SAR, net of advance recovery) [28243.8 SAR]; Site Engineer / Supervisor [88 h]; Foreman [176 h]; Finishing Trades (Plaster, Tile, Paint, Ceiling) [968 h]; Concrete / Mason Gang [264 h]; General Labourer [528 h]; Scissor Lift / Scaffolding Set [176 h]; Welding / Generator Set [88 h] | 59,625.86 | Phase 1 | Phase 1 (Billing) | 4.2 | Construction | N/A | Contractor | Ancillary Buildings | 4.2 Firefighting Bld | Architectural & Fini | N/A | N/A | N/A | Construction | Monthly progress | Float > 90 d | Other | None | Station Building Zon | Medium (15-40) | 2028-01 | 2028-01 | 2028-Q1 | Not TGA process | Baseline | Not applicable |
|  | 09 | **Specialities** |  | 2028-01-19 | 2028-01-26 |  |  |  |  |  |  |  |  |  |  |  |  |  |  |  |  |  |  |  |  |  |  |  |  |  |  |  |  |  |  |  |
| CN-0830 |  | Signage, Toilet Partitions & Accessories | 7d | 2028-01-19 | 2028-01-26 | CN-0820 | 232d | 0d | SAR-6D Construction (Fri off, public holidays off) | PERFORMANCE - Progress Value (SAR, planned earned value) [19970.4 SAR]; CASH FLOW - Invoiced Cash (SAR, net of advance recovery) [17973.3 SAR]; Site Engineer / Supervisor [56 h]; Foreman [112 h]; Finishing Trades (Plaster, Tile, Paint, Ceiling) [616 h]; Concrete / Mason Gang [168 h]; General Labourer [336 h]; Scissor Lift / Scaffolding Set [112 h]; Welding / Generator Set [56 h] | 37,943.72 | Phase 1 | Phase 1 (Billing) | 4.2 | Construction | N/A | Contractor | Ancillary Buildings | 4.2 Firefighting Bld | Architectural & Fini | N/A | N/A | N/A | Construction | Monthly progress | Float > 90 d | Other | None | Station Building Zon | Medium (15-40) | 2028-01 | 2028-01 | 2028-Q1 | Not TGA process | Baseline | Not applicable |
|  | 10 | **Furnishing** |  | 2028-01-19 | 2028-01-26 |  |  |  |  |  |  |  |  |  |  |  |  |  |  |  |  |  |  |  |  |  |  |  |  |  |  |  |  |  |  |  |
| CN-0840 |  | Built-in Fittings & Window Treatments | 7d | 2028-01-19 | 2028-01-26 | CN-0820 | 232d | 0d | SAR-6D Construction (Fri off, public holidays off) | PERFORMANCE - Progress Value (SAR, planned earned value) [19970.4 SAR]; CASH FLOW - Invoiced Cash (SAR, net of advance recovery) [17973.3 SAR]; Site Engineer / Supervisor [56 h]; Foreman [112 h]; Finishing Trades (Plaster, Tile, Paint, Ceiling) [616 h]; Concrete / Mason Gang [168 h]; General Labourer [336 h]; Scissor Lift / Scaffolding Set [112 h]; Welding / Generator Set [56 h] | 37,943.72 | Phase 1 | Phase 1 (Billing) | 4.2 | Construction | N/A | Contractor | Ancillary Buildings | 4.2 Firefighting Bld | Architectural & Fini | N/A | N/A | N/A | Construction | Monthly progress | Float > 90 d | Other | None | Station Building Zon | Medium (15-40) | 2028-01 | 2028-01 | 2028-Q1 | Not TGA process | Baseline | Not applicable |
|  | 11 | **Conveying System** |  | 2027-11-30 | 2027-12-11 |  |  |  |  |  |  |  |  |  |  |  |  |  |  |  |  |  |  |  |  |  |  |  |  |  |  |  |  |  |  |  |
| CN-0850 |  | Accessibility Platform Lift - Supply & Installation | 10d | 2027-11-30 | 2027-12-11 | CN-0720 | 234d | 0d | SAR-6D Construction (Fri off, public holidays off) | PERFORMANCE - Progress Value (SAR, planned earned value) [28529.1 SAR]; CASH FLOW - Invoiced Cash (SAR, net of advance recovery) [25676.2 SAR]; Site Engineer / Supervisor [80 h]; Foreman [80 h]; Plumber / Pipe Fitter [480 h]; HVAC Technician [240 h]; General Labourer [400 h]; Scissor Lift / Scaffolding Set [80 h]; Mobile Crane (50-100 t) [80 h] | 54,205.33 | Phase 1 | Phase 1 (Billing) | 4.2 | Construction | N/A | Contractor | Ancillary Buildings | 4.2 Firefighting Bld | MEP - Mechanical | N/A | N/A | N/A | Construction | Monthly progress | Float > 90 d | Other | None | Station Building Zon | Medium (15-40) | 2027-11 | 2027-12 | 2027-Q4 | Not TGA process | Baseline | Not applicable |
|  | 12 | **Automation** |  | 2027-12-16 | 2027-12-27 |  |  |  |  |  |  |  |  |  |  |  |  |  |  |  |  |  |  |  |  |  |  |  |  |  |  |  |  |  |  |  |
| CN-0860 |  | Building Management System (BMS) Installation | 10d | 2027-12-16 | 2027-12-27 | CN-0660 | 258d | 0d | SAR-6D Construction (Fri off, public holidays off) | PERFORMANCE - Progress Value (SAR, planned earned value) [28529.1 SAR]; CASH FLOW - Invoiced Cash (SAR, net of advance recovery) [25676.2 SAR]; Site Engineer / Supervisor [80 h]; Foreman [80 h]; Electrician / Cable Technician [640 h]; General Labourer [400 h]; Scissor Lift / Scaffolding Set [80 h]; Cable Drum Trailer / Pulling Winch [80 h] | 54,205.33 | Phase 1 | Phase 1 (Billing) | 4.2 | Construction | N/A | Contractor | Ancillary Buildings | 4.2 Firefighting Bld | MEP - Electrical | N/A | N/A | N/A | Construction | Monthly progress | Float > 90 d | Other | None | Station Building Zon | Medium (15-40) | 2027-12 | 2027-12 | 2027-Q4 | Not TGA process | Baseline | Not applicable |
|  | 13 | **Communication** |  | 2027-12-16 | 2027-12-25 |  |  |  |  |  |  |  |  |  |  |  |  |  |  |  |  |  |  |  |  |  |  |  |  |  |  |  |  |  |  |  |
| CN-0870 |  | Telephone, PA & Communication Cabling | 8d | 2027-12-16 | 2027-12-25 | CN-0660 | 232d | 0d | SAR-6D Construction (Fri off, public holidays off) | PERFORMANCE - Progress Value (SAR, planned earned value) [22823.3 SAR]; CASH FLOW - Invoiced Cash (SAR, net of advance recovery) [20541 SAR]; Site Engineer / Supervisor [64 h]; Foreman [64 h]; Electrician / Cable Technician [512 h]; General Labourer [320 h]; Scissor Lift / Scaffolding Set [64 h]; Cable Drum Trailer / Pulling Winch [64 h] | 43,364.25 | Phase 1 | Phase 1 (Billing) | 4.2 | Construction | N/A | Contractor | Ancillary Buildings | 4.2 Firefighting Bld | MEP - Electrical | N/A | N/A | N/A | Construction | Monthly progress | Float > 90 d | Other | None | Station Building Zon | Medium (15-40) | 2027-12 | 2027-12 | 2027-Q4 | Not TGA process | Baseline | Not applicable |
|  | 14 | **Electronic Safety & Security** |  | 2027-12-16 | 2028-01-05 |  |  |  |  |  |  |  |  |  |  |  |  |  |  |  |  |  |  |  |  |  |  |  |  |  |  |  |  |  |  |  |
| CN-0880 |  | Fire Alarm System Installation | 8d | 2027-12-16 | 2027-12-25 | CN-0660 | 232d | 0d | SAR-6D Construction (Fri off, public holidays off) | PERFORMANCE - Progress Value (SAR, planned earned value) [22823.3 SAR]; CASH FLOW - Invoiced Cash (SAR, net of advance recovery) [20541 SAR]; Site Engineer / Supervisor [64 h]; Foreman [64 h]; Electrician / Cable Technician [512 h]; General Labourer [320 h]; Scissor Lift / Scaffolding Set [64 h]; Cable Drum Trailer / Pulling Winch [64 h] | 43,364.25 | Phase 1 | Phase 1 (Billing) | 4.2 | Construction | N/A | Contractor | Ancillary Buildings | 4.2 Firefighting Bld | Fire & Life Safety | N/A | N/A | N/A | Construction | Monthly progress | Float > 90 d | Other | None | Station Building Zon | Medium (15-40) | 2027-12 | 2027-12 | 2027-Q4 | Not TGA process | Baseline | Not applicable |
| CN-0890 |  | Security Systems - Field Devices & Cabling | 10d | 2027-12-26 | 2028-01-05 | CN-0690, CN-0870, CN-0880 | 232d | 0d | SAR-6D Construction (Fri off, public holidays off) | PERFORMANCE - Progress Value (SAR, planned earned value) [28529.1 SAR]; CASH FLOW - Invoiced Cash (SAR, net of advance recovery) [25676.2 SAR]; Site Engineer / Supervisor [80 h]; Foreman [80 h]; Electrician / Cable Technician [640 h]; General Labourer [400 h]; Scissor Lift / Scaffolding Set [80 h]; Cable Drum Trailer / Pulling Winch [80 h] | 54,205.33 | Phase 1 | Phase 1 (Billing) | 4.2 | Construction | N/A | Contractor | Ancillary Buildings | 4.2 Firefighting Bld | MEP - Electrical | N/A | N/A | N/A | Construction | Monthly progress | Float > 90 d | Other | None | Station Building Zon | Medium (15-40) | 2027-12 | 2028-01 | 2027-Q4 | Not TGA process | Baseline | Not applicable |

| ID | WBS | Activity | Duration | Start | Finish | Predecessors | Total float | Free float | Calendar | Resources | Cost | Phase | Contract Phase | BOQ Ref | Stage | Lead Class | Responsibility | Package Group | Work Package | Discipline | Design Stage | Procurement Step | Milestone Type | Cost Component | Payment Basis | Path Class | Critical Driver | Risk Flag | Work Zone | Crew Size Class | Start Month | Finish Month | Start Quarter | TGA Process | Duration Basis | Submit / Review |
| --- | --- | --- | --- | --- | --- | --- | --- | --- | --- | --- | --- | --- | --- | --- | --- | --- | --- | --- | --- | --- | --- | --- | --- | --- | --- | --- | --- | --- | --- | --- | --- | --- | --- | --- | --- | --- |
|  | 03 | **Generator Room (BOQ 62 m²)** |  | 2027-11-20 | 2028-06-19 |  |  |  |  |  |  |  |  |  |  |  |  |  |  |  |  |  |  |  |  |  |  |  |  |  |  |  |  |  |  |  |
|  | 01 | **Earthworks** |  | 2027-11-20 | 2027-11-25 |  |  |  |  |  |  |  |  |  |  |  |  |  |  |  |  |  |  |  |  |  |  |  |  |  |  |  |  |  |  |  |
| CN-0900 |  | Excavation & Backfilling | 6d | 2027-11-20 | 2027-11-25 | MS-0090 FS+42d, PR-0150 | 301d | 0d | SAR-6D Construction (Fri off, public holidays off) | PERFORMANCE - Progress Value (SAR, planned earned value) [23405.4 SAR]; CASH FLOW - Invoiced Cash (SAR, net of advance recovery) [21064.8 SAR]; Foreman [48 h]; Surveyor / Setting-out Crew [48 h]; General Labourer [288 h]; Plant Operator / Driver [288 h]; Site Engineer / Supervisor [48 h]; Excavator [48 h]; Wheel Loader / Backhoe [48 h]; Dump Truck / Tipper [144 h]; Vibratory Roller / Compactor [48 h]; Water Tanker [48 h] | 44,470.2 | Phase 2 | Phase 2 (Billing) | 4.3 | Construction | N/A | Contractor | Ancillary Buildings | 4.3 Generator Room | Civil & Earthworks | N/A | N/A | N/A | Construction | Monthly progress | Float > 90 d | Other | None | Substation & Utiliti | Medium (15-40) | 2027-11 | 2027-11 | 2027-Q4 | Not TGA process | Baseline | Not applicable |
|  | 02 | **Concrete Work** |  | 2027-11-20 | 2027-12-28 |  |  |  |  |  |  |  |  |  |  |  |  |  |  |  |  |  |  |  |  |  |  |  |  |  |  |  |  |  |  |  |
|  | 01 | **Sub Structure** |  | 2027-11-20 | 2027-12-05 |  |  |  |  |  |  |  |  |  |  |  |  |  |  |  |  |  |  |  |  |  |  |  |  |  |  |  |  |  |  |  |
| CN-0910 |  | Foundations & Slab on Grade | 14d | 2027-11-20 | 2027-12-05 | MS-0090 FS+42d, PR-0150 | 219d | 0d | SAR-6D Construction (Fri off, public holidays off) | PERFORMANCE - Progress Value (SAR, planned earned value) [54612.5 SAR]; CASH FLOW - Invoiced Cash (SAR, net of advance recovery) [49151.3 SAR]; Site Engineer / Supervisor [112 h]; Foreman [112 h]; Carpenter (Formwork) [672 h]; Steel Fixer [672 h]; Concrete / Mason Gang [896 h]; General Labourer [448 h]; Surveyor / Setting-out Crew [112 h]; Concrete Pump [112 h]; Transit Mixer [224 h]; Mobile Crane (50-100 t) [112 h]; Scissor Lift / Scaffolding Set [112 h] | 103,763.83 | Phase 2 | Phase 2 (Billing) | 4.3 | Construction | N/A | Contractor | Ancillary Buildings | 4.3 Generator Room | Structure (RC / Stee | N/A | N/A | N/A | Construction | Monthly progress | Float > 90 d | Other | None | Substation & Utiliti | Medium (15-40) | 2027-11 | 2027-12 | 2027-Q4 | Not TGA process | Baseline | Not applicable |
|  | 02 | **Super Structure** |  | 2027-12-06 | 2027-12-28 |  |  |  |  |  |  |  |  |  |  |  |  |  |  |  |  |  |  |  |  |  |  |  |  |  |  |  |  |  |  |  |
| CN-0920 |  | RC Columns, Walls & Roof Slab | 20d | 2027-12-06 | 2027-12-28 | CN-0910 | 219d | 0d | SAR-6D Construction (Fri off, public holidays off) | PERFORMANCE - Progress Value (SAR, planned earned value) [78017.9 SAR]; CASH FLOW - Invoiced Cash (SAR, net of advance recovery) [70216.1 SAR]; Site Engineer / Supervisor [160 h]; Foreman [160 h]; Carpenter (Formwork) [960 h]; Steel Fixer [960 h]; Concrete / Mason Gang [1280 h]; General Labourer [640 h]; Surveyor / Setting-out Crew [160 h]; Concrete Pump [160 h]; Transit Mixer [320 h]; Mobile Crane (50-100 t) [160 h]; Scissor Lift / Scaffolding Set [160 h] | 148,234.03 | Phase 2 | Phase 2 (Billing) | 4.3 | Construction | N/A | Contractor | Ancillary Buildings | 4.3 Generator Room | Structure (RC / Stee | N/A | N/A | N/A | Construction | Monthly progress | Float > 90 d | Other | None | Substation & Utiliti | Medium (15-40) | 2027-12 | 2027-12 | 2027-Q4 | Not TGA process | Baseline | Not applicable |
|  | 03 | **Architectural** |  | 2027-12-29 | 2028-02-06 |  |  |  |  |  |  |  |  |  |  |  |  |  |  |  |  |  |  |  |  |  |  |  |  |  |  |  |  |  |  |  |
| CN-0930 |  | Blockwork, Roof Waterproofing & Insulation | 18d | 2027-12-29 | 2028-01-18 | CN-0920 | 219d | 0d | SAR-6D Construction (Fri off, public holidays off) | PERFORMANCE - Progress Value (SAR, planned earned value) [70216.1 SAR]; CASH FLOW - Invoiced Cash (SAR, net of advance recovery) [63194.5 SAR]; Site Engineer / Supervisor [144 h]; Foreman [144 h]; Finishing Trades (Plaster, Tile, Paint, Ceiling) [1440 h]; Concrete / Mason Gang [432 h]; General Labourer [864 h]; Scissor Lift / Scaffolding Set [144 h]; Welding / Generator Set [144 h] | 133,410.63 | Phase 2 | Phase 2 (Billing) | 4.3 | Construction | N/A | Contractor | Ancillary Buildings | 4.3 Generator Room | Architectural & Fini | N/A | N/A | N/A | Construction | Monthly progress | Float > 90 d | Other | None | Substation & Utiliti | Medium (15-40) | 2027-12 | 2028-01 | 2027-Q4 | Not TGA process | Baseline | Not applicable |
| CN-0940 |  | Doors, Louvers, Finishes & Painting | 16d | 2028-01-19 | 2028-02-06 | CN-0930 | 239d | 0d | SAR-6D Construction (Fri off, public holidays off) | PERFORMANCE - Progress Value (SAR, planned earned value) [62414.3 SAR]; CASH FLOW - Invoiced Cash (SAR, net of advance recovery) [56172.9 SAR]; Site Engineer / Supervisor [128 h]; Foreman [128 h]; Steel Erector / Welder [768 h]; General Labourer [384 h]; Mobile Crane (50-100 t) [128 h]; Welding / Generator Set [256 h]; Scissor Lift / Scaffolding Set [128 h] | 118,587.23 | Phase 2 | Phase 2 (Billing) | 4.3 | Construction | N/A | Contractor | Ancillary Buildings | 4.3 Generator Room | Structure (RC / Stee | N/A | N/A | N/A | Construction | Monthly progress | Float > 90 d | Other | Ramadan productivity | Substation & Utiliti | Small (<15) | 2028-01 | 2028-02 | 2028-Q1 | Not TGA process | Baseline | Not applicable |
|  | 04 | **Mechanical Work** |  | 2028-05-09 | 2028-06-14 |  |  |  |  |  |  |  |  |  |  |  |  |  |  |  |  |  |  |  |  |  |  |  |  |  |  |  |  |  |  |  |
| CN-0950 |  | Generator Sets, Fuel System, Day Tank & Exhaust Installation | 20d | 2028-05-09 | 2028-05-31 | PC-0630, CN-0920, CN-0930 | 137d | 0d | SAR-6D Construction (Fri off, public holidays off) | PERFORMANCE - Progress Value (SAR, planned earned value) [78017.9 SAR]; CASH FLOW - Invoiced Cash (SAR, net of advance recovery) [70216.1 SAR]; Site Engineer / Supervisor [160 h]; Foreman [160 h]; Plumber / Pipe Fitter [960 h]; HVAC Technician [480 h]; General Labourer [640 h]; Scissor Lift / Scaffolding Set [160 h]; Mobile Crane (50-100 t) [160 h] | 148,234.03 | Phase 2 | Phase 2 (Billing) | 4.3 | Construction | N/A | Contractor | Ancillary Buildings | 4.3 Generator Room | MEP - Mechanical | N/A | N/A | N/A | Construction | Monthly progress | Float > 90 d | Other | None | Substation & Utiliti | Medium (15-40) | 2028-05 | 2028-05 | 2028-Q2 | Not TGA process | Baseline | Not applicable |
| CN-0960 |  | Ventilation, Sound Attenuation & Fire Safety Systems | 12d | 2028-06-01 | 2028-06-14 | CN-0950 | 141d | 0d | SAR-6D Construction (Fri off, public holidays off) | PERFORMANCE - Progress Value (SAR, planned earned value) [46810.8 SAR]; CASH FLOW - Invoiced Cash (SAR, net of advance recovery) [42129.7 SAR]; Site Engineer / Supervisor [96 h]; Foreman [96 h]; Plumber / Pipe Fitter [576 h]; HVAC Technician [288 h]; General Labourer [384 h]; Scissor Lift / Scaffolding Set [96 h]; Mobile Crane (50-100 t) [96 h] | 88,940.43 | Phase 2 | Phase 2 (Billing) | 4.3 | Construction | N/A | Contractor | Ancillary Buildings | 4.3 Generator Room | Fire & Life Safety | N/A | N/A | N/A | Construction | Monthly progress | Float > 90 d | Other | None | Substation & Utiliti | Medium (15-40) | 2028-06 | 2028-06 | 2028-Q2 | Not TGA process | Baseline | Not applicable |
|  | 05 | **Electrical Work** |  | 2027-12-06 | 2028-06-19 |  |  |  |  |  |  |  |  |  |  |  |  |  |  |  |  |  |  |  |  |  |  |  |  |  |  |  |  |  |  |  |
| CN-0970 |  | Cable Trenches, Containment & Earthing | 12d | 2027-12-06 | 2027-12-19 | CN-0910 | 281d | 0d | SAR-6D Construction (Fri off, public holidays off) | PERFORMANCE - Progress Value (SAR, planned earned value) [46810.8 SAR]; CASH FLOW - Invoiced Cash (SAR, net of advance recovery) [42129.7 SAR]; Foreman [96 h]; Surveyor / Setting-out Crew [96 h]; General Labourer [576 h]; Plant Operator / Driver [576 h]; Site Engineer / Supervisor [96 h]; Excavator [96 h]; Wheel Loader / Backhoe [96 h]; Dump Truck / Tipper [288 h]; Vibratory Roller / Compactor [96 h]; Water Tanker [96 h] | 88,940.43 | Phase 2 | Phase 2 (Billing) | 4.3 | Construction | N/A | Contractor | Ancillary Buildings | 4.3 Generator Room | Civil & Earthworks | N/A | N/A | N/A | Construction | Monthly progress | Float > 90 d | Other | None | Substation & Utiliti | Medium (15-40) | 2027-12 | 2027-12 | 2027-Q4 | Not TGA process | Baseline | Not applicable |
| CN-0980 |  | Control Panels, Cabling, Lighting & Small Power | 16d | 2028-06-01 | 2028-06-19 | CN-0950 | 137d | 0d | SAR-6D Construction (Fri off, public holidays off) | PERFORMANCE - Progress Value (SAR, planned earned value) [62414.3 SAR]; CASH FLOW - Invoiced Cash (SAR, net of advance recovery) [56172.9 SAR]; Site Engineer / Supervisor [128 h]; Foreman [128 h]; Electrician / Cable Technician [896 h]; General Labourer [512 h]; Scissor Lift / Scaffolding Set [128 h]; Cable Drum Trailer / Pulling Winch [128 h] | 118,587.23 | Phase 2 | Phase 2 (Billing) | 4.3 | Construction | N/A | Contractor | Ancillary Buildings | 4.3 Generator Room | MEP - Electrical | N/A | N/A | N/A | Construction | Monthly progress | Float > 90 d | Other | None | Substation & Utiliti | Small (<15) | 2028-06 | 2028-06 | 2028-Q2 | Not TGA process | Baseline | Not applicable |
|  | 04 | **Underground Water Tank** |  | 2027-10-23 | 2028-01-06 |  |  |  |  |  |  |  |  |  |  |  |  |  |  |  |  |  |  |  |  |  |  |  |  |  |  |  |  |  |  |  |
|  | 01 | **Structural** |  | 2027-10-23 | 2027-12-21 |  |  |  |  |  |  |  |  |  |  |  |  |  |  |  |  |  |  |  |  |  |  |  |  |  |  |  |  |  |  |  |
| CN-0990 |  | Excavation, Shoring & Dewatering | 12d | 2027-10-23 | 2027-11-04 | MS-0090 FS+14d, PR-0150 | 268d | 0d | SAR-6D Construction (Fri off, public holidays off) | PERFORMANCE - Progress Value (SAR, planned earned value) [187812 SAR]; CASH FLOW - Invoiced Cash (SAR, net of advance recovery) [169031 SAR]; Foreman [96 h]; Surveyor / Setting-out Crew [96 h]; General Labourer [672 h]; Plant Operator / Driver [672 h]; Site Engineer / Supervisor [96 h]; Excavator [192 h]; Wheel Loader / Backhoe [96 h]; Dump Truck / Tipper [384 h]; Vibratory Roller / Compactor [96 h]; Water Tanker [96 h] | 356,842.8 | Phase 1 | Phase 1 (Billing) | 4.4 | Construction | N/A | Contractor | Ancillary Buildings | 4.4 UG Water Tank | Civil & Earthworks | N/A | N/A | N/A | Construction | Monthly progress | Float > 90 d | Other | None | Substation & Utiliti | Medium (15-40) | 2027-10 | 2027-11 | 2027-Q4 | Not TGA process | Baseline | Not applicable |
| CN-1000 |  | Blinding & Base Slab | 10d | 2027-11-06 | 2027-11-16 | CN-0990 | 268d | 0d | SAR-6D Construction (Fri off, public holidays off) | PERFORMANCE - Progress Value (SAR, planned earned value) [156510 SAR]; CASH FLOW - Invoiced Cash (SAR, net of advance recovery) [140859 SAR]; Site Engineer / Supervisor [80 h]; Foreman [160 h]; Carpenter (Formwork) [560 h]; Steel Fixer [560 h]; Concrete / Mason Gang [880 h]; General Labourer [400 h]; Surveyor / Setting-out Crew [80 h]; Concrete Pump [80 h]; Transit Mixer [240 h]; Mobile Crane (50-100 t) [80 h]; Scissor Lift / Scaffolding Set [80 h] | 297,369 | Phase 1 | Phase 1 (Billing) | 4.4 | Construction | N/A | Contractor | Ancillary Buildings | 4.4 UG Water Tank | Structure (RC / Stee | N/A | N/A | N/A | Construction | Monthly progress | Float > 90 d | Other | None | Substation & Utiliti | Medium (15-40) | 2027-11 | 2027-11 | 2027-Q4 | Not TGA process | Baseline | Not applicable |
| CN-1010 |  | RC Walls | 14d | 2027-11-17 | 2027-12-02 | CN-1000 | 268d | 0d | SAR-6D Construction (Fri off, public holidays off) | PERFORMANCE - Progress Value (SAR, planned earned value) [219114 SAR]; CASH FLOW - Invoiced Cash (SAR, net of advance recovery) [197203 SAR]; Site Engineer / Supervisor [112 h]; Foreman [224 h]; Carpenter (Formwork) [784 h]; Steel Fixer [784 h]; Concrete / Mason Gang [1232 h]; General Labourer [560 h]; Surveyor / Setting-out Crew [112 h]; Concrete Pump [112 h]; Transit Mixer [336 h]; Mobile Crane (50-100 t) [112 h]; Scissor Lift / Scaffolding Set [112 h] | 416,316.6 | Phase 1 | Phase 1 (Billing) | 4.4 | Construction | N/A | Contractor | Ancillary Buildings | 4.4 UG Water Tank | Structure (RC / Stee | N/A | N/A | N/A | Construction | Monthly progress | Float > 90 d | Other | None | Substation & Utiliti | Medium (15-40) | 2027-11 | 2027-12 | 2027-Q4 | Not TGA process | Baseline | Not applicable |
| CN-1020 |  | Roof Slab | 10d | 2027-12-04 | 2027-12-14 | CN-1010 | 268d | 0d | SAR-6D Construction (Fri off, public holidays off) | PERFORMANCE - Progress Value (SAR, planned earned value) [156510 SAR]; CASH FLOW - Invoiced Cash (SAR, net of advance recovery) [140859 SAR]; Site Engineer / Supervisor [80 h]; Foreman [160 h]; Carpenter (Formwork) [560 h]; Steel Fixer [560 h]; Concrete / Mason Gang [880 h]; General Labourer [400 h]; Surveyor / Setting-out Crew [80 h]; Concrete Pump [80 h]; Transit Mixer [240 h]; Mobile Crane (50-100 t) [80 h]; Scissor Lift / Scaffolding Set [80 h] | 297,369 | Phase 1 | Phase 1 (Billing) | 4.4 | Construction | N/A | Contractor | Ancillary Buildings | 4.4 UG Water Tank | Structure (RC / Stee | N/A | N/A | N/A | Construction | Monthly progress | Float > 90 d | Other | None | Substation & Utiliti | Medium (15-40) | 2027-12 | 2027-12 | 2027-Q4 | Not TGA process | Baseline | Not applicable |
| CN-1030 |  | Backfilling & Compaction | 6d | 2027-12-15 | 2027-12-21 | CN-1020, CN-1040 | 282d | 0d | SAR-6D Construction (Fri off, public holidays off) | PERFORMANCE - Progress Value (SAR, planned earned value) [93906 SAR]; CASH FLOW - Invoiced Cash (SAR, net of advance recovery) [84515.4 SAR]; Foreman [48 h]; Surveyor / Setting-out Crew [48 h]; General Labourer [336 h]; Plant Operator / Driver [336 h]; Site Engineer / Supervisor [48 h]; Excavator [96 h]; Wheel Loader / Backhoe [48 h]; Dump Truck / Tipper [192 h]; Vibratory Roller / Compactor [48 h]; Water Tanker [48 h] | 178,421.4 | Phase 1 | Phase 1 (Billing) | 4.4 | Construction | N/A | Contractor | Ancillary Buildings | 4.4 UG Water Tank | Civil & Earthworks | N/A | N/A | N/A | Construction | Monthly progress | Float > 90 d | Other | None | Substation & Utiliti | Medium (15-40) | 2027-12 | 2027-12 | 2027-Q4 | Not TGA process | Baseline | Not applicable |

| ID | WBS | Activity | Duration | Start | Finish | Predecessors | Total float | Free float | Calendar | Resources | Cost | Phase | Contract Phase | BOQ Ref | Stage | Lead Class | Responsibility | Package Group | Work Package | Discipline | Design Stage | Procurement Step | Milestone Type | Cost Component | Payment Basis | Path Class | Critical Driver | Risk Flag | Work Zone | Crew Size Class | Start Month | Finish Month | Start Quarter | TGA Process | Duration Basis | Submit / Review |
| --- | --- | --- | --- | --- | --- | --- | --- | --- | --- | --- | --- | --- | --- | --- | --- | --- | --- | --- | --- | --- | --- | --- | --- | --- | --- | --- | --- | --- | --- | --- | --- | --- | --- | --- | --- | --- |
|  | 02 | **Architectural** |  | 2027-12-04 | 2027-12-21 |  |  |  |  |  |  |  |  |  |  |  |  |  |  |  |  |  |  |  |  |  |  |  |  |  |  |  |  |  |  |  |
| CN-1040 |  | Waterproofing Systems & Protective Coatings | 10d | 2027-12-04 | 2027-12-14 | CN-1010 | 268d | 0d | SAR-6D Construction (Fri off, public holidays off) | PERFORMANCE - Progress Value (SAR, planned earned value) [156510 SAR]; CASH FLOW - Invoiced Cash (SAR, net of advance recovery) [140859 SAR]; Site Engineer / Supervisor [80 h]; Foreman [160 h]; Finishing Trades (Plaster, Tile, Paint, Ceiling) [960 h]; Concrete / Mason Gang [320 h]; General Labourer [560 h]; Scissor Lift / Scaffolding Set [160 h]; Welding / Generator Set [80 h] | 297,369 | Phase 1 | Phase 1 (Billing) | 4.4 | Construction | N/A | Contractor | Ancillary Buildings | 4.4 UG Water Tank | Architectural & Fini | N/A | N/A | N/A | Construction | Monthly progress | Float > 90 d | Other | None | Substation & Utiliti | Medium (15-40) | 2027-12 | 2027-12 | 2027-Q4 | Not TGA process | Baseline | Not applicable |
| CN-1050 |  | Access Hatch, Ladder & Covers | 6d | 2027-12-15 | 2027-12-21 | CN-1020, CN-1040 | 282d | 0d | SAR-6D Construction (Fri off, public holidays off) | PERFORMANCE - Progress Value (SAR, planned earned value) [93906 SAR]; CASH FLOW - Invoiced Cash (SAR, net of advance recovery) [84515.4 SAR]; Site Engineer / Supervisor [48 h]; Foreman [48 h]; Steel Erector / Welder [336 h]; General Labourer [192 h]; Mobile Crane (50-100 t) [48 h]; Welding / Generator Set [144 h]; Scissor Lift / Scaffolding Set [48 h] | 178,421.4 | Phase 1 | Phase 1 (Billing) | 4.4 | Construction | N/A | Contractor | Ancillary Buildings | 4.4 UG Water Tank | Structure (RC / Stee | N/A | N/A | N/A | Construction | Monthly progress | Float > 90 d | Other | None | Substation & Utiliti | Small (<15) | 2027-12 | 2027-12 | 2027-Q4 | Not TGA process | Baseline | Not applicable |
|  | 03 | **Mechanical Work** |  | 2027-12-15 | 2028-01-06 |  |  |  |  |  |  |  |  |  |  |  |  |  |  |  |  |  |  |  |  |  |  |  |  |  |  |  |  |  |  |  |
| CN-1060 |  | Inlet / Outlet Pipework & Valves | 12d | 2027-12-15 | 2027-12-28 | PC-0530, CN-1020, CN-1040 | 268d | 0d | SAR-6D Construction (Fri off, public holidays off) | PERFORMANCE - Progress Value (SAR, planned earned value) [187812 SAR]; CASH FLOW - Invoiced Cash (SAR, net of advance recovery) [169031 SAR]; Site Engineer / Supervisor [96 h]; Foreman [192 h]; Plumber / Pipe Fitter [672 h]; General Labourer [1056 h]; Plant Operator / Driver [384 h]; Surveyor / Setting-out Crew [96 h]; Excavator [192 h]; Dump Truck / Tipper [192 h]; Vibratory Roller / Compactor [96 h]; Mobile Crane (50-100 t) [96 h] | 356,842.8 | Phase 1 | Phase 1 (Billing) | 4.4 | Construction | N/A | Contractor | Ancillary Buildings | 4.4 UG Water Tank | Utilities & Drainage | N/A | N/A | N/A | Construction | Monthly progress | Float > 90 d | Other | None | Substation & Utiliti | Medium (15-40) | 2027-12 | 2027-12 | 2027-Q4 | Not TGA process | Baseline | Not applicable |
| CN-1070 |  | Internal Fittings & Hydrostatic Test | 8d | 2027-12-29 | 2028-01-06 | CN-1060, CN-1080 | 268d | 0d | SAR-6D Construction (Fri off, public holidays off) | PERFORMANCE - Progress Value (SAR, planned earned value) [125208 SAR]; CASH FLOW - Invoiced Cash (SAR, net of advance recovery) [112687 SAR]; Site Engineer / Supervisor [64 h]; Foreman [128 h]; Plumber / Pipe Fitter [448 h]; General Labourer [704 h]; Plant Operator / Driver [256 h]; Surveyor / Setting-out Crew [64 h]; Excavator [128 h]; Dump Truck / Tipper [128 h]; Vibratory Roller / Compactor [64 h]; Mobile Crane (50-100 t) [64 h] | 237,895.2 | Phase 1 | Phase 1 (Billing) | 4.4 | Construction | N/A | Contractor | Ancillary Buildings | 4.4 UG Water Tank | Utilities & Drainage | N/A | N/A | N/A | Construction | Monthly progress | Float > 90 d | Other | None | Substation & Utiliti | Medium (15-40) | 2027-12 | 2028-01 | 2027-Q4 | Not TGA process | Baseline | Not applicable |
|  | 04 | **Electrical Work** |  | 2027-12-15 | 2027-12-26 |  |  |  |  |  |  |  |  |  |  |  |  |  |  |  |  |  |  |  |  |  |  |  |  |  |  |  |  |  |  |  |
| CN-1080 |  | Level Controls, Lighting & Earthing | 10d | 2027-12-15 | 2027-12-26 | CN-1020, CN-1040 | 270d | 0d | SAR-6D Construction (Fri off, public holidays off) | PERFORMANCE - Progress Value (SAR, planned earned value) [156510 SAR]; CASH FLOW - Invoiced Cash (SAR, net of advance recovery) [140859 SAR]; Foreman [80 h]; Surveyor / Setting-out Crew [80 h]; General Labourer [560 h]; Plant Operator / Driver [560 h]; Site Engineer / Supervisor [80 h]; Excavator [160 h]; Wheel Loader / Backhoe [80 h]; Dump Truck / Tipper [320 h]; Vibratory Roller / Compactor [80 h]; Water Tanker [80 h] | 297,369 | Phase 1 | Phase 1 (Billing) | 4.4 | Construction | N/A | Contractor | Ancillary Buildings | 4.4 UG Water Tank | Civil & Earthworks | N/A | N/A | N/A | Construction | Monthly progress | Float > 90 d | Other | None | Substation & Utiliti | Medium (15-40) | 2027-12 | 2027-12 | 2027-Q4 | Not TGA process | Baseline | Not applicable |
|  | 03 | **External Works** |  | 2027-10-09 | 2028-04-19 |  |  |  |  |  |  |  |  |  |  |  |  |  |  |  |  |  |  |  |  |  |  |  |  |  |  |  |  |  |  |  |
|  | 01 | **Site Works and Underground Utilities** |  | 2027-10-09 | 2027-12-28 |  |  |  |  |  |  |  |  |  |  |  |  |  |  |  |  |  |  |  |  |  |  |  |  |  |  |  |  |  |  |  |
|  | 01 | **Structural** |  | 2027-10-09 | 2027-12-16 |  |  |  |  |  |  |  |  |  |  |  |  |  |  |  |  |  |  |  |  |  |  |  |  |  |  |  |  |  |  |  |
| CN-1090 |  | Manholes, Chambers, Catch Basins & Thrust Blocks (RC) | 60d | 2027-10-09 | 2027-12-16 | MS-0090, PR-0150 | 278d | 0d | SAR-6D Construction (Fri off, public holidays off) | PERFORMANCE - Progress Value (SAR, planned earned value) [1039530 SAR]; CASH FLOW - Invoiced Cash (SAR, net of advance recovery) [935577 SAR]; Site Engineer / Supervisor [480 h]; Foreman [960 h]; Plumber / Pipe Fitter [4800 h]; General Labourer [7200 h]; Plant Operator / Driver [2400 h]; Surveyor / Setting-out Crew [480 h]; Excavator [960 h]; Dump Truck / Tipper [960 h]; Vibratory Roller / Compactor [480 h]; Mobile Crane (50-100 t) [480 h] | 1,975,106.73 | Phase 1 | Phase 1 (Billing) | 5.1 | Construction | N/A | Contractor | External Works | 5.1 Site Works & Uti | Utilities & Drainage | N/A | N/A | N/A | Construction | Monthly progress | Float > 90 d | Other | None | Substation & Utiliti | Medium (15-40) | 2027-10 | 2027-12 | 2027-Q4 | Not TGA process | Baseline | Not applicable |
| CN-1190 |  | Lift Station - Excavation, Wet Well & RC Structure | 25d | 2027-10-09 | 2027-11-06 | MS-0090, PR-0150 | 276d | 0d | SAR-6D Construction (Fri off, public holidays off) | PERFORMANCE - Progress Value (SAR, planned earned value) [433137 SAR]; CASH FLOW - Invoiced Cash (SAR, net of advance recovery) [389824 SAR]; Foreman [200 h]; Surveyor / Setting-out Crew [200 h]; General Labourer [2000 h]; Plant Operator / Driver [2000 h]; Site Engineer / Supervisor [200 h]; Excavator [400 h]; Wheel Loader / Backhoe [200 h]; Dump Truck / Tipper [1000 h]; Vibratory Roller / Compactor [200 h]; Water Tanker [200 h] | 822,961.14 | Phase 1 | Phase 1 (Billing) | 5.1 | Construction | N/A | Contractor | External Works | 5.1 Site Works & Uti | Civil & Earthworks | N/A | N/A | N/A | Construction | Monthly progress | Float > 90 d | Other | None | Substation & Utiliti | Medium (15-40) | 2027-10 | 2027-11 | 2027-Q4 | Not TGA process | Baseline | Not applicable |
|  | 02 | **Architectural** |  | 2027-11-07 | 2027-12-28 |  |  |  |  |  |  |  |  |  |  |  |  |  |  |  |  |  |  |  |  |  |  |  |  |  |  |  |  |  |  |  |
| CN-1200 |  | Lift Station - Waterproofing, Cover Slab & Access | 10d | 2027-11-07 | 2027-11-17 | CN-1190 | 276d | 0d | SAR-6D Construction (Fri off, public holidays off) | PERFORMANCE - Progress Value (SAR, planned earned value) [173255 SAR]; CASH FLOW - Invoiced Cash (SAR, net of advance recovery) [155929 SAR]; Site Engineer / Supervisor [80 h]; Foreman [160 h]; Plumber / Pipe Fitter [800 h]; General Labourer [1200 h]; Plant Operator / Driver [400 h]; Surveyor / Setting-out Crew [80 h]; Excavator [160 h]; Dump Truck / Tipper [160 h]; Vibratory Roller / Compactor [80 h]; Mobile Crane (50-100 t) [80 h] | 329,184.46 | Phase 1 | Phase 1 (Billing) | 5.1 | Construction | N/A | Contractor | External Works | 5.1 Site Works & Uti | Utilities & Drainage | N/A | N/A | N/A | Construction | Monthly progress | Float > 90 d | Other | None | Substation & Utiliti | Medium (15-40) | 2027-11 | 2027-11 | 2027-Q4 | Not TGA process | Baseline | Not applicable |
| CN-1100 |  | Surface Reinstatement & Site Grading after UG Works | 25d | 2027-11-30 | 2027-12-28 | CN-1120, CN-1140 | 188d | 0d | SAR-6D Construction (Fri off, public holidays off) | PERFORMANCE - Progress Value (SAR, planned earned value) [433137 SAR]; CASH FLOW - Invoiced Cash (SAR, net of advance recovery) [389824 SAR]; Foreman [200 h]; Surveyor / Setting-out Crew [200 h]; General Labourer [2000 h]; Plant Operator / Driver [2000 h]; Site Engineer / Supervisor [200 h]; Excavator [400 h]; Wheel Loader / Backhoe [200 h]; Dump Truck / Tipper [1000 h]; Vibratory Roller / Compactor [200 h]; Water Tanker [200 h] | 822,961.14 | Phase 1 | Phase 1 (Billing) | 5.1 | Construction | N/A | Contractor | External Works | 5.1 Site Works & Uti | Civil & Earthworks | N/A | N/A | N/A | Construction | Monthly progress | Float > 90 d | Other | None | Substation & Utiliti | Medium (15-40) | 2027-11 | 2027-12 | 2027-Q4 | Not TGA process | Baseline | Not applicable |
|  | 03 | **Mechanical Work** |  | 2027-10-09 | 2027-12-28 |  |  |  |  |  |  |  |  |  |  |  |  |  |  |  |  |  |  |  |  |  |  |  |  |  |  |  |  |  |  |  |
| CN-1110 |  | Trenching, Bedding & Shoring for Utility Networks | 40d | 2027-10-09 | 2027-11-23 | MS-0090, PR-0150, PC-0540 | 298d | 0d | SAR-6D Construction (Fri off, public holidays off) | PERFORMANCE - Progress Value (SAR, planned earned value) [693020 SAR]; CASH FLOW - Invoiced Cash (SAR, net of advance recovery) [623718 SAR]; Foreman [320 h]; Surveyor / Setting-out Crew [320 h]; General Labourer [3200 h]; Plant Operator / Driver [3200 h]; Site Engineer / Supervisor [320 h]; Excavator [640 h]; Wheel Loader / Backhoe [320 h]; Dump Truck / Tipper [1600 h]; Vibratory Roller / Compactor [320 h]; Water Tanker [320 h] | 1,316,737.83 | Phase 1 | Phase 1 (Billing) | 5.1 | Construction | N/A | Contractor | External Works | 5.1 Site Works & Uti | Civil & Earthworks | N/A | N/A | N/A | Construction | Monthly progress | Float > 90 d | Other | None | Substation & Utiliti | Medium (15-40) | 2027-10 | 2027-11 | 2027-Q4 | Not TGA process | Baseline | Not applicable |
| CN-1120 |  | Stormwater Drainage Pipelines & Channels | 45d | 2027-10-09 | 2027-11-29 | MS-0090, PR-0150 | 188d | 0d | SAR-6D Construction (Fri off, public holidays off) | PERFORMANCE - Progress Value (SAR, planned earned value) [779647 SAR]; CASH FLOW - Invoiced Cash (SAR, net of advance recovery) [701683 SAR]; Site Engineer / Supervisor [360 h]; Foreman [720 h]; Plumber / Pipe Fitter [3600 h]; General Labourer [5400 h]; Plant Operator / Driver [1800 h]; Surveyor / Setting-out Crew [360 h]; Excavator [720 h]; Dump Truck / Tipper [720 h]; Vibratory Roller / Compactor [360 h]; Mobile Crane (50-100 t) [360 h] | 1,481,330.04 | Phase 1 | Phase 1 (Billing) | 5.1 | Construction | N/A | Contractor | External Works | 5.1 Site Works & Uti | Utilities & Drainage | N/A | N/A | N/A | Construction | Monthly progress | Float > 90 d | Other | None | Substation & Utiliti | Medium (15-40) | 2027-10 | 2027-11 | 2027-Q4 | Not TGA process | Baseline | Not applicable |
| CN-1130 |  | Potable Water Network, Valves & Chambers | 35d | 2027-10-09 | 2027-11-17 | MS-0090, PR-0150 | 303d | 0d | SAR-6D Construction (Fri off, public holidays off) | PERFORMANCE - Progress Value (SAR, planned earned value) [606392 SAR]; CASH FLOW - Invoiced Cash (SAR, net of advance recovery) [545753 SAR]; Site Engineer / Supervisor [280 h]; Foreman [560 h]; Plumber / Pipe Fitter [2800 h]; General Labourer [4200 h]; Plant Operator / Driver [1400 h]; Surveyor / Setting-out Crew [280 h]; Excavator [560 h]; Dump Truck / Tipper [560 h]; Vibratory Roller / Compactor [280 h]; Mobile Crane (50-100 t) [280 h] | 1,152,145.6 | Phase 1 | Phase 1 (Billing) | 5.1 | Construction | N/A | Contractor | External Works | 5.1 Site Works & Uti | Utilities & Drainage | N/A | N/A | N/A | Construction | Monthly progress | Float > 90 d | Other | None | Substation & Utiliti | Medium (15-40) | 2027-10 | 2027-11 | 2027-Q4 | Not TGA process | Baseline | Not applicable |
| CN-1140 |  | Firefighting Ring Main, Hydrants & Valve Chambers | 35d | 2027-10-09 | 2027-11-17 | MS-0090, PR-0150 | 198d | 0d | SAR-6D Construction (Fri off, public holidays off) | PERFORMANCE - Progress Value (SAR, planned earned value) [606392 SAR]; CASH FLOW - Invoiced Cash (SAR, net of advance recovery) [545753 SAR]; Site Engineer / Supervisor [280 h]; Foreman [560 h]; Plumber / Pipe Fitter [2800 h]; General Labourer [4200 h]; Plant Operator / Driver [1400 h]; Surveyor / Setting-out Crew [280 h]; Excavator [560 h]; Dump Truck / Tipper [560 h]; Vibratory Roller / Compactor [280 h]; Mobile Crane (50-100 t) [280 h] | 1,152,145.6 | Phase 1 | Phase 1 (Billing) | 5.1 | Construction | N/A | Contractor | External Works | 5.1 Site Works & Uti | Fire & Life Safety | N/A | N/A | N/A | Construction | Monthly progress | Float > 90 d | Other | None | Substation & Utiliti | Medium (15-40) | 2027-10 | 2027-11 | 2027-Q4 | Not TGA process | Baseline | Not applicable |
| CN-1150 |  | Sewerage Network & Manholes | 40d | 2027-10-09 | 2027-11-23 | MS-0090, PR-0150 | 298d | 0d | SAR-6D Construction (Fri off, public holidays off) | PERFORMANCE - Progress Value (SAR, planned earned value) [693020 SAR]; CASH FLOW - Invoiced Cash (SAR, net of advance recovery) [623718 SAR]; Site Engineer / Supervisor [320 h]; Foreman [640 h]; Plumber / Pipe Fitter [3200 h]; General Labourer [4800 h]; Plant Operator / Driver [1600 h]; Surveyor / Setting-out Crew [320 h]; Excavator [640 h]; Dump Truck / Tipper [640 h]; Vibratory Roller / Compactor [320 h]; Mobile Crane (50-100 t) [320 h] | 1,316,737.83 | Phase 1 | Phase 1 (Billing) | 5.1 | Construction | N/A | Contractor | External Works | 5.1 Site Works & Uti | Utilities & Drainage | N/A | N/A | N/A | Construction | Monthly progress | Float > 90 d | Other | None | Substation & Utiliti | Medium (15-40) | 2027-10 | 2027-11 | 2027-Q4 | Not TGA process | Baseline | Not applicable |
| CN-1210 |  | Lift Station - Pumps, Piping & Valves | 15d | 2027-11-18 | 2027-12-05 | CN-1200 | 276d | 0d | SAR-6D Construction (Fri off, public holidays off) | PERFORMANCE - Progress Value (SAR, planned earned value) [259882 SAR]; CASH FLOW - Invoiced Cash (SAR, net of advance recovery) [233894 SAR]; Site Engineer / Supervisor [120 h]; Foreman [240 h]; Plumber / Pipe Fitter [1200 h]; General Labourer [1800 h]; Plant Operator / Driver [600 h]; Surveyor / Setting-out Crew [120 h]; Excavator [240 h]; Dump Truck / Tipper [240 h]; Vibratory Roller / Compactor [120 h]; Mobile Crane (50-100 t) [120 h] | 493,776.67 | Phase 1 | Phase 1 (Billing) | 5.1 | Construction | N/A | Contractor | External Works | 5.1 Site Works & Uti | Utilities & Drainage | N/A | N/A | N/A | Construction | Monthly progress | Float > 90 d | Other | None | Substation & Utiliti | Medium (15-40) | 2027-11 | 2027-12 | 2027-Q4 | Not TGA process | Baseline | Not applicable |
| CN-1160 |  | Irrigation Network (Underground) | 25d | 2027-11-30 | 2027-12-28 | CN-1120, CN-1140 | 268d | 0d | SAR-6D Construction (Fri off, public holidays off) | PERFORMANCE - Progress Value (SAR, planned earned value) [433137 SAR]; CASH FLOW - Invoiced Cash (SAR, net of advance recovery) [389824 SAR]; Site Engineer / Supervisor [200 h]; Foreman [400 h]; Plumber / Pipe Fitter [2000 h]; General Labourer [3000 h]; Plant Operator / Driver [1000 h]; Surveyor / Setting-out Crew [200 h]; Excavator [400 h]; Dump Truck / Tipper [400 h]; Vibratory Roller / Compactor [200 h]; Mobile Crane (50-100 t) [200 h] | 822,961.14 | Phase 1 | Phase 1 (Billing) | 5.1 | Construction | N/A | Contractor | External Works | 5.1 Site Works & Uti | Utilities & Drainage | N/A | N/A | N/A | Construction | Monthly progress | Float > 90 d | Other | None | Substation & Utiliti | Medium (15-40) | 2027-11 | 2027-12 | 2027-Q4 | Not TGA process | Baseline | Not applicable |
| CN-1170 |  | Pressure / Leak Testing, Flushing & Disinfection of Networks | 15d | 2027-11-30 | 2027-12-16 | CN-1120, CN-1140 | 278d | 0d | SAR-6D Construction (Fri off, public holidays off) | PERFORMANCE - Progress Value (SAR, planned earned value) [259882 SAR]; CASH FLOW - Invoiced Cash (SAR, net of advance recovery) [233894 SAR]; Site Engineer / Supervisor [120 h]; Foreman [240 h]; Plumber / Pipe Fitter [1200 h]; General Labourer [1800 h]; Plant Operator / Driver [600 h]; Surveyor / Setting-out Crew [120 h]; Excavator [240 h]; Dump Truck / Tipper [240 h]; Vibratory Roller / Compactor [120 h]; Mobile Crane (50-100 t) [120 h] | 493,776.67 | Phase 1 | Phase 1 (Billing) | 5.1 | Construction | N/A | Contractor | External Works | 5.1 Site Works & Uti | Utilities & Drainage | N/A | N/A | N/A | Construction | Monthly progress | Float > 90 d | Other | None | Substation & Utiliti | Medium (15-40) | 2027-11 | 2027-12 | 2027-Q4 | Not TGA process | Baseline | Not applicable |

| ID | WBS | Activity | Duration | Start | Finish | Predecessors | Total float | Free float | Calendar | Resources | Cost | Phase | Contract Phase | BOQ Ref | Stage | Lead Class | Responsibility | Package Group | Work Package | Discipline | Design Stage | Procurement Step | Milestone Type | Cost Component | Payment Basis | Path Class | Critical Driver | Risk Flag | Work Zone | Crew Size Class | Start Month | Finish Month | Start Quarter | TGA Process | Duration Basis | Submit / Review |
| --- | --- | --- | --- | --- | --- | --- | --- | --- | --- | --- | --- | --- | --- | --- | --- | --- | --- | --- | --- | --- | --- | --- | --- | --- | --- | --- | --- | --- | --- | --- | --- | --- | --- | --- | --- | --- |
|  | 04 | **Electrical Work** |  | 2027-10-09 | 2027-12-19 |  |  |  |  |  |  |  |  |  |  |  |  |  |  |  |  |  |  |  |  |  |  |  |  |  |  |  |  |  |  |  |
| CN-1180 |  | Electrical & Telecom Ducts with Handholes | 40d | 2027-10-09 | 2027-11-23 | MS-0090, PR-0150 | 298d | 0d | SAR-6D Construction (Fri off, public holidays off) | PERFORMANCE - Progress Value (SAR, planned earned value) [693020 SAR]; CASH FLOW - Invoiced Cash (SAR, net of advance recovery) [623718 SAR]; Site Engineer / Supervisor [320 h]; Foreman [320 h]; Electrician / Cable Technician [3840 h]; General Labourer [2240 h]; Scissor Lift / Scaffolding Set [320 h]; Cable Drum Trailer / Pulling Winch [320 h] | 1,316,737.83 | Phase 1 | Phase 1 (Billing) | 5.1 | Construction | N/A | Contractor | External Works | 5.1 Site Works & Uti | MEP - Electrical | N/A | N/A | N/A | Construction | Monthly progress | Float > 90 d | Other | None | Substation & Utiliti | Medium (15-40) | 2027-10 | 2027-11 | 2027-Q4 | Not TGA process | Baseline | Not applicable |
| CN-1220 |  | Lift Station - Power Supply, Controls & Telemetry | 12d | 2027-12-06 | 2027-12-19 | CN-1210 | 276d | 0d | SAR-6D Construction (Fri off, public holidays off) | PERFORMANCE - Progress Value (SAR, planned earned value) [207906 SAR]; CASH FLOW - Invoiced Cash (SAR, net of advance recovery) [187115 SAR]; Site Engineer / Supervisor [96 h]; Foreman [192 h]; Plumber / Pipe Fitter [960 h]; General Labourer [1440 h]; Plant Operator / Driver [480 h]; Surveyor / Setting-out Crew [96 h]; Excavator [192 h]; Dump Truck / Tipper [192 h]; Vibratory Roller / Compactor [96 h]; Mobile Crane (50-100 t) [96 h] | 395,021.34 | Phase 1 | Phase 1 (Billing) | 5.1 | Construction | N/A | Contractor | External Works | 5.1 Site Works & Uti | Utilities & Drainage | N/A | N/A | N/A | Construction | Monthly progress | Float > 90 d | Other | None | Substation & Utiliti | Medium (15-40) | 2027-12 | 2027-12 | 2027-Q4 | Not TGA process | Baseline | Not applicable |
|  | 02 | **Car Parking Sheds (BOQ 1,375 m²)** |  | 2027-12-29 | 2028-04-19 |  |  |  |  |  |  |  |  |  |  |  |  |  |  |  |  |  |  |  |  |  |  |  |  |  |  |  |  |  |  |  |
|  | 01 | **Foundations & Substructure** |  | 2027-12-29 | 2028-01-20 |  |  |  |  |  |  |  |  |  |  |  |  |  |  |  |  |  |  |  |  |  |  |  |  |  |  |  |  |  |  |  |
| CN-1230 |  | Excavation & Isolated Foundations (RC) | 20d | 2027-12-29 | 2028-01-20 | CN-1100 | 197d | 0d | SAR-6D Construction (Fri off, public holidays off) | PERFORMANCE - Progress Value (SAR, planned earned value) [102173 SAR]; CASH FLOW - Invoiced Cash (SAR, net of advance recovery) [91956 SAR]; Foreman [160 h]; Surveyor / Setting-out Crew [160 h]; General Labourer [800 h]; Plant Operator / Driver [800 h]; Site Engineer / Supervisor [160 h]; Excavator [160 h]; Wheel Loader / Backhoe [160 h]; Dump Truck / Tipper [480 h]; Vibratory Roller / Compactor [160 h]; Water Tanker [160 h] | 194,129.33 | Phase 1 | Phase 1 (Billing) | 5.2 | Construction | N/A | Contractor | External Works | 5.2 Car Parking Shed | Civil & Earthworks | N/A | N/A | N/A | Construction | Monthly progress | Float > 90 d | Other | None | Site & External Zone | Small (<15) | 2027-12 | 2028-01 | 2027-Q4 | Not TGA process | Baseline | Not applicable |
|  | 02 | **Structural Steel Works** |  | 2028-01-22 | 2028-03-09 |  |  |  |  |  |  |  |  |  |  |  |  |  |  |  |  |  |  |  |  |  |  |  |  |  |  |  |  |  |  |  |
| CN-1240 |  | Steel Columns & Roof Framing Erection | 35d | 2028-01-22 | 2028-03-09 | PC-0550, CN-1230 | 197d | 0d | SAR-6D Construction (Fri off, public holidays off) | PERFORMANCE - Progress Value (SAR, planned earned value) [178803 SAR]; CASH FLOW - Invoiced Cash (SAR, net of advance recovery) [160923 SAR]; Site Engineer / Supervisor [280 h]; Foreman [280 h]; Carpenter (Formwork) [1400 h]; Steel Fixer [1400 h]; Concrete / Mason Gang [2240 h]; General Labourer [1120 h]; Surveyor / Setting-out Crew [280 h]; Concrete Pump [280 h]; Transit Mixer [560 h]; Mobile Crane (50-100 t) [280 h]; Scissor Lift / Scaffolding Set [280 h] | 339,726.33 | Phase 1 | Phase 1 (Billing) | 5.2 | Construction | N/A | Contractor | External Works | 5.2 Car Parking Shed | Structure (RC / Stee | N/A | N/A | N/A | Construction | Monthly progress | Float > 90 d | Other | Ramadan productivity | Site & External Zone | Medium (15-40) | 2028-01 | 2028-03 | 2028-Q1 | Not TGA process | Baseline | Not applicable |
|  | 03 | **Roofing & Rainwater Drainage** |  | 2028-03-11 | 2028-04-02 |  |  |  |  |  |  |  |  |  |  |  |  |  |  |  |  |  |  |  |  |  |  |  |  |  |  |  |  |  |  |  |
| CN-1250 |  | Roof Sheeting, Insulation & Rainwater Downpipes | 20d | 2028-03-11 | 2028-04-02 | CN-1240 | 197d | 0d | SAR-6D Construction (Fri off, public holidays off) | PERFORMANCE - Progress Value (SAR, planned earned value) [102173 SAR]; CASH FLOW - Invoiced Cash (SAR, net of advance recovery) [91956 SAR]; Site Engineer / Supervisor [160 h]; Foreman [160 h]; Steel Erector / Welder [800 h]; General Labourer [480 h]; Mobile Crane (50-100 t) [160 h]; Welding / Generator Set [320 h]; Scissor Lift / Scaffolding Set [160 h] | 194,129.33 | Phase 1 | Phase 1 (Billing) | 5.2 | Construction | N/A | Contractor | External Works | 5.2 Car Parking Shed | Structure (RC / Stee | N/A | N/A | N/A | Construction | Monthly progress | Float > 90 d | Other | None | Site & External Zone | Small (<15) | 2028-03 | 2028-04 | 2028-Q1 | Not TGA process | Baseline | Not applicable |
|  | 04 | **Surface Finishes & Marking** |  | 2028-04-03 | 2028-04-19 |  |  |  |  |  |  |  |  |  |  |  |  |  |  |  |  |  |  |  |  |  |  |  |  |  |  |  |  |  |  |  |
| CN-1260 |  | Bay Surface Finishes, Line & Handicap Marking | 15d | 2028-04-03 | 2028-04-19 | CN-1250 | 197d | 0d | SAR-6D Construction (Fri off, public holidays off) | PERFORMANCE - Progress Value (SAR, planned earned value) [76630 SAR]; CASH FLOW - Invoiced Cash (SAR, net of advance recovery) [68967 SAR]; Site Engineer / Supervisor [120 h]; Foreman [120 h]; Paving & Road Crew [1080 h]; Plant Operator / Driver [480 h]; General Labourer [480 h]; Surveyor / Setting-out Crew [120 h]; Motor Grader [120 h]; Vibratory Roller / Compactor [120 h]; Asphalt Paver [120 h]; Dump Truck / Tipper [360 h]; Water Tanker [120 h]; Bitumen Sprayer / Road Marking Machine [120 h] | 145,597 | Phase 1 | Phase 1 (Billing) | 5.2 | Construction | N/A | Contractor | External Works | 5.2 Car Parking Shed | Roads & Paving | N/A | N/A | N/A | Construction | Monthly progress | Float > 90 d | Other | None | Site & External Zone | Medium (15-40) | 2028-04 | 2028-04 | 2028-Q2 | Not TGA process | Baseline | Not applicable |
|  | 05 | **Lighting & Electrical Works** |  | 2028-04-03 | 2028-04-19 |  |  |  |  |  |  |  |  |  |  |  |  |  |  |  |  |  |  |  |  |  |  |  |  |  |  |  |  |  |  |  |
| CN-1270 |  | Lighting & Associated Electrical Works | 15d | 2028-04-03 | 2028-04-19 | CN-1250 | 197d | 0d | SAR-6D Construction (Fri off, public holidays off) | PERFORMANCE - Progress Value (SAR, planned earned value) [76630 SAR]; CASH FLOW - Invoiced Cash (SAR, net of advance recovery) [68967 SAR]; Site Engineer / Supervisor [120 h]; Foreman [120 h]; Electrician / Cable Technician [720 h]; General Labourer [480 h]; Scissor Lift / Scaffolding Set [120 h]; Cable Drum Trailer / Pulling Winch [120 h] | 145,597 | Phase 1 | Phase 1 (Billing) | 5.2 | Construction | N/A | Contractor | External Works | 5.2 Car Parking Shed | MEP - Electrical | N/A | N/A | N/A | Construction | Monthly progress | Float > 90 d | Other | None | Site & External Zone | Small (<15) | 2028-04 | 2028-04 | 2028-Q2 | Not TGA process | Baseline | Not applicable |
|  | 03 | **Fence Works (BOQ 500 m)** |  | 2027-11-13 | 2027-12-20 |  |  |  |  |  |  |  |  |  |  |  |  |  |  |  |  |  |  |  |  |  |  |  |  |  |  |  |  |  |  |  |
|  | 01 | **Setting out & Excavation** |  | 2027-11-13 | 2027-11-21 |  |  |  |  |  |  |  |  |  |  |  |  |  |  |  |  |  |  |  |  |  |  |  |  |  |  |  |  |  |  |  |
| CN-1280 |  | Setting Out & Post Hole Excavation | 8d | 2027-11-13 | 2027-11-21 | MS-0090 FS+35d, PR-0150 | 321d | 0d | SAR-6D Construction (Fri off, public holidays off) | PERFORMANCE - Progress Value (SAR, planned earned value) [28390.2 SAR]; CASH FLOW - Invoiced Cash (SAR, net of advance recovery) [25551.2 SAR]; Foreman [64 h]; Surveyor / Setting-out Crew [64 h]; General Labourer [192 h]; Plant Operator / Driver [192 h]; Site Engineer / Supervisor [64 h]; Excavator [64 h]; Wheel Loader / Backhoe [64 h]; Dump Truck / Tipper [128 h]; Vibratory Roller / Compactor [64 h]; Water Tanker [64 h] | 53,941.46 | Phase 1 | Phase 1 (Billing) | 5.3 | Construction | N/A | Contractor | External Works | 5.3 Fence Works | Civil & Earthworks | N/A | N/A | N/A | Construction | Monthly progress | Float > 90 d | Other | None | Site & External Zone | Small (<15) | 2027-11 | 2027-11 | 2027-Q4 | Not TGA process | Baseline | Not applicable |
|  | 02 | **Foundations** |  | 2027-11-13 | 2027-11-25 |  |  |  |  |  |  |  |  |  |  |  |  |  |  |  |  |  |  |  |  |  |  |  |  |  |  |  |  |  |  |  |
| CN-1290 |  | Foundation Concrete & Bituminous Damp-proofing | 12d | 2027-11-13 | 2027-11-25 | MS-0090 FS+35d, PR-0150 | 296d | 0d | SAR-6D Construction (Fri off, public holidays off) | PERFORMANCE - Progress Value (SAR, planned earned value) [42585.4 SAR]; CASH FLOW - Invoiced Cash (SAR, net of advance recovery) [38326.8 SAR]; Site Engineer / Supervisor [96 h]; Foreman [96 h]; Carpenter (Formwork) [288 h]; Steel Fixer [288 h]; Concrete / Mason Gang [480 h]; General Labourer [192 h]; Surveyor / Setting-out Crew [96 h]; Concrete Pump [96 h]; Transit Mixer [96 h]; Mobile Crane (50-100 t) [96 h]; Scissor Lift / Scaffolding Set [96 h] | 80,912.2 | Phase 1 | Phase 1 (Billing) | 5.3 | Construction | N/A | Contractor | External Works | 5.3 Fence Works | Structure (RC / Stee | N/A | N/A | N/A | Construction | Monthly progress | Float > 90 d | Other | None | Site & External Zone | Medium (15-40) | 2027-11 | 2027-11 | 2027-Q4 | Not TGA process | Baseline | Not applicable |
|  | 03 | **Fence Erection** |  | 2027-11-27 | 2027-12-13 |  |  |  |  |  |  |  |  |  |  |  |  |  |  |  |  |  |  |  |  |  |  |  |  |  |  |  |  |  |  |  |
| CN-1300 |  | Steel Posts, Chain Link & Barbed Wire Erection | 15d | 2027-11-27 | 2027-12-13 | PC-0560, CN-1290 | 296d | 0d | SAR-6D Construction (Fri off, public holidays off) | PERFORMANCE - Progress Value (SAR, planned earned value) [53231.7 SAR]; CASH FLOW - Invoiced Cash (SAR, net of advance recovery) [47908.5 SAR]; Site Engineer / Supervisor [120 h]; Foreman [120 h]; Steel Erector / Welder [360 h]; General Labourer [240 h]; Mobile Crane (50-100 t) [120 h]; Welding / Generator Set [120 h]; Scissor Lift / Scaffolding Set [120 h] | 101,140.25 | Phase 1 | Phase 1 (Billing) | 5.3 | Construction | N/A | Contractor | External Works | 5.3 Fence Works | Structure (RC / Stee | N/A | N/A | N/A | Construction | Monthly progress | Float > 90 d | Other | None | Site & External Zone | Small (<15) | 2027-11 | 2027-12 | 2027-Q4 | Not TGA process | Baseline | Not applicable |
|  | 04 | **Backfill** |  | 2027-12-14 | 2027-12-20 |  |  |  |  |  |  |  |  |  |  |  |  |  |  |  |  |  |  |  |  |  |  |  |  |  |  |  |  |  |  |  |
| CN-1310 |  | Backfilling, Levelling & Compaction | 6d | 2027-12-14 | 2027-12-20 | CN-1300 | 296d | 0d | SAR-6D Construction (Fri off, public holidays off) | PERFORMANCE - Progress Value (SAR, planned earned value) [21292.7 SAR]; CASH FLOW - Invoiced Cash (SAR, net of advance recovery) [19163.4 SAR]; Foreman [48 h]; Surveyor / Setting-out Crew [48 h]; General Labourer [144 h]; Plant Operator / Driver [144 h]; Site Engineer / Supervisor [48 h]; Excavator [48 h]; Wheel Loader / Backhoe [48 h]; Dump Truck / Tipper [96 h]; Vibratory Roller / Compactor [48 h]; Water Tanker [48 h] | 40,456.09 | Phase 1 | Phase 1 (Billing) | 5.3 | Construction | N/A | Contractor | External Works | 5.3 Fence Works | Civil & Earthworks | N/A | N/A | N/A | Construction | Monthly progress | Float > 90 d | Other | None | Site & External Zone | Small (<15) | 2027-12 | 2027-12 | 2027-Q4 | Not TGA process | Baseline | Not applicable |
|  | 04 | **Automatic Gate System (BOQ 2 no)** |  | 2027-10-09 | 2028-01-09 |  |  |  |  |  |  |  |  |  |  |  |  |  |  |  |  |  |  |  |  |  |  |  |  |  |  |  |  |  |  |  |
|  | 01 | **Civil & Structural Works** |  | 2027-12-29 | 2028-01-09 |  |  |  |  |  |  |  |  |  |  |  |  |  |  |  |  |  |  |  |  |  |  |  |  |  |  |  |  |  |  |  |
| CN-1320 |  | Civil & Structural Works for Barrier Islands | 10d | 2027-12-29 | 2028-01-09 | CN-1100 | 278d | 0d | SAR-6D Construction (Fri off, public holidays off) | PERFORMANCE - Progress Value (SAR, planned earned value) [58846.2 SAR]; CASH FLOW - Invoiced Cash (SAR, net of advance recovery) [52961.5 SAR]; Site Engineer / Supervisor [80 h]; Foreman [80 h]; General Labourer [240 h]; Wheel Loader / Backhoe [80 h] | 111,807.69 | Phase 1 | Phase 1 (Billing) | 5.4 | Construction | N/A | Contractor | External Works | 5.4 Automatic Gate | Civil & Earthworks | N/A | N/A | N/A | Construction | Monthly progress | Float > 90 d | Other | None | Site & External Zone | Small (<15) | 2027-12 | 2028-01 | 2027-Q4 | Not TGA process | Baseline | Not applicable |

| ID | WBS | Activity | Duration | Start | Finish | Predecessors | Total float | Free float | Calendar | Resources | Cost | Phase | Contract Phase | BOQ Ref | Stage | Lead Class | Responsibility | Package Group | Work Package | Discipline | Design Stage | Procurement Step | Milestone Type | Cost Component | Payment Basis | Path Class | Critical Driver | Risk Flag | Work Zone | Crew Size Class | Start Month | Finish Month | Start Quarter | TGA Process | Duration Basis | Submit / Review |
| --- | --- | --- | --- | --- | --- | --- | --- | --- | --- | --- | --- | --- | --- | --- | --- | --- | --- | --- | --- | --- | --- | --- | --- | --- | --- | --- | --- | --- | --- | --- | --- | --- | --- | --- | --- | --- |
|  | 02 | **Conduiting & Cabling** |  | 2027-10-09 | 2027-10-17 |  |  |  |  |  |  |  |  |  |  |  |  |  |  |  |  |  |  |  |  |  |  |  |  |  |  |  |  |  |  |  |
| CN-1330 |  | Conduiting, Wiring & Control Cabling | 8d | 2027-10-09 | 2027-10-17 | MS-0090, PR-0150 | 342d | 0d | SAR-6D Construction (Fri off, public holidays off) | PERFORMANCE - Progress Value (SAR, planned earned value) [47076.9 SAR]; CASH FLOW - Invoiced Cash (SAR, net of advance recovery) [42369.2 SAR]; Site Engineer / Supervisor [64 h]; Foreman [64 h]; Electrician / Cable Technician [256 h]; General Labourer [192 h]; Scissor Lift / Scaffolding Set [64 h]; Cable Drum Trailer / Pulling Winch [64 h] | 89,446.15 | Phase 1 | Phase 1 (Billing) | 5.4 | Construction | N/A | Contractor | External Works | 5.4 Automatic Gate | MEP - Electrical | N/A | N/A | N/A | Construction | Monthly progress | Float > 90 d | Other | None | Site & External Zone | Small (<15) | 2027-10 | 2027-10 | 2027-Q4 | Not TGA process | Baseline | Not applicable |
|  | 03 | **Barrier & Control Equipment** |  | 2027-10-18 | 2027-10-26 |  |  |  |  |  |  |  |  |  |  |  |  |  |  |  |  |  |  |  |  |  |  |  |  |  |  |  |  |  |  |  |
| CN-1340 |  | Boom Barrier, Control Panel & Card Reader Installation | 8d | 2027-10-18 | 2027-10-26 | PC-0570, CN-1330 | 342d | 0d | SAR-6D Construction (Fri off, public holidays off) | PERFORMANCE - Progress Value (SAR, planned earned value) [47076.9 SAR]; CASH FLOW - Invoiced Cash (SAR, net of advance recovery) [42369.2 SAR]; Site Engineer / Supervisor [64 h]; Foreman [64 h]; Steel Erector / Welder [256 h]; General Labourer [128 h]; Mobile Crane (50-100 t) [64 h]; Welding / Generator Set [64 h]; Scissor Lift / Scaffolding Set [64 h] | 89,446.15 | Phase 1 | Phase 1 (Billing) | 5.4 | Construction | N/A | Contractor | External Works | 5.4 Automatic Gate | Structure (RC / Stee | N/A | N/A | N/A | Construction | Monthly progress | Float > 90 d | Other | None | Site & External Zone | Small (<15) | 2027-10 | 2027-10 | 2027-Q4 | Not TGA process | Baseline | Not applicable |
|  | 04 | **Road Works** |  | 2027-10-30 | 2028-04-29 |  |  |  |  |  |  |  |  |  |  |  |  |  |  |  |  |  |  |  |  |  |  |  |  |  |  |  |  |  |  |  |
|  | 01 | **Access Road (BOQ ~1,700 m dual carriageway)** |  | 2027-11-06 | 2028-02-01 |  |  |  |  |  |  |  |  |  |  |  |  |  |  |  |  |  |  |  |  |  |  |  |  |  |  |  |  |  |  |  |
|  | 01 | **Soil Work** |  | 2027-12-11 | 2028-01-13 |  |  |  |  |  |  |  |  |  |  |  |  |  |  |  |  |  |  |  |  |  |  |  |  |  |  |  |  |  |  |  |
| CN-1350 |  | Formation, Excavation, Compaction & Sub-base | 30d | 2027-12-11 | 2028-01-13 | CN-1430 | 255d | 0d | SAR-6D Construction (Fri off, public holidays off) | PERFORMANCE - Progress Value (SAR, planned earned value) [1301468 SAR]; CASH FLOW - Invoiced Cash (SAR, net of advance recovery) [1171322 SAR]; Foreman [240 h]; Surveyor / Setting-out Crew [240 h]; General Labourer [2400 h]; Plant Operator / Driver [2400 h]; Site Engineer / Supervisor [240 h]; Excavator [480 h]; Wheel Loader / Backhoe [240 h]; Dump Truck / Tipper [1200 h]; Vibratory Roller / Compactor [240 h]; Water Tanker [240 h] | 2,472,789.87 | Phase 2 | Phase 2 (Billing) | 6.1 | Construction | N/A | Contractor | Road Works | 6.1 Access Road | Civil & Earthworks | N/A | N/A | N/A | Construction | Monthly progress | Float > 90 d | Other | None | Road Zone | Medium (15-40) | 2027-12 | 2028-01 | 2027-Q4 | Not TGA process | Baseline | Not applicable |
|  | 02 | **Asphalt & wearing Course** |  | 2027-12-11 | 2028-01-10 |  |  |  |  |  |  |  |  |  |  |  |  |  |  |  |  |  |  |  |  |  |  |  |  |  |  |  |  |  |  |  |
| CN-1360 |  | Base Course Construction | 15d | 2027-12-11 | 2027-12-27 | PC-0580, CN-1430 | 259d | 0d | SAR-6D Construction (Fri off, public holidays off) | PERFORMANCE - Progress Value (SAR, planned earned value) [650734 SAR]; CASH FLOW - Invoiced Cash (SAR, net of advance recovery) [585661 SAR]; Site Engineer / Supervisor [120 h]; Foreman [240 h]; Paving & Road Crew [2040 h]; Plant Operator / Driver [840 h]; General Labourer [840 h]; Surveyor / Setting-out Crew [120 h]; Motor Grader [120 h]; Vibratory Roller / Compactor [240 h]; Asphalt Paver [120 h]; Dump Truck / Tipper [600 h]; Water Tanker [120 h]; Bitumen Sprayer / Road Marking Machine [120 h] | 1,236,394.94 | Phase 2 | Phase 2 (Billing) | 6.1 | Construction | N/A | Contractor | Road Works | 6.1 Access Road | Roads & Paving | N/A | N/A | N/A | Construction | Monthly progress | Float > 90 d | Other | None | Road Zone | Medium (15-40) | 2027-12 | 2027-12 | 2027-Q4 | Not TGA process | Baseline | Not applicable |
| CN-1370 |  | Asphalt Binder & Wearing Course | 12d | 2027-12-28 | 2028-01-10 | CN-1360 | 259d | 0d | SAR-6D Construction (Fri off, public holidays off) | PERFORMANCE - Progress Value (SAR, planned earned value) [520587 SAR]; CASH FLOW - Invoiced Cash (SAR, net of advance recovery) [468529 SAR]; Site Engineer / Supervisor [96 h]; Foreman [192 h]; Paving & Road Crew [1632 h]; Plant Operator / Driver [672 h]; General Labourer [672 h]; Surveyor / Setting-out Crew [96 h]; Motor Grader [96 h]; Vibratory Roller / Compactor [192 h]; Asphalt Paver [96 h]; Dump Truck / Tipper [480 h]; Water Tanker [96 h]; Bitumen Sprayer / Road Marking Machine [96 h] | 989,115.95 | Phase 2 | Phase 2 (Billing) | 6.1 | Construction | N/A | Contractor | Road Works | 6.1 Access Road | Roads & Paving | N/A | N/A | N/A | Construction | Monthly progress | Float > 90 d | Other | None | Road Zone | Medium (15-40) | 2027-12 | 2028-01 | 2027-Q4 | Not TGA process | Baseline | Not applicable |
|  | 03 | **Markings & Signage** |  | 2028-01-11 | 2028-01-24 |  |  |  |  |  |  |  |  |  |  |  |  |  |  |  |  |  |  |  |  |  |  |  |  |  |  |  |  |  |  |  |
| CN-1380 |  | Road Markings, Signage, Guardrails & Speed Humps | 12d | 2028-01-11 | 2028-01-24 | CN-1370 | 262d | 0d | SAR-6D Construction (Fri off, public holidays off) | PERFORMANCE - Progress Value (SAR, planned earned value) [520587 SAR]; CASH FLOW - Invoiced Cash (SAR, net of advance recovery) [468529 SAR]; Site Engineer / Supervisor [96 h]; Foreman [192 h]; Paving & Road Crew [1632 h]; Plant Operator / Driver [672 h]; General Labourer [672 h]; Surveyor / Setting-out Crew [96 h]; Motor Grader [96 h]; Vibratory Roller / Compactor [192 h]; Asphalt Paver [96 h]; Dump Truck / Tipper [480 h]; Water Tanker [96 h]; Bitumen Sprayer / Road Marking Machine [96 h] | 989,115.95 | Phase 2 | Phase 2 (Billing) | 6.1 | Construction | N/A | Contractor | Road Works | 6.1 Access Road | Roads & Paving | N/A | N/A | N/A | Construction | Monthly progress | Float > 90 d | Other | None | Road Zone | Medium (15-40) | 2028-01 | 2028-01 | 2028-Q1 | Not TGA process | Baseline | Not applicable |
|  | 04 | **Electrical & Lighting** |  | 2028-01-11 | 2028-02-01 |  |  |  |  |  |  |  |  |  |  |  |  |  |  |  |  |  |  |  |  |  |  |  |  |  |  |  |  |  |  |  |
| CN-1400 |  | Cabling, Luminaires & Road Lighting Energization | 12d | 2028-01-11 | 2028-01-24 | CN-1370 | 262d | 0d | SAR-6D Construction (Fri off, public holidays off) | PERFORMANCE - Progress Value (SAR, planned earned value) [520587 SAR]; CASH FLOW - Invoiced Cash (SAR, net of advance recovery) [468529 SAR]; Site Engineer / Supervisor [96 h]; Foreman [96 h]; Electrician / Cable Technician [1152 h]; General Labourer [672 h]; Scissor Lift / Scaffolding Set [96 h]; Cable Drum Trailer / Pulling Winch [96 h] | 989,115.95 | Phase 2 | Phase 2 (Billing) | 6.1 | Construction | N/A | Contractor | Road Works | 6.1 Access Road | MEP - Electrical | N/A | N/A | N/A | Construction | Monthly progress | Float > 90 d | Other | None | Road Zone | Medium (15-40) | 2028-01 | 2028-01 | 2028-Q1 | Not TGA process | Baseline | Not applicable |
| CN-1390 |  | Lighting Pole Foundations & Ducts | 16d | 2028-01-15 | 2028-02-01 | CN-1350 | 255d | 0d | SAR-6D Construction (Fri off, public holidays off) | PERFORMANCE - Progress Value (SAR, planned earned value) [694116 SAR]; CASH FLOW - Invoiced Cash (SAR, net of advance recovery) [624705 SAR]; Site Engineer / Supervisor [128 h]; Foreman [256 h]; Carpenter (Formwork) [1280 h]; Steel Fixer [1280 h]; Concrete / Mason Gang [1792 h]; General Labourer [896 h]; Surveyor / Setting-out Crew [128 h]; Concrete Pump [128 h]; Transit Mixer [512 h]; Mobile Crane (50-100 t) [128 h]; Scissor Lift / Scaffolding Set [128 h] | 1,318,821.27 | Phase 2 | Phase 2 (Billing) | 6.1 | Construction | N/A | Contractor | Road Works | 6.1 Access Road | Structure (RC / Stee | N/A | N/A | N/A | Construction | Monthly progress | Float > 90 d | Other | Ramadan productivity | Road Zone | Large (>40) | 2028-01 | 2028-02 | 2028-Q1 | Not TGA process | Baseline | Not applicable |
|  | 05 | **Irrigation & Planting** |  | 2028-01-11 | 2028-02-01 |  |  |  |  |  |  |  |  |  |  |  |  |  |  |  |  |  |  |  |  |  |  |  |  |  |  |  |  |  |  |  |
| CN-1420 |  | Planting & Landscaping | 15d | 2028-01-11 | 2028-01-27 | CN-1370 | 259d | 0d | SAR-6D Construction (Fri off, public holidays off) | PERFORMANCE - Progress Value (SAR, planned earned value) [650734 SAR]; CASH FLOW - Invoiced Cash (SAR, net of advance recovery) [585661 SAR]; Landscape Gardener [1680 h]; General Labourer [1440 h]; Foreman [120 h]; Water Tanker [120 h]; Dump Truck / Tipper [120 h]; Wheel Loader / Backhoe [120 h] | 1,236,394.94 | Phase 2 | Phase 2 (Billing) | 6.1 | Construction | N/A | Contractor | Road Works | 6.1 Access Road | Landscape | N/A | N/A | N/A | Construction | Monthly progress | Float > 90 d | Other | None | Road Zone | Medium (15-40) | 2028-01 | 2028-01 | 2028-Q1 | Not TGA process | Baseline | Not applicable |
| CN-1410 |  | Irrigation Network (Median & Verges) | 16d | 2028-01-15 | 2028-02-01 | CN-1350 | 255d | 0d | SAR-6D Construction (Fri off, public holidays off) | PERFORMANCE - Progress Value (SAR, planned earned value) [694116 SAR]; CASH FLOW - Invoiced Cash (SAR, net of advance recovery) [624705 SAR]; Site Engineer / Supervisor [128 h]; Foreman [256 h]; Plumber / Pipe Fitter [1280 h]; General Labourer [1792 h]; Plant Operator / Driver [640 h]; Surveyor / Setting-out Crew [128 h]; Excavator [256 h]; Dump Truck / Tipper [256 h]; Vibratory Roller / Compactor [128 h]; Mobile Crane (50-100 t) [128 h] | 1,318,821.27 | Phase 2 | Phase 2 (Billing) | 6.1 | Construction | N/A | Contractor | Road Works | 6.1 Access Road | Utilities & Drainage | N/A | N/A | N/A | Construction | Monthly progress | Float > 90 d | Other | Ramadan productivity | Road Zone | Medium (15-40) | 2028-01 | 2028-02 | 2028-Q1 | Not TGA process | Baseline | Not applicable |
|  | 06 | **Stormwater Drainage** |  | 2027-11-06 | 2027-12-09 |  |  |  |  |  |  |  |  |  |  |  |  |  |  |  |  |  |  |  |  |  |  |  |  |  |  |  |  |  |  |  |
| CN-1430 |  | Stormwater Drainage Pipes, Culverts & Inlets | 30d | 2027-11-06 | 2027-12-09 | MS-0090 FS+28d, PR-0150 | 255d | 0d | SAR-6D Construction (Fri off, public holidays off) | PERFORMANCE - Progress Value (SAR, planned earned value) [1301468 SAR]; CASH FLOW - Invoiced Cash (SAR, net of advance recovery) [1171322 SAR]; Site Engineer / Supervisor [240 h]; Foreman [480 h]; Plumber / Pipe Fitter [2400 h]; General Labourer [3360 h]; Plant Operator / Driver [1200 h]; Surveyor / Setting-out Crew [240 h]; Excavator [480 h]; Dump Truck / Tipper [480 h]; Vibratory Roller / Compactor [240 h]; Mobile Crane (50-100 t) [240 h] | 2,472,789.87 | Phase 2 | Phase 2 (Billing) | 6.1 | Construction | N/A | Contractor | Road Works | 6.1 Access Road | Utilities & Drainage | N/A | N/A | N/A | Construction | Monthly progress | Float > 90 d | Other | None | Road Zone | Medium (15-40) | 2027-11 | 2027-12 | 2027-Q4 | Not TGA process | Baseline | Not applicable |
|  | 02 | **External Works (All works above ground)** |  | 2027-10-30 | 2028-04-29 |  |  |  |  |  |  |  |  |  |  |  |  |  |  |  |  |  |  |  |  |  |  |  |  |  |  |  |  |  |  |  |
|  | 01 | **Earthworks** |  | 2027-10-30 | 2027-12-02 |  |  |  |  |  |  |  |  |  |  |  |  |  |  |  |  |  |  |  |  |  |  |  |  |  |  |  |  |  |  |  |
| CN-1440 |  | Site Clearance, Cut & Fill, Grading & Soil Improvement | 30d | 2027-10-30 | 2027-12-02 | MS-0090 FS+21d, PR-0150 | 185d | 0d | SAR-6D Construction (Fri off, public holidays off) | PERFORMANCE - Progress Value (SAR, planned earned value) [756720 SAR]; CASH FLOW - Invoiced Cash (SAR, net of advance recovery) [681048 SAR]; Foreman [240 h]; Surveyor / Setting-out Crew [240 h]; General Labourer [2160 h]; Plant Operator / Driver [2160 h]; Site Engineer / Supervisor [240 h]; Excavator [480 h]; Wheel Loader / Backhoe [240 h]; Dump Truck / Tipper [1200 h]; Vibratory Roller / Compactor [240 h]; Water Tanker [240 h] | 1,437,768.47 | Phase 1 | Phase 1 (Billing) | 6.3 | Construction | N/A | Contractor | Road Works | 6.3 External Works | Civil & Earthworks | N/A | N/A | N/A | Construction | Monthly progress | Float > 90 d | Other | None | Site & External Zone | Medium (15-40) | 2027-10 | 2027-12 | 2027-Q4 | Not TGA process | Baseline | Not applicable |

| ID | WBS | Activity | Duration | Start | Finish | Predecessors | Total float | Free float | Calendar | Resources | Cost | Phase | Contract Phase | BOQ Ref | Stage | Lead Class | Responsibility | Package Group | Work Package | Discipline | Design Stage | Procurement Step | Milestone Type | Cost Component | Payment Basis | Path Class | Critical Driver | Risk Flag | Work Zone | Crew Size Class | Start Month | Finish Month | Start Quarter | TGA Process | Duration Basis | Submit / Review |
| --- | --- | --- | --- | --- | --- | --- | --- | --- | --- | --- | --- | --- | --- | --- | --- | --- | --- | --- | --- | --- | --- | --- | --- | --- | --- | --- | --- | --- | --- | --- | --- | --- | --- | --- | --- | --- |
|  | 02 | **Asphalt & wearing Course** |  | 2027-12-04 | 2028-03-07 |  |  |  |  |  |  |  |  |  |  |  |  |  |  |  |  |  |  |  |  |  |  |  |  |  |  |  |  |  |  |  |
| CN-1480 |  | Guard Houses - Civil, Finishes & Services | 30d | 2027-12-04 | 2028-01-06 | CN-1440 | 275d | 0d | SAR-6D Construction (Fri off, public holidays off) | PERFORMANCE - Progress Value (SAR, planned earned value) [756720 SAR]; CASH FLOW - Invoiced Cash (SAR, net of advance recovery) [681048 SAR]; Site Engineer / Supervisor [240 h]; Foreman [240 h]; General Labourer [1680 h]; Wheel Loader / Backhoe [240 h] | 1,437,768.47 | Phase 1 | Phase 1 (Billing) | 6.3 | Construction | N/A | Contractor | Road Works | 6.3 External Works | Civil & Earthworks | N/A | N/A | N/A | Construction | Monthly progress | Float > 90 d | Other | None | Site & External Zone | Small (<15) | 2027-12 | 2028-01 | 2027-Q4 | Not TGA process | Baseline | Not applicable |
| CN-1450 |  | Sub-base & Base Course - Internal Roads & Car Park Areas | 20d | 2028-01-02 | 2028-01-24 | PC-0590, CN-1100, CN-1540 | 185d | 0d | SAR-6D Construction (Fri off, public holidays off) | PERFORMANCE - Progress Value (SAR, planned earned value) [504480 SAR]; CASH FLOW - Invoiced Cash (SAR, net of advance recovery) [454032 SAR]; Site Engineer / Supervisor [160 h]; Foreman [320 h]; Paving & Road Crew [2560 h]; Plant Operator / Driver [1120 h]; General Labourer [1120 h]; Surveyor / Setting-out Crew [160 h]; Motor Grader [160 h]; Vibratory Roller / Compactor [320 h]; Asphalt Paver [160 h]; Dump Truck / Tipper [800 h]; Water Tanker [160 h]; Bitumen Sprayer / Road Marking Machine [160 h] | 958,512.32 | Phase 1 | Phase 1 (Billing) | 6.3 | Construction | N/A | Contractor | Road Works | 6.3 External Works | Roads & Paving | N/A | N/A | N/A | Construction | Monthly progress | Float > 90 d | Other | None | Site & External Zone | Medium (15-40) | 2028-01 | 2028-01 | 2028-Q1 | Not TGA process | Baseline | Not applicable |
| CN-1460 |  | Prime Coat & Asphalt Wearing Course | 18d | 2028-01-25 | 2028-02-14 | CN-1450 | 242d | 0d | SAR-6D Construction (Fri off, public holidays off) | PERFORMANCE - Progress Value (SAR, planned earned value) [454032 SAR]; CASH FLOW - Invoiced Cash (SAR, net of advance recovery) [408629 SAR]; Site Engineer / Supervisor [144 h]; Foreman [288 h]; Paving & Road Crew [2304 h]; Plant Operator / Driver [1008 h]; General Labourer [1008 h]; Surveyor / Setting-out Crew [144 h]; Motor Grader [144 h]; Vibratory Roller / Compactor [288 h]; Asphalt Paver [144 h]; Dump Truck / Tipper [720 h]; Water Tanker [144 h]; Bitumen Sprayer / Road Marking Machine [144 h] | 862,661.09 | Phase 1 | Phase 1 (Billing) | 6.3 | Construction | N/A | Contractor | Road Works | 6.3 External Works | Roads & Paving | N/A | N/A | N/A | Construction | Monthly progress | Float > 90 d | Other | Ramadan productivity | Site & External Zone | Medium (15-40) | 2028-01 | 2028-02 | 2028-Q1 | Not TGA process | Baseline | Not applicable |
| CN-1470 |  | Kerbs, Interlock Footpaths & Bollards | 30d | 2028-01-25 | 2028-03-07 | CN-1450 | 185d | 0d | SAR-6D Construction (Fri off, public holidays off) | PERFORMANCE - Progress Value (SAR, planned earned value) [756720 SAR]; CASH FLOW - Invoiced Cash (SAR, net of advance recovery) [681048 SAR]; Site Engineer / Supervisor [240 h]; Foreman [480 h]; Paving & Road Crew [3840 h]; Plant Operator / Driver [1680 h]; General Labourer [1680 h]; Surveyor / Setting-out Crew [240 h]; Motor Grader [240 h]; Vibratory Roller / Compactor [480 h]; Asphalt Paver [240 h]; Dump Truck / Tipper [1200 h]; Water Tanker [240 h]; Bitumen Sprayer / Road Marking Machine [240 h] | 1,437,768.47 | Phase 1 | Phase 1 (Billing) | 6.3 | Construction | N/A | Contractor | Road Works | 6.3 External Works | Roads & Paving | N/A | N/A | N/A | Construction | Monthly progress | Float > 90 d | Other | Ramadan productivity | Site & External Zone | Medium (15-40) | 2028-01 | 2028-03 | 2028-Q1 | Not TGA process | Baseline | Not applicable |
|  | 03 | **Markings & Signage** |  | 2028-03-08 | 2028-03-21 |  |  |  |  |  |  |  |  |  |  |  |  |  |  |  |  |  |  |  |  |  |  |  |  |  |  |  |  |  |  |  |
| CN-1490 |  | Road Markings, Traffic Signs, Speed Breakers & Handicap Ramps | 12d | 2028-03-08 | 2028-03-21 | CN-1470 | 218d | 0d | SAR-6D Construction (Fri off, public holidays off) | PERFORMANCE - Progress Value (SAR, planned earned value) [302688 SAR]; CASH FLOW - Invoiced Cash (SAR, net of advance recovery) [272419 SAR]; Site Engineer / Supervisor [96 h]; Foreman [192 h]; Paving & Road Crew [1536 h]; Plant Operator / Driver [672 h]; General Labourer [672 h]; Surveyor / Setting-out Crew [96 h]; Motor Grader [96 h]; Vibratory Roller / Compactor [192 h]; Asphalt Paver [96 h]; Dump Truck / Tipper [480 h]; Water Tanker [96 h]; Bitumen Sprayer / Road Marking Machine [96 h] | 575,107.39 | Phase 1 | Phase 1 (Billing) | 6.3 | Construction | N/A | Contractor | Road Works | 6.3 External Works | Roads & Paving | N/A | N/A | N/A | Construction | Monthly progress | Float > 90 d | Other | None | Site & External Zone | Medium (15-40) | 2028-03 | 2028-03 | 2028-Q1 | Not TGA process | Baseline | Not applicable |
|  | 04 | **Electrical & Lighting** |  | 2027-12-04 | 2028-03-21 |  |  |  |  |  |  |  |  |  |  |  |  |  |  |  |  |  |  |  |  |  |  |  |  |  |  |  |  |  |  |  |
| CN-1500 |  | Light Pole Foundations, Ducts & Cabling | 20d | 2027-12-04 | 2027-12-26 | CN-1440 | 285d | 0d | SAR-6D Construction (Fri off, public holidays off) | PERFORMANCE - Progress Value (SAR, planned earned value) [504480 SAR]; CASH FLOW - Invoiced Cash (SAR, net of advance recovery) [454032 SAR]; Site Engineer / Supervisor [160 h]; Foreman [320 h]; Carpenter (Formwork) [1440 h]; Steel Fixer [1440 h]; Concrete / Mason Gang [2240 h]; General Labourer [1120 h]; Surveyor / Setting-out Crew [160 h]; Concrete Pump [160 h]; Transit Mixer [640 h]; Mobile Crane (50-100 t) [160 h]; Scissor Lift / Scaffolding Set [160 h] | 958,512.32 | Phase 1 | Phase 1 (Billing) | 6.3 | Construction | N/A | Contractor | Road Works | 6.3 External Works | Structure (RC / Stee | N/A | N/A | N/A | Construction | Monthly progress | Float > 90 d | Other | None | Site & External Zone | Large (>40) | 2027-12 | 2027-12 | 2027-Q4 | Not TGA process | Baseline | Not applicable |
| CN-1510 |  | Pole Erection, Luminaires & Energization | 12d | 2028-03-08 | 2028-03-21 | CN-1470 | 218d | 0d | SAR-6D Construction (Fri off, public holidays off) | PERFORMANCE - Progress Value (SAR, planned earned value) [302688 SAR]; CASH FLOW - Invoiced Cash (SAR, net of advance recovery) [272419 SAR]; Site Engineer / Supervisor [96 h]; Foreman [96 h]; Electrician / Cable Technician [1152 h]; General Labourer [672 h]; Scissor Lift / Scaffolding Set [96 h]; Cable Drum Trailer / Pulling Winch [96 h] | 575,107.39 | Phase 1 | Phase 1 (Billing) | 6.3 | Construction | N/A | Contractor | Road Works | 6.3 External Works | MEP - Electrical | N/A | N/A | N/A | Construction | Monthly progress | Float > 90 d | Other | None | Site & External Zone | Medium (15-40) | 2028-03 | 2028-03 | 2028-Q1 | Not TGA process | Baseline | Not applicable |
|  | 05 | **Irrigation & Planting** |  | 2028-03-08 | 2028-04-29 |  |  |  |  |  |  |  |  |  |  |  |  |  |  |  |  |  |  |  |  |  |  |  |  |  |  |  |  |  |  |  |
| CN-1520 |  | Irrigation Network - Landscape Areas | 15d | 2028-03-08 | 2028-03-25 | CN-1470 | 185d | 0d | SAR-6D Construction (Fri off, public holidays off) | PERFORMANCE - Progress Value (SAR, planned earned value) [378360 SAR]; CASH FLOW - Invoiced Cash (SAR, net of advance recovery) [340524 SAR]; Site Engineer / Supervisor [120 h]; Foreman [240 h]; Plumber / Pipe Fitter [1080 h]; General Labourer [1680 h]; Plant Operator / Driver [600 h]; Surveyor / Setting-out Crew [120 h]; Excavator [240 h]; Dump Truck / Tipper [240 h]; Vibratory Roller / Compactor [120 h]; Mobile Crane (50-100 t) [120 h] | 718,884.23 | Phase 1 | Phase 1 (Billing) | 6.3 | Construction | N/A | Contractor | Road Works | 6.3 External Works | Utilities & Drainage | N/A | N/A | N/A | Construction | Monthly progress | Float > 90 d | Other | None | Site & External Zone | Medium (15-40) | 2028-03 | 2028-03 | 2028-Q1 | Not TGA process | Baseline | Not applicable |
| CN-1530 |  | Hard & Soft Landscaping - Trees, Shrubs, Groundcover & Lawn | 30d | 2028-03-26 | 2028-04-29 | CN-1520 | 185d | 0d | SAR-6D Construction (Fri off, public holidays off) | PERFORMANCE - Progress Value (SAR, planned earned value) [756720 SAR]; CASH FLOW - Invoiced Cash (SAR, net of advance recovery) [681048 SAR]; Landscape Gardener [3360 h]; General Labourer [2880 h]; Foreman [240 h]; Water Tanker [240 h]; Dump Truck / Tipper [240 h]; Wheel Loader / Backhoe [240 h] | 1,437,768.47 | Phase 1 | Phase 1 (Billing) | 6.3 | Construction | N/A | Contractor | Road Works | 6.3 External Works | Landscape | N/A | N/A | N/A | Construction | Monthly progress | Float > 90 d | Other | None | Site & External Zone | Medium (15-40) | 2028-03 | 2028-04 | 2028-Q1 | Not TGA process | Baseline | Not applicable |
|  | 06 | **Stormwater Drainage** |  | 2027-12-04 | 2028-01-01 |  |  |  |  |  |  |  |  |  |  |  |  |  |  |  |  |  |  |  |  |  |  |  |  |  |  |  |  |  |  |  |
| CN-1540 |  | Surface Drainage - Channels, Catch Basins & Connections | 25d | 2027-12-04 | 2028-01-01 | CN-1440 | 185d | 0d | SAR-6D Construction (Fri off, public holidays off) | PERFORMANCE - Progress Value (SAR, planned earned value) [630600 SAR]; CASH FLOW - Invoiced Cash (SAR, net of advance recovery) [567540 SAR]; Site Engineer / Supervisor [200 h]; Foreman [400 h]; Plumber / Pipe Fitter [1800 h]; General Labourer [2800 h]; Plant Operator / Driver [1000 h]; Surveyor / Setting-out Crew [200 h]; Excavator [400 h]; Dump Truck / Tipper [400 h]; Vibratory Roller / Compactor [200 h]; Mobile Crane (50-100 t) [200 h] | 1,198,140.4 | Phase 1 | Phase 1 (Billing) | 6.3 | Construction | N/A | Contractor | Road Works | 6.3 External Works | Utilities & Drainage | N/A | N/A | N/A | Construction | Monthly progress | Float > 90 d | Other | None | Site & External Zone | Medium (15-40) | 2027-12 | 2028-01 | 2027-Q4 | Not TGA process | Baseline | Not applicable |
|  | 05 | **Railway Systems** |  | 2027-10-23 | 2028-10-21 |  |  |  |  |  |  |  |  |  |  |  |  |  |  |  |  |  |  |  |  |  |  |  |  |  |  |  |  |  |  |  |
|  | 01 | **Signalling and Telecommunication** |  | 2027-11-06 | 2028-06-21 |  |  |  |  |  |  |  |  |  |  |  |  |  |  |  |  |  |  |  |  |  |  |  |  |  |  |  |  |  |  |  |
|  | 01 | **Duct Banks** |  | 2027-11-06 | 2027-12-09 |  |  |  |  |  |  |  |  |  |  |  |  |  |  |  |  |  |  |  |  |  |  |  |  |  |  |  |  |  |  |  |
| CN-1550 |  | Duct Banks Construction & Handholes | 30d | 2027-11-06 | 2027-12-09 | MS-0090 FS+28d, PR-0150 | 185d | 0d | SAR-6D Construction (Fri off, public holidays off) | PERFORMANCE - Progress Value (SAR, planned earned value) [1431797 SAR]; CASH FLOW - Invoiced Cash (SAR, net of advance recovery) [1288617 SAR]; Site Engineer / Supervisor [240 h]; Signalling & Telecom Technician / Fibre Splicer [3120 h]; Electrician / Cable Technician [1200 h]; General Labourer [2400 h]; Foreman [240 h]; Cable Drum Trailer / Pulling Winch [240 h]; Fibre Splicing & OTDR Test Kit [240 h]; Hi-rail Truck / Locomotive & Wagons [240 h]; Mobile Crane (50-100 t) [240 h] | 2,720,414.07 | Phase 1 | Phase 1 (Billing) | 6.2 | Construction | N/A | Contractor | Railway Systems | 6.2 Signalling & Tel | Signalling & Telecom | N/A | N/A | N/A | Construction | Monthly progress | Float > 90 d | Other | None | Track Zone | Medium (15-40) | 2027-11 | 2027-12 | 2027-Q4 | Not TGA process | Baseline | Not applicable |
|  | 02 | **Fibre Optic Cables** |  | 2028-04-06 | 2028-05-11 |  |  |  |  |  |  |  |  |  |  |  |  |  |  |  |  |  |  |  |  |  |  |  |  |  |  |  |  |  |  |  |
| CN-1560 |  | Fibre Optic Cable Supply, Laying, Splicing & Testing | 25d | 2028-04-06 | 2028-05-11 | PC-0650, CN-1550 | 91d | 0d | SAR-6D Construction (Fri off, public holidays off) | PERFORMANCE - Progress Value (SAR, planned earned value) [1193164 SAR]; CASH FLOW - Invoiced Cash (SAR, net of advance recovery) [1073848 SAR]; Site Engineer / Supervisor [200 h]; Signalling & Telecom Technician / Fibre Splicer [2600 h]; Electrician / Cable Technician [1000 h]; General Labourer [2000 h]; Foreman [200 h]; Cable Drum Trailer / Pulling Winch [200 h]; Fibre Splicing & OTDR Test Kit [200 h]; Hi-rail Truck / Locomotive & Wagons [200 h]; Mobile Crane (50-100 t) [200 h] | 2,267,011.71 | Phase 1 | Phase 1 (Billing) | 6.2 | Construction | N/A | Contractor | Railway Systems | 6.2 Signalling & Tel | Signalling & Telecom | N/A | N/A | N/A | Construction | Monthly progress | Float > 90 d | Other | None | Track Zone | Medium (15-40) | 2028-04 | 2028-05 | 2028-Q2 | Not TGA process | Baseline | Not applicable |
|  | 03 | **Patch Panels** |  | 2028-05-13 | 2028-05-21 |  |  |  |  |  |  |  |  |  |  |  |  |  |  |  |  |  |  |  |  |  |  |  |  |  |  |  |  |  |  |  |
| CN-1570 |  | Patch Panels Installation & Termination | 8d | 2028-05-13 | 2028-05-21 | CN-1560 | 91d | 0d | SAR-6D Construction (Fri off, public holidays off) | PERFORMANCE - Progress Value (SAR, planned earned value) [381812 SAR]; CASH FLOW - Invoiced Cash (SAR, net of advance recovery) [343631 SAR]; Site Engineer / Supervisor [64 h]; Signalling & Telecom Technician / Fibre Splicer [832 h]; Electrician / Cable Technician [320 h]; General Labourer [640 h]; Foreman [64 h]; Cable Drum Trailer / Pulling Winch [64 h]; Fibre Splicing & OTDR Test Kit [64 h]; Hi-rail Truck / Locomotive & Wagons [64 h]; Mobile Crane (50-100 t) [64 h] | 725,443.75 | Phase 1 | Phase 1 (Billing) | 6.2 | Construction | N/A | Contractor | Railway Systems | 6.2 Signalling & Tel | Signalling & Telecom | N/A | N/A | N/A | Construction | Monthly progress | Float > 90 d | Other | None | Track Zone | Medium (15-40) | 2028-05 | 2028-05 | 2028-Q2 | Not TGA process | Baseline | Not applicable |
|  | 04 | **Racks** |  | 2028-04-06 | 2028-04-15 |  |  |  |  |  |  |  |  |  |  |  |  |  |  |  |  |  |  |  |  |  |  |  |  |  |  |  |  |  |  |  |
| CN-1580 |  | Equipment Racks Installation | 8d | 2028-04-06 | 2028-04-15 | MS-0090 FS+28d, PR-0150, PC-0650 | 143d | 0d | SAR-6D Construction (Fri off, public holidays off) | PERFORMANCE - Progress Value (SAR, planned earned value) [381812 SAR]; CASH FLOW - Invoiced Cash (SAR, net of advance recovery) [343631 SAR]; Site Engineer / Supervisor [64 h]; Signalling & Telecom Technician / Fibre Splicer [832 h]; Electrician / Cable Technician [320 h]; General Labourer [640 h]; Foreman [64 h]; Cable Drum Trailer / Pulling Winch [64 h]; Fibre Splicing & OTDR Test Kit [64 h]; Hi-rail Truck / Locomotive & Wagons [64 h]; Mobile Crane (50-100 t) [64 h] | 725,443.75 | Phase 1 | Phase 1 (Billing) | 6.2 | Construction | N/A | Contractor | Railway Systems | 6.2 Signalling & Tel | Signalling & Telecom | N/A | N/A | N/A | Construction | Monthly progress | Float > 90 d | Other | None | Track Zone | Medium (15-40) | 2028-04 | 2028-04 | 2028-Q2 | Not TGA process | Baseline | Not applicable |

| ID | WBS | Activity | Duration | Start | Finish | Predecessors | Total float | Free float | Calendar | Resources | Cost | Phase | Contract Phase | BOQ Ref | Stage | Lead Class | Responsibility | Package Group | Work Package | Discipline | Design Stage | Procurement Step | Milestone Type | Cost Component | Payment Basis | Path Class | Critical Driver | Risk Flag | Work Zone | Crew Size Class | Start Month | Finish Month | Start Quarter | TGA Process | Duration Basis | Submit / Review |
| --- | --- | --- | --- | --- | --- | --- | --- | --- | --- | --- | --- | --- | --- | --- | --- | --- | --- | --- | --- | --- | --- | --- | --- | --- | --- | --- | --- | --- | --- | --- | --- | --- | --- | --- | --- | --- |
|  | 05 | **Junction Boxes** |  | 2028-04-06 | 2028-04-17 |  |  |  |  |  |  |  |  |  |  |  |  |  |  |  |  |  |  |  |  |  |  |  |  |  |  |  |  |  |  |  |
| CN-1590 |  | Junction Boxes Installation | 10d | 2028-04-06 | 2028-04-17 | PC-0650, CN-1550 | 141d | 0d | SAR-6D Construction (Fri off, public holidays off) | PERFORMANCE - Progress Value (SAR, planned earned value) [477266 SAR]; CASH FLOW - Invoiced Cash (SAR, net of advance recovery) [429539 SAR]; Site Engineer / Supervisor [80 h]; Signalling & Telecom Technician / Fibre Splicer [1040 h]; Electrician / Cable Technician [400 h]; General Labourer [800 h]; Foreman [80 h]; Cable Drum Trailer / Pulling Winch [80 h]; Fibre Splicing & OTDR Test Kit [80 h]; Hi-rail Truck / Locomotive & Wagons [80 h]; Mobile Crane (50-100 t) [80 h] | 906,804.68 | Phase 1 | Phase 1 (Billing) | 6.2 | Construction | N/A | Contractor | Railway Systems | 6.2 Signalling & Tel | Signalling & Telecom | N/A | N/A | N/A | Construction | Monthly progress | Float > 90 d | Other | None | Track Zone | Medium (15-40) | 2028-04 | 2028-04 | 2028-Q2 | Not TGA process | Baseline | Not applicable |
|  | 06 | **Active Equipment (Switches, Routers)** |  | 2028-05-22 | 2028-06-04 |  |  |  |  |  |  |  |  |  |  |  |  |  |  |  |  |  |  |  |  |  |  |  |  |  |  |  |  |  |  |  |
| CN-1600 |  | Active Equipment (Switches, Routers) Installation & Configuration | 12d | 2028-05-22 | 2028-06-04 | CN-1570 | 91d | 0d | SAR-6D Construction (Fri off, public holidays off) | PERFORMANCE - Progress Value (SAR, planned earned value) [572719 SAR]; CASH FLOW - Invoiced Cash (SAR, net of advance recovery) [515447 SAR]; Site Engineer / Supervisor [96 h]; Signalling & Telecom Technician / Fibre Splicer [1248 h]; Electrician / Cable Technician [480 h]; General Labourer [960 h]; Foreman [96 h]; Cable Drum Trailer / Pulling Winch [96 h]; Fibre Splicing & OTDR Test Kit [96 h]; Hi-rail Truck / Locomotive & Wagons [96 h]; Mobile Crane (50-100 t) [96 h] | 1,088,165.63 | Phase 1 | Phase 1 (Billing) | 6.2 | Construction | N/A | Contractor | Railway Systems | 6.2 Signalling & Tel | Signalling & Telecom | N/A | N/A | N/A | Construction | Monthly progress | Float > 90 d | Other | None | Track Zone | Medium (15-40) | 2028-05 | 2028-06 | 2028-Q2 | Not TGA process | Baseline | Not applicable |
|  | 07 | **Signalling Controllers** |  | 2028-05-13 | 2028-06-04 |  |  |  |  |  |  |  |  |  |  |  |  |  |  |  |  |  |  |  |  |  |  |  |  |  |  |  |  |  |  |  |
| CN-1610 |  | Signalling Controllers Installation & Configuration | 20d | 2028-05-13 | 2028-06-04 | PC-0650, CN-1560 | 91d | 0d | SAR-6D Construction (Fri off, public holidays off) | PERFORMANCE - Progress Value (SAR, planned earned value) [954531 SAR]; CASH FLOW - Invoiced Cash (SAR, net of advance recovery) [859078 SAR]; Site Engineer / Supervisor [160 h]; Signalling & Telecom Technician / Fibre Splicer [2080 h]; Electrician / Cable Technician [800 h]; General Labourer [1600 h]; Foreman [160 h]; Cable Drum Trailer / Pulling Winch [160 h]; Fibre Splicing & OTDR Test Kit [160 h]; Hi-rail Truck / Locomotive & Wagons [160 h]; Mobile Crane (50-100 t) [160 h] | 1,813,609.37 | Phase 1 | Phase 1 (Billing) | 6.2 | Construction | N/A | Contractor | Railway Systems | 6.2 Signalling & Tel | Signalling & Telecom | N/A | N/A | N/A | Construction | Monthly progress | Float > 90 d | Other | None | Track Zone | Medium (15-40) | 2028-05 | 2028-06 | 2028-Q2 | Not TGA process | Baseline | Not applicable |
|  | 08 | **Integration with ICT** |  | 2028-06-05 | 2028-06-21 |  |  |  |  |  |  |  |  |  |  |  |  |  |  |  |  |  |  |  |  |  |  |  |  |  |  |  |  |  |  |  |
| CN-1620 |  | Integration with ICT Systems | 15d | 2028-06-05 | 2028-06-21 | CN-1600, CN-1610 | 91d | 0d | SAR-6D Construction (Fri off, public holidays off) | PERFORMANCE - Progress Value (SAR, planned earned value) [715898 SAR]; CASH FLOW - Invoiced Cash (SAR, net of advance recovery) [644309 SAR]; Site Engineer / Supervisor [120 h]; Signalling & Telecom Technician / Fibre Splicer [1560 h]; Electrician / Cable Technician [600 h]; General Labourer [1200 h]; Foreman [120 h]; Cable Drum Trailer / Pulling Winch [120 h]; Fibre Splicing & OTDR Test Kit [120 h]; Hi-rail Truck / Locomotive & Wagons [120 h]; Mobile Crane (50-100 t) [120 h] | 1,360,207.04 | Phase 1 | Phase 1 (Billing) | 6.2 | Construction | N/A | Contractor | Railway Systems | 6.2 Signalling & Tel | Signalling & Telecom | N/A | N/A | N/A | Construction | Monthly progress | Float > 90 d | Other | None | Track Zone | Medium (15-40) | 2028-06 | 2028-06 | 2028-Q2 | Not TGA process | Baseline | Not applicable |
|  | 02 | **Railway Track Works (BOQ 2,500 m loop line)** |  | 2027-10-23 | 2028-10-21 |  |  |  |  |  |  |  |  |  |  |  |  |  |  |  |  |  |  |  |  |  |  |  |  |  |  |  |  |  |  |  |
|  | 01 | **Earthworks (Cut & Fill)** |  | 2027-10-23 | 2027-11-08 |  |  |  |  |  |  |  |  |  |  |  |  |  |  |  |  |  |  |  |  |  |  |  |  |  |  |  |  |  |  |  |
| CN-1630 |  | Earthworks (Cut & Fill) - Loop Line Formation | 15d | 2027-10-23 | 2027-11-08 | MS-0090 FS+14d, PR-0150 | 229d | 0d | SAR-6D Construction (Fri off, public holidays off) | PERFORMANCE - Progress Value (SAR, planned earned value) [1754489 SAR]; CASH FLOW - Invoiced Cash (SAR, net of advance recovery) [1579040 SAR]; Foreman [120 h]; Surveyor / Setting-out Crew [120 h]; General Labourer [1320 h]; Plant Operator / Driver [1320 h]; Site Engineer / Supervisor [120 h]; Excavator [360 h]; Wheel Loader / Backhoe [120 h]; Dump Truck / Tipper [600 h]; Vibratory Roller / Compactor [120 h]; Water Tanker [120 h] | 3,333,528.42 | Phase 2 | Phase 2 (Billing) | 7.2 | Construction | N/A | Contractor | Railway Systems | 7.2 Railway Track | Civil & Earthworks | N/A | N/A | N/A | Construction | Monthly progress | Float > 90 d | Railway convergence | None | Track Zone | Medium (15-40) | 2027-10 | 2027-11 | 2027-Q4 | Not TGA process | Baseline | Not applicable |
|  | 02 | **Track Drainage** |  | 2027-10-23 | 2027-11-04 |  |  |  |  |  |  |  |  |  |  |  |  |  |  |  |  |  |  |  |  |  |  |  |  |  |  |  |  |  |  |  |
| CN-1640 |  | Track Drainage | 12d | 2027-10-23 | 2027-11-04 | MS-0090 FS+14d, PR-0150 | 232d | 0d | SAR-6D Construction (Fri off, public holidays off) | PERFORMANCE - Progress Value (SAR, planned earned value) [1403591 SAR]; CASH FLOW - Invoiced Cash (SAR, net of advance recovery) [1263232 SAR]; Site Engineer / Supervisor [288 h]; Foreman [384 h]; Track Gang (Track Layers & Rail Welders) [3648 h]; General Labourer [1824 h]; Plant Operator / Driver [1056 h]; Surveyor / Setting-out Crew [288 h]; Track Laying Machine / Rail Crane [96 h]; Ballast Regulator & Tamping Machine [96 h]; Hi-rail Truck / Locomotive & Wagons [288 h]; Dump Truck / Tipper [480 h]; Welding / Generator Set [288 h]; Mobile Crane (50-100 t) [96 h] | 2,666,822.73 | Phase 2 | Phase 2 (Billing) | 7.2 | Construction | N/A | Contractor | Railway Systems | 7.2 Railway Track | Railway Track | N/A | N/A | N/A | Construction | Monthly progress | Float > 90 d | Railway convergence | None | Track Zone | Large (>40) | 2027-10 | 2027-11 | 2027-Q4 | Not TGA process | Baseline | Not applicable |
|  | 03 | **Materials Receiving & Handling** |  | 2028-08-10 | 2028-08-16 |  |  |  |  |  |  |  |  |  |  |  |  |  |  |  |  |  |  |  |  |  |  |  |  |  |  |  |  |  |  |  |
| CN-1650 |  | Materials Receiving, Inspection & Handling (Rails, Sleepers, Ballast, Fastenings) | 6d | 2028-08-10 | 2028-08-16 | MS-0090 FS+14d, PR-0150, PC-0670 | 0d |  | SAR-6D Construction (Fri off, public holidays off) | PERFORMANCE - Progress Value (SAR, planned earned value) [701795 SAR]; CASH FLOW - Invoiced Cash (SAR, net of advance recovery) [631616 SAR]; Site Engineer / Supervisor [144 h]; Foreman [192 h]; Track Gang (Track Layers & Rail Welders) [1824 h]; General Labourer [912 h]; Plant Operator / Driver [528 h]; Surveyor / Setting-out Crew [144 h]; Track Laying Machine / Rail Crane [48 h]; Ballast Regulator & Tamping Machine [48 h]; Hi-rail Truck / Locomotive & Wagons [144 h]; Dump Truck / Tipper [240 h]; Welding / Generator Set [144 h]; Mobile Crane (50-100 t) [48 h] | 1,333,411.36 | Phase 2 | Phase 2 (Billing) | 7.2 | Construction | N/A | Contractor | Railway Systems | 7.2 Railway Track | Railway Track | N/A | N/A | N/A | Construction | Monthly progress | Critical (0 d) | Longest path | None | Track Zone | Large (>40) | 2028-08 | 2028-08 | 2028-Q3 | Not TGA process | Baseline | Not applicable |
|  | 04 | **Track Installation** |  | 2028-08-17 | 2028-09-27 |  |  |  |  |  |  |  |  |  |  |  |  |  |  |  |  |  |  |  |  |  |  |  |  |  |  |  |  |  |  |  |
| CN-1660 |  | Track Installation - Ballast, Sleepers, Rail, Welding & Tamping | 35d | 2028-08-17 | 2028-09-27 | CN-1630, CN-1640, CN-1650 | 0d |  | SAR-6D Construction (Fri off, public holidays off) | PERFORMANCE - Progress Value (SAR, planned earned value) [4093807 SAR]; CASH FLOW - Invoiced Cash (SAR, net of advance recovery) [3684426 SAR]; Site Engineer / Supervisor [840 h]; Foreman [1120 h]; Track Gang (Track Layers & Rail Welders) [10640 h]; General Labourer [5320 h]; Plant Operator / Driver [3080 h]; Surveyor / Setting-out Crew [840 h]; Track Laying Machine / Rail Crane [280 h]; Ballast Regulator & Tamping Machine [280 h]; Hi-rail Truck / Locomotive & Wagons [840 h]; Dump Truck / Tipper [1400 h]; Welding / Generator Set [840 h]; Mobile Crane (50-100 t) [280 h] | 7,778,232.96 | Phase 2 | Phase 2 (Billing) | 7.2 | Construction | N/A | Contractor | Railway Systems | 7.2 Railway Track | Railway Track | N/A | N/A | N/A | Construction | Monthly progress | Critical (0 d) | Longest path | None | Track Zone | Large (>40) | 2028-08 | 2028-09 | 2028-Q3 | Not TGA process | Baseline | Not applicable |
|  | 05 | **Existing Track Realignment & Tie-in** |  | 2028-09-28 | 2028-10-09 |  |  |  |  |  |  |  |  |  |  |  |  |  |  |  |  |  |  |  |  |  |  |  |  |  |  |  |  |  |  |  |
| CN-1670 |  | Existing Track Realignment & Tie-in | 10d | 2028-09-28 | 2028-10-09 | CN-1660, PR-0195 | 0d |  | SAR-6D Construction (Fri off, public holidays off) | PERFORMANCE - Progress Value (SAR, planned earned value) [1169659 SAR]; CASH FLOW - Invoiced Cash (SAR, net of advance recovery) [1052693 SAR]; Site Engineer / Supervisor [240 h]; Foreman [320 h]; Track Gang (Track Layers & Rail Welders) [3040 h]; General Labourer [1520 h]; Plant Operator / Driver [880 h]; Surveyor / Setting-out Crew [240 h]; Track Laying Machine / Rail Crane [80 h]; Ballast Regulator & Tamping Machine [80 h]; Hi-rail Truck / Locomotive & Wagons [240 h]; Dump Truck / Tipper [400 h]; Welding / Generator Set [240 h]; Mobile Crane (50-100 t) [80 h] | 2,222,352.27 | Phase 2 | Phase 2 (Billing) | 7.2 | Construction | N/A | Contractor | Railway Systems | 7.2 Railway Track | Railway Track | N/A | N/A | N/A | Construction | Monthly progress | Critical (0 d) | Longest path | None | Track Zone | Large (>40) | 2028-09 | 2028-10 | 2028-Q3 | Not TGA process | Baseline | Not applicable |
|  | 06 | **Integration Signalling & Telecom Integration** |  | 2028-10-10 | 2028-10-21 |  |  |  |  |  |  |  |  |  |  |  |  |  |  |  |  |  |  |  |  |  |  |  |  |  |  |  |  |  |  |  |
| CN-1680 |  | Signalling & Telecom Integration - Track Side | 10d | 2028-10-10 | 2028-10-21 | CN-1620, CN-1670 | 0d |  | SAR-6D Construction (Fri off, public holidays off) | PERFORMANCE - Progress Value (SAR, planned earned value) [1169659 SAR]; CASH FLOW - Invoiced Cash (SAR, net of advance recovery) [1052693 SAR]; Site Engineer / Supervisor [80 h]; Signalling & Telecom Technician / Fibre Splicer [1120 h]; Electrician / Cable Technician [400 h]; General Labourer [880 h]; Foreman [80 h]; Cable Drum Trailer / Pulling Winch [80 h]; Fibre Splicing & OTDR Test Kit [80 h]; Hi-rail Truck / Locomotive & Wagons [80 h]; Mobile Crane (50-100 t) [80 h] | 2,222,352.27 | Phase 2 | Phase 2 (Billing) | 7.2 | Construction | N/A | Contractor | Railway Systems | 7.2 Railway Track | Signalling & Telecom | N/A | N/A | N/A | Construction | Monthly progress | Critical (0 d) | Longest path | None | Track Zone | Medium (15-40) | 2028-10 | 2028-10 | 2028-Q4 | Not TGA process | Baseline | Not applicable |
|  | 03 | **Railway Turnout Works** |  | 2027-11-06 | 2028-06-13 |  |  |  |  |  |  |  |  |  |  |  |  |  |  |  |  |  |  |  |  |  |  |  |  |  |  |  |  |  |  |  |
|  | 01 | **Earthworks (Cut & Fill)** |  | 2027-11-06 | 2027-11-18 |  |  |  |  |  |  |  |  |  |  |  |  |  |  |  |  |  |  |  |  |  |  |  |  |  |  |  |  |  |  |  |
| CN-1690 |  | Earthworks (Cut & Fill) - Turnout Area | 12d | 2027-11-06 | 2027-11-18 | MS-0090 FS+28d, PR-0150 | 213d | 0d | SAR-6D Construction (Fri off, public holidays off) | PERFORMANCE - Progress Value (SAR, planned earned value) [764223 SAR]; CASH FLOW - Invoiced Cash (SAR, net of advance recovery) [687800 SAR]; Foreman [96 h]; Surveyor / Setting-out Crew [96 h]; General Labourer [864 h]; Plant Operator / Driver [864 h]; Site Engineer / Supervisor [96 h]; Excavator [192 h]; Wheel Loader / Backhoe [96 h]; Dump Truck / Tipper [480 h]; Vibratory Roller / Compactor [96 h]; Water Tanker [96 h] | 1,452,023.26 | Phase 1 | Phase 1 (Billing) | 7.3 | Construction | N/A | Contractor | Railway Systems | 7.3 Railway Turnouts | Civil & Earthworks | N/A | N/A | N/A | Construction | Monthly progress | Float > 90 d | Railway convergence | None | Track Zone | Medium (15-40) | 2027-11 | 2027-11 | 2027-Q4 | Not TGA process | Baseline | Not applicable |

| ID | WBS | Activity | Type | Duration | Start | Finish | Predecessors | Total float | Free float | Calendar | Resources | Cost | Phase | Contract Phase | BOQ Ref | Stage | Lead Class | Responsibility | Package Group | Work Package | Discipline | Design Stage | Procurement Step | Milestone Type | Cost Component | Payment Basis | Path Class | Critical Driver | Risk Flag | Work Zone | Crew Size Class | Start Month | Finish Month | Start Quarter | TGA Process | Duration Basis | Submit / Review |
| --- | --- | --- | --- | --- | --- | --- | --- | --- | --- | --- | --- | --- | --- | --- | --- | --- | --- | --- | --- | --- | --- | --- | --- | --- | --- | --- | --- | --- | --- | --- | --- | --- | --- | --- | --- | --- | --- |
|  | 02 | **Track Drainage** |  |  | 2027-11-06 | 2027-11-14 |  |  |  |  |  |  |  |  |  |  |  |  |  |  |  |  |  |  |  |  |  |  |  |  |  |  |  |  |  |  |  |
| CN-1700 |  | Track Drainage |  | 8d | 2027-11-06 | 2027-11-14 | MS-0090 FS+28d, PR-0150 | 217d | 0d | SAR-6D Construction (Fri off, public holidays off) | PERFORMANCE - Progress Value (SAR, planned earned value) [509482 SAR]; CASH FLOW - Invoiced Cash (SAR, net of advance recovery) [458534 SAR]; Site Engineer / Supervisor [128 h]; Foreman [256 h]; Track Gang (Track Layers & Rail Welders) [2112 h]; General Labourer [1024 h]; Plant Operator / Driver [576 h]; Surveyor / Setting-out Crew [128 h]; Track Laying Machine / Rail Crane [64 h]; Ballast Regulator & Tamping Machine [64 h]; Hi-rail Truck / Locomotive & Wagons [128 h]; Dump Truck / Tipper [320 h]; Welding / Generator Set [128 h]; Mobile Crane (50-100 t) [64 h] | 968,015.51 | Phase 1 | Phase 1 (Billing) | 7.3 | Construction | N/A | Contractor | Railway Systems | 7.3 Railway Turnouts | Railway Track | N/A | N/A | N/A | Construction | Monthly progress | Float > 90 d | Railway convergence | None | Track Zone | Large (>40) | 2027-11 | 2027-11 | 2027-Q4 | Not TGA process | Baseline | Not applicable |
|  | 03 | **Materials Receiving & Handling** |  |  | 2028-04-06 | 2028-04-10 |  |  |  |  |  |  |  |  |  |  |  |  |  |  |  |  |  |  |  |  |  |  |  |  |  |  |  |  |  |  |  |
| CN-1710 |  | Materials Receiving, Inspection & Handling (Turnouts, Sleepers, Ballast) |  | 4d | 2028-04-06 | 2028-04-10 | MS-0090 FS+28d, PR-0150, PC-0690 | 97d | 0d | SAR-6D Construction (Fri off, public holidays off) | PERFORMANCE - Progress Value (SAR, planned earned value) [254741 SAR]; CASH FLOW - Invoiced Cash (SAR, net of advance recovery) [229267 SAR]; Site Engineer / Supervisor [64 h]; Foreman [128 h]; Track Gang (Track Layers & Rail Welders) [1056 h]; General Labourer [512 h]; Plant Operator / Driver [288 h]; Surveyor / Setting-out Crew [64 h]; Track Laying Machine / Rail Crane [32 h]; Ballast Regulator & Tamping Machine [32 h]; Hi-rail Truck / Locomotive & Wagons [64 h]; Dump Truck / Tipper [160 h]; Welding / Generator Set [64 h]; Mobile Crane (50-100 t) [32 h] | 484,007.75 | Phase 1 | Phase 1 (Billing) | 7.3 | Construction | N/A | Contractor | Railway Systems | 7.3 Railway Turnouts | Railway Track | N/A | N/A | N/A | Construction | Monthly progress | Float > 90 d | Railway convergence | None | Track Zone | Large (>40) | 2028-04 | 2028-04 | 2028-Q2 | Not TGA process | Baseline | Not applicable |
|  | 04 | **Track Installation** |  |  | 2028-04-11 | 2028-05-16 |  |  |  |  |  |  |  |  |  |  |  |  |  |  |  |  |  |  |  |  |  |  |  |  |  |  |  |  |  |  |  |
| CN-1720 |  | Turnout & Crossover Installation - Alignment, Welding & Tamping |  | 25d | 2028-04-11 | 2028-05-16 | CN-1690, CN-1700, CN-1710 | 97d | 0d | SAR-6D Construction (Fri off, public holidays off) | PERFORMANCE - Progress Value (SAR, planned earned value) [1592131 SAR]; CASH FLOW - Invoiced Cash (SAR, net of advance recovery) [1432918 SAR]; Site Engineer / Supervisor [400 h]; Foreman [800 h]; Track Gang (Track Layers & Rail Welders) [6600 h]; General Labourer [3200 h]; Plant Operator / Driver [1800 h]; Surveyor / Setting-out Crew [400 h]; Track Laying Machine / Rail Crane [200 h]; Ballast Regulator & Tamping Machine [200 h]; Hi-rail Truck / Locomotive & Wagons [400 h]; Dump Truck / Tipper [1000 h]; Welding / Generator Set [400 h]; Mobile Crane (50-100 t) [200 h] | 3,025,048.46 | Phase 1 | Phase 1 (Billing) | 7.3 | Construction | N/A | Contractor | Railway Systems | 7.3 Railway Turnouts | Railway Track | N/A | N/A | N/A | Construction | Monthly progress | Float > 90 d | Railway convergence | None | Track Zone | Large (>40) | 2028-04 | 2028-05 | 2028-Q2 | Not TGA process | Baseline | Not applicable |
|  | 05 | **Existing Track Realignment & Tie-in** |  |  | 2028-05-23 | 2028-05-31 |  |  |  |  |  |  |  |  |  |  |  |  |  |  |  |  |  |  |  |  |  |  |  |  |  |  |  |  |  |  |  |
| CN-1730 |  | Existing Track Realignment & Tie-in (Possession) |  | 8d | 2028-05-23 | 2028-05-31 | CN-1720, PR-0196 | 97d | 0d | SAR-6D Construction (Fri off, public holidays off) | PERFORMANCE - Progress Value (SAR, planned earned value) [509482 SAR]; CASH FLOW - Invoiced Cash (SAR, net of advance recovery) [458534 SAR]; Site Engineer / Supervisor [128 h]; Foreman [256 h]; Track Gang (Track Layers & Rail Welders) [2112 h]; General Labourer [1024 h]; Plant Operator / Driver [576 h]; Surveyor / Setting-out Crew [128 h]; Track Laying Machine / Rail Crane [64 h]; Ballast Regulator & Tamping Machine [64 h]; Hi-rail Truck / Locomotive & Wagons [128 h]; Dump Truck / Tipper [320 h]; Welding / Generator Set [128 h]; Mobile Crane (50-100 t) [64 h] | 968,015.51 | Phase 1 | Phase 1 (Billing) | 7.3 | Construction | N/A | Contractor | Railway Systems | 7.3 Railway Turnouts | Railway Track | N/A | N/A | N/A | Construction | Monthly progress | Float > 90 d | Railway convergence | None | Track Zone | Large (>40) | 2028-05 | 2028-05 | 2028-Q2 | Not TGA process | Baseline | Not applicable |
|  | 06 | **Integration Signalling & Telecom Integration** |  |  | 2028-06-05 | 2028-06-13 |  |  |  |  |  |  |  |  |  |  |  |  |  |  |  |  |  |  |  |  |  |  |  |  |  |  |  |  |  |  |  |
| CN-1740 |  | Signalling & Telecom Integration |  | 8d | 2028-06-05 | 2028-06-13 | CN-1610, CN-1730 | 94d | 0d | SAR-6D Construction (Fri off, public holidays off) | PERFORMANCE - Progress Value (SAR, planned earned value) [509482 SAR]; CASH FLOW - Invoiced Cash (SAR, net of advance recovery) [458534 SAR]; Site Engineer / Supervisor [64 h]; Signalling & Telecom Technician / Fibre Splicer [768 h]; Electrician / Cable Technician [320 h]; General Labourer [576 h]; Foreman [64 h]; Cable Drum Trailer / Pulling Winch [64 h]; Fibre Splicing & OTDR Test Kit [64 h]; Hi-rail Truck / Locomotive & Wagons [64 h]; Mobile Crane (50-100 t) [64 h] | 968,015.51 | Phase 1 | Phase 1 (Billing) | 7.3 | Construction | N/A | Contractor | Railway Systems | 7.3 Railway Turnouts | Signalling & Telecom | N/A | N/A | N/A | Construction | Monthly progress | Float > 90 d | Railway convergence | None | Track Zone | Medium (15-40) | 2028-06 | 2028-06 | 2028-Q2 | Not TGA process | Baseline | Not applicable |
|  | 06 | **Testing & Commissioning and Authorities Permanent Connection and Handing over** |  |  | 2027-12-21 | 2028-12-09 |  |  |  |  |  |  |  |  |  |  |  |  |  |  |  |  |  |  |  |  |  |  |  |  |  |  |  |  |  |  |  |
|  | 01 | **Main Building** |  |  | 2028-04-01 | 2028-07-01 |  |  |  |  |  |  |  |  |  |  |  |  |  |  |  |  |  |  |  |  |  |  |  |  |  |  |  |  |  |  |  |
|  | 01 | **Main Building (GEA 1,100 m², single storey)** |  |  | 2028-05-13 | 2028-07-01 |  |  |  |  |  |  |  |  |  |  |  |  |  |  |  |  |  |  |  |  |  |  |  |  |  |  |  |  |  |  |  |
| TC-0010 |  | Testing & Commissioning - MEP, Fire & Life Safety Systems |  | 20d | 2028-05-13 | 2028-06-04 | CN-0010, CN-0030, CN-0050, CN-0110, CN-0130, CN-0160, CN-0180, CN-0210, CN-0220, CN-0230, CN-0240, CN-0250, CN-0260, CN-0310, CN-0320, CN-0330, CN-0370, TC-0100 | 122d | 0d | SAR-6D Construction (Fri off, public holidays off) | PERFORMANCE - Progress Value (SAR, planned earned value) [47250 SAR]; CASH FLOW - Invoiced Cash (SAR, net of advance recovery) [42525 SAR]; Site Engineer / Supervisor [160 h]; Commissioning / Test Engineer [800 h]; Electrician / Cable Technician [640 h]; General Labourer [320 h]; Testing & Commissioning Instruments [160 h] | 89,775 | Phase 1 | Phase 1 (Billing) | 3.1 | Testing & Commission | N/A | Contractor | Main Building | 3.1 Main Building | Testing & Commission | N/A | N/A | N/A | Testing & Commiss. | Monthly progress | Float > 90 d | Other | None | Station Building Zon | Small (<15) | 2028-05 | 2028-06 | 2028-Q2 | Not TGA process | Baseline | Not applicable |
| TC-0020 |  | Civil Defense and Authority Inspections - Main Building |  | 10d | 2028-06-08 | 2028-06-19 | TG-0840 | 121d | 0d | SAR-6D Construction (Fri off, public holidays off) | PERFORMANCE - Progress Value (SAR, planned earned value) [23625 SAR]; CASH FLOW - Invoiced Cash (SAR, net of advance recovery) [21262.5 SAR]; Site Engineer / Supervisor [80 h]; Commissioning / Test Engineer [400 h]; Electrician / Cable Technician [320 h]; General Labourer [160 h]; Testing & Commissioning Instruments [80 h] | 44,887.5 | Phase 1 | Phase 1 (Billing) | 3.1 | Testing & Commission | N/A | Contractor | Main Building | 3.1 Main Building | Testing & Commission | Studies & Approvals | N/A | N/A | Testing & Commiss. | Monthly progress | Float > 90 d | Design & approvals g | Authority dependency | Station Building Zon | Small (<15) | 2028-06 | 2028-06 | 2028-Q2 | Verification and Readiness | Baseline | Not applicable |
| TC-0030 |  | Snagging & Punch-list Closure |  | 10d | 2028-06-20 | 2028-07-01 | TC-0020 | 121d | 0d | SAR-6D Construction (Fri off, public holidays off) | PERFORMANCE - Progress Value (SAR, planned earned value) [46125 SAR]; CASH FLOW - Invoiced Cash (SAR, net of advance recovery) [41512.5 SAR]; Site Engineer / Supervisor [80 h]; Commissioning / Test Engineer [400 h]; Electrician / Cable Technician [320 h]; General Labourer [160 h]; Testing & Commissioning Instruments [80 h] | 87,637.5 | Phase 1 | Phase 1 (Billing) | 3.1 | Testing & Commission | N/A | Contractor | Main Building | 3.1 Main Building | Testing & Commission | N/A | N/A | N/A | Testing & Commiss. | Monthly progress | Float > 90 d | Other | None | Station Building Zon | Small (<15) | 2028-06 | 2028-07 | 2028-Q2 | Not TGA process | Baseline | Not applicable |
| TC-0040 |  | Handing Over - Main Building | milestone | 0d | 2028-07-01 | 2028-07-01 | TC-0030 | 147d | 0d | SAR-6D Construction (Fri off, public holidays off) |  |  | Phase 1 | Phase 1 (Billing) | 3.1 | Testing & Commission | N/A | Contractor | Main Building | 3.1 Main Building | Testing & Commission | N/A | N/A | Handover | No cost | None | Float > 90 d | Other | None | Station Building Zon | No site crew | 2028-07 | 2028-07 | 2028-Q3 | Not TGA process | Baseline | Not applicable |
|  | 02 | **IT Equipment** |  |  | 2028-05-13 | 2028-06-07 |  |  |  |  |  |  |  |  |  |  |  |  |  |  |  |  |  |  |  |  |  |  |  |  |  |  |  |  |  |  |  |
| TC-0050 |  | IT & Low-Voltage Systems Testing & Commissioning (FAT / SAT) |  | 15d | 2028-05-13 | 2028-05-29 | CN-0390, CN-0410, TC-0100 | 167d | 0d | SAR-6D Construction (Fri off, public holidays off) | PERFORMANCE - Progress Value (SAR, planned earned value) [23478.3 SAR]; CASH FLOW - Invoiced Cash (SAR, net of advance recovery) [21130.4 SAR]; Site Engineer / Supervisor [120 h]; Commissioning / Test Engineer [360 h]; Electrician / Cable Technician [240 h]; General Labourer [120 h]; Testing & Commissioning Instruments [120 h] | 44,608.69 | Phase 1 | Phase 1 (Billing) | 3.2 | Testing & Commission | N/A | Contractor | Main Building | 3.2 IT Equipment | Testing & Commission | N/A | N/A | N/A | Testing & Commiss. | Monthly progress | Float > 90 d | Other | None | Station Building Zon | Small (<15) | 2028-05 | 2028-05 | 2028-Q2 | Not TGA process | Baseline | Not applicable |
| TC-0060 |  | Operator Training, As-Built & O&M Manuals |  | 8d | 2028-05-30 | 2028-06-07 | TC-0050 | 167d | 0d | SAR-6D Construction (Fri off, public holidays off) | PERFORMANCE - Progress Value (SAR, planned earned value) [16521.7 SAR]; CASH FLOW - Invoiced Cash (SAR, net of advance recovery) [14869.6 SAR]; Site Engineer / Supervisor [64 h]; Commissioning / Test Engineer [192 h]; Electrician / Cable Technician [128 h]; General Labourer [64 h]; Testing & Commissioning Instruments [64 h] | 31,391.31 | Phase 1 | Phase 1 (Billing) | 3.2 | Testing & Commission | N/A | Contractor | Main Building | 3.2 IT Equipment | Testing & Commission | N/A | N/A | N/A | Testing & Commiss. | Monthly progress | Float > 90 d | Other | None | Station Building Zon | Small (<15) | 2028-05 | 2028-06 | 2028-Q2 | Not TGA process | Baseline | Not applicable |
| TC-0070 |  | Handing Over - IT Equipment | milestone | 0d | 2028-06-07 | 2028-06-07 | TC-0060 | 167d | 0d | SAR-6D Construction (Fri off, public holidays off) |  |  | Phase 1 | Phase 1 (Billing) | 3.2 | Testing & Commission | N/A | Contractor | Main Building | 3.2 IT Equipment | Testing & Commission | N/A | N/A | Handover | No cost | None | Float > 90 d | Other | None | Station Building Zon | No site crew | 2028-06 | 2028-06 | 2028-Q2 | Not TGA process | Baseline | Not applicable |
|  | 03 | **Furniture Works (FF&E)** |  |  | 2028-04-01 | 2028-04-06 |  |  |  |  |  |  |  |  |  |  |  |  |  |  |  |  |  |  |  |  |  |  |  |  |  |  |  |  |  |  |  |
| TC-0080 |  | Final Inspection, Snagging & Handing Over Check - FF&E |  | 6d | 2028-04-01 | 2028-04-06 | CN-0420 | 214d | 0d | SAR-6D Construction (Fri off, public holidays off) | PERFORMANCE - Progress Value (SAR, planned earned value) [53200 SAR]; CASH FLOW - Invoiced Cash (SAR, net of advance recovery) [47880 SAR]; Site Engineer / Supervisor [48 h]; Commissioning / Test Engineer [240 h]; Electrician / Cable Technician [144 h]; General Labourer [96 h]; Testing & Commissioning Instruments [48 h] | 101,080 | Phase 2 | Phase 2 (Billing) | 3.3 | Testing & Commission | N/A | Contractor | Main Building | 3.3 FF&E | Testing & Commission | N/A | N/A | N/A | Testing & Commiss. | Monthly progress | Float > 90 d | Other | None | Station Building Zon | Small (<15) | 2028-04 | 2028-04 | 2028-Q2 | Not TGA process | Baseline | Not applicable |
| TC-0090 |  | Handing Over - Furniture Works (FF&E) | milestone | 0d | 2028-04-06 | 2028-04-06 | TC-0080 | 214d | 0d | SAR-6D Construction (Fri off, public holidays off) |  |  | Phase 2 | Phase 2 (Billing) | 3.3 | Testing & Commission | N/A | Contractor | Main Building | 3.3 FF&E | Testing & Commission | N/A | N/A | Handover | No cost | None | Float > 90 d | Other | None | Station Building Zon | No site crew | 2028-04 | 2028-04 | 2028-Q2 | Not TGA process | Baseline | Not applicable |

| ID | WBS | Activity | Type | Duration | Start | Finish | Predecessors | Total float | Free float | Calendar | Resources | Cost | Phase | Contract Phase | BOQ Ref | Stage | Lead Class | Responsibility | Package Group | Work Package | Discipline | Design Stage | Procurement Step | Milestone Type | Cost Component | Payment Basis | Path Class | Critical Driver | Risk Flag | Work Zone | Crew Size Class | Start Month | Finish Month | Start Quarter | TGA Process | Duration Basis | Submit / Review |
| --- | --- | --- | --- | --- | --- | --- | --- | --- | --- | --- | --- | --- | --- | --- | --- | --- | --- | --- | --- | --- | --- | --- | --- | --- | --- | --- | --- | --- | --- | --- | --- | --- | --- | --- | --- | --- | --- |
|  | 02 | **Ancillary Buildings** |  |  | 2028-01-08 | 2028-07-12 |  |  |  |  |  |  |  |  |  |  |  |  |  |  |  |  |  |  |  |  |  |  |  |  |  |  |  |  |  |  |  |
|  | 01 | **Substation and SEC Works** |  |  | 2028-04-18 | 2028-05-31 |  |  |  |  |  |  |  |  |  |  |  |  |  |  |  |  |  |  |  |  |  |  |  |  |  |  |  |  |  |  |  |
| TC-0100 |  | Testing, Protection Settings & Energization |  | 15d | 2028-04-18 | 2028-05-11 | CN-0500, CN-0510 | 122d | 0d | SAR-6D Construction (Fri off, public holidays off) | PERFORMANCE - Progress Value (SAR, planned earned value) [110700 SAR]; CASH FLOW - Invoiced Cash (SAR, net of advance recovery) [99630 SAR]; Site Engineer / Supervisor [120 h]; Commissioning / Test Engineer [720 h]; Electrician / Cable Technician [480 h]; General Labourer [240 h]; Testing & Commissioning Instruments [120 h] | 210,330 | Phase 1 | Phase 1 (Billing) | 4.1 | Testing & Commission | N/A | Contractor | Ancillary Buildings | 4.1 Substation & SEC | Testing & Commission | N/A | N/A | N/A | Testing & Commiss. | Monthly progress | Float > 90 d | Other | None | Substation & Utiliti | Small (<15) | 2028-04 | 2028-05 | 2028-Q2 | Not TGA process | Baseline | Not applicable |
| TC-0110 |  | SEC Inspection and Permanent Connection |  | 15d | 2028-05-15 | 2028-05-31 | TG-0850 | 153d | 0d | SAR-6D Construction (Fri off, public holidays off) | PERFORMANCE - Progress Value (SAR, planned earned value) [147600 SAR]; CASH FLOW - Invoiced Cash (SAR, net of advance recovery) [132840 SAR]; Site Engineer / Supervisor [120 h]; Commissioning / Test Engineer [720 h]; Electrician / Cable Technician [480 h]; General Labourer [240 h]; Testing & Commissioning Instruments [120 h] | 280,440 | Phase 1 | Phase 1 (Billing) | 4.1 | Testing & Commission | N/A | Contractor | Ancillary Buildings | 4.1 Substation & SEC | Testing & Commission | Studies & Approvals | N/A | N/A | Testing & Commiss. | Monthly progress | Float > 90 d | Design & approvals g | Authority dependency | Substation & Utiliti | Small (<15) | 2028-05 | 2028-05 | 2028-Q2 | Verification and Readiness | Baseline | Not applicable |
| TC-0120 |  | Handing Over - Substation & SEC Works | milestone | 0d | 2028-05-31 | 2028-05-31 | TC-0110 | 173d | 0d | SAR-6D Construction (Fri off, public holidays off) |  |  | Phase 1 | Phase 1 (Billing) | 4.1 | Testing & Commission | N/A | Contractor | Ancillary Buildings | 4.1 Substation & SEC | Testing & Commission | N/A | N/A | Handover | No cost | None | Float > 90 d | Other | None | Substation & Utiliti | No site crew | 2028-05 | 2028-05 | 2028-Q2 | Not TGA process | Baseline | Not applicable |
|  | 02 | **Firefighting Building (BOQ GEA 518 m²)** |  |  | 2028-05-13 | 2028-06-22 |  |  |  |  |  |  |  |  |  |  |  |  |  |  |  |  |  |  |  |  |  |  |  |  |  |  |  |  |  |  |  |
| TC-0130 |  | Fire Pump Tests, Flow Tests & Commissioning |  | 15d | 2028-05-13 | 2028-05-29 | CN-0520, CN-0540, CN-0560, CN-0610, CN-0620, CN-0630, CN-0640, CN-0670, CN-0700, CN-0730, CN-0750, CN-0780, CN-0830, CN-0840, CN-0860, TC-0100 | 154d | 0d | SAR-6D Construction (Fri off, public holidays off) | PERFORMANCE - Progress Value (SAR, planned earned value) [33186.4 SAR]; CASH FLOW - Invoiced Cash (SAR, net of advance recovery) [29867.7 SAR]; Site Engineer / Supervisor [120 h]; Commissioning / Test Engineer [600 h]; Electrician / Cable Technician [360 h]; General Labourer [240 h]; Testing & Commissioning Instruments [120 h] | 63,054.08 | Phase 1 | Phase 1 (Billing) | 4.2 | Testing & Commission | N/A | Contractor | Ancillary Buildings | 4.2 Firefighting Bld | Testing & Commission | N/A | N/A | N/A | Testing & Commiss. | Monthly progress | Float > 90 d | Other | None | Station Building Zon | Small (<15) | 2028-05 | 2028-05 | 2028-Q2 | Not TGA process | Baseline | Not applicable |
| TC-0140 |  | Civil Defense Inspection and Approval - Ancillary Buildings |  | 10d | 2028-06-03 | 2028-06-13 | TG-0841 | 154d | 0d | SAR-6D Construction (Fri off, public holidays off) | PERFORMANCE - Progress Value (SAR, planned earned value) [22124.2 SAR]; CASH FLOW - Invoiced Cash (SAR, net of advance recovery) [19911.8 SAR]; Site Engineer / Supervisor [80 h]; Commissioning / Test Engineer [400 h]; Electrician / Cable Technician [240 h]; General Labourer [160 h]; Testing & Commissioning Instruments [80 h] | 42,036.06 | Phase 1 | Phase 1 (Billing) | 4.2 | Testing & Commission | N/A | Contractor | Ancillary Buildings | 4.2 Firefighting Bld | Testing & Commission | Studies & Approvals | N/A | N/A | Testing & Commiss. | Monthly progress | Float > 90 d | Design & approvals g | Authority dependency | Station Building Zon | Small (<15) | 2028-06 | 2028-06 | 2028-Q2 | Verification and Readiness | Baseline | Review / Approval |
| TC-0150 |  | Snagging & Punch-list Closure |  | 8d | 2028-06-14 | 2028-06-22 | TC-0140 | 154d | 0d | SAR-6D Construction (Fri off, public holidays off) | PERFORMANCE - Progress Value (SAR, planned earned value) [32599.4 SAR]; CASH FLOW - Invoiced Cash (SAR, net of advance recovery) [29339.5 SAR]; Site Engineer / Supervisor [64 h]; Commissioning / Test Engineer [320 h]; Electrician / Cable Technician [192 h]; General Labourer [128 h]; Testing & Commissioning Instruments [64 h] | 61,938.84 | Phase 1 | Phase 1 (Billing) | 4.2 | Testing & Commission | N/A | Contractor | Ancillary Buildings | 4.2 Firefighting Bld | Testing & Commission | N/A | N/A | N/A | Testing & Commiss. | Monthly progress | Float > 90 d | Other | None | Station Building Zon | Small (<15) | 2028-06 | 2028-06 | 2028-Q2 | Not TGA process | Baseline | Not applicable |
| TC-0160 |  | Handing Over - Firefighting Building | milestone | 0d | 2028-06-22 | 2028-06-22 | TC-0150 | 154d | 0d | SAR-6D Construction (Fri off, public holidays off) |  |  | Phase 1 | Phase 1 (Billing) | 4.2 | Testing & Commission | N/A | Contractor | Ancillary Buildings | 4.2 Firefighting Bld | Testing & Commission | N/A | N/A | Handover | No cost | None | Float > 90 d | Other | None | Station Building Zon | No site crew | 2028-06 | 2028-06 | 2028-Q2 | Not TGA process | Baseline | Not applicable |
|  | 03 | **Generator Room (BOQ 62 m²)** |  |  | 2028-06-20 | 2028-07-12 |  |  |  |  |  |  |  |  |  |  |  |  |  |  |  |  |  |  |  |  |  |  |  |  |  |  |  |  |  |  |  |
| TC-0170 |  | Generator Load Bank Test & Commissioning |  | 12d | 2028-06-20 | 2028-07-03 | CN-0900, CN-0940, CN-0960, CN-0970, CN-0980, TC-0100, TC-0110 | 137d | 0d | SAR-6D Construction (Fri off, public holidays off) | PERFORMANCE - Progress Value (SAR, planned earned value) [42768 SAR]; CASH FLOW - Invoiced Cash (SAR, net of advance recovery) [38491.2 SAR]; Site Engineer / Supervisor [96 h]; Commissioning / Test Engineer [384 h]; Electrician / Cable Technician [288 h]; General Labourer [96 h]; Testing & Commissioning Instruments [96 h] | 81,259.2 | Phase 2 | Phase 2 (Billing) | 4.3 | Testing & Commission | N/A | Contractor | Ancillary Buildings | 4.3 Generator Room | Testing & Commission | N/A | N/A | N/A | Testing & Commiss. | Monthly progress | Float > 90 d | Other | None | Substation & Utiliti | Small (<15) | 2028-06 | 2028-07 | 2028-Q2 | Not TGA process | Baseline | Not applicable |
| TC-0180 |  | Integration with Main Electrical Network |  | 8d | 2028-07-04 | 2028-07-12 | TC-0170 | 137d | 0d | SAR-6D Construction (Fri off, public holidays off) | PERFORMANCE - Progress Value (SAR, planned earned value) [38412 SAR]; CASH FLOW - Invoiced Cash (SAR, net of advance recovery) [34570.8 SAR]; Site Engineer / Supervisor [64 h]; Commissioning / Test Engineer [256 h]; Electrician / Cable Technician [192 h]; General Labourer [64 h]; Testing & Commissioning Instruments [64 h] | 72,982.8 | Phase 2 | Phase 2 (Billing) | 4.3 | Testing & Commission | N/A | Contractor | Ancillary Buildings | 4.3 Generator Room | Testing & Commission | N/A | N/A | N/A | Testing & Commiss. | Monthly progress | Float > 90 d | Other | None | Substation & Utiliti | Small (<15) | 2028-07 | 2028-07 | 2028-Q3 | Not TGA process | Baseline | Not applicable |
| TC-0190 |  | Handing Over - Generator Room | milestone | 0d | 2028-07-12 | 2028-07-12 | TC-0180 | 137d | 0d | SAR-6D Construction (Fri off, public holidays off) |  |  | Phase 2 | Phase 2 (Billing) | 4.3 | Testing & Commission | N/A | Contractor | Ancillary Buildings | 4.3 Generator Room | Testing & Commission | N/A | N/A | Handover | No cost | None | Float > 90 d | Other | None | Substation & Utiliti | No site crew | 2028-07 | 2028-07 | 2028-Q3 | Not TGA process | Baseline | Not applicable |
|  | 04 | **Underground Water Tank** |  |  | 2028-01-08 | 2028-01-26 |  |  |  |  |  |  |  |  |  |  |  |  |  |  |  |  |  |  |  |  |  |  |  |  |  |  |  |  |  |  |  |
| TC-0200 |  | Disinfection, Water Quality Tests & Commissioning |  | 8d | 2028-01-08 | 2028-01-16 | CN-1030, CN-1050, CN-1070 | 268d | 0d | SAR-6D Construction (Fri off, public holidays off) | PERFORMANCE - Progress Value (SAR, planned earned value) [55944 SAR]; CASH FLOW - Invoiced Cash (SAR, net of advance recovery) [50349.6 SAR]; Site Engineer / Supervisor [64 h]; Commissioning / Test Engineer [320 h]; Electrician / Cable Technician [256 h]; General Labourer [128 h]; Testing & Commissioning Instruments [64 h] | 106,293.6 | Phase 1 | Phase 1 (Billing) | 4.4 | Testing & Commission | N/A | Contractor | Ancillary Buildings | 4.4 UG Water Tank | Testing & Commission | N/A | N/A | N/A | Testing & Commiss. | Monthly progress | Float > 90 d | Other | None | Substation & Utiliti | Small (<15) | 2028-01 | 2028-01 | 2028-Q1 | Not TGA process | Baseline | Not applicable |
| TC-0210 |  | NWC Inspection and Acceptance |  | 6d | 2028-01-20 | 2028-01-26 | TG-0860 | 268d | 0d | SAR-6D Construction (Fri off, public holidays off) | PERFORMANCE - Progress Value (SAR, planned earned value) [65268 SAR]; CASH FLOW - Invoiced Cash (SAR, net of advance recovery) [58741.2 SAR]; Site Engineer / Supervisor [48 h]; Commissioning / Test Engineer [240 h]; Electrician / Cable Technician [192 h]; General Labourer [96 h]; Testing & Commissioning Instruments [48 h] | 124,009.2 | Phase 1 | Phase 1 (Billing) | 4.4 | Testing & Commission | N/A | Contractor | Ancillary Buildings | 4.4 UG Water Tank | Testing & Commission | Studies & Approvals | N/A | N/A | Testing & Commiss. | Monthly progress | Float > 90 d | Design & approvals g | Authority dependency | Substation & Utiliti | Small (<15) | 2028-01 | 2028-01 | 2028-Q1 | Verification and Readiness | Baseline | Review / Approval |
| TC-0220 |  | Handing Over - Underground Water Tank | milestone | 0d | 2028-01-26 | 2028-01-26 | TC-0210 | 268d | 0d | SAR-6D Construction (Fri off, public holidays off) |  |  | Phase 1 | Phase 1 (Billing) | 4.4 | Testing & Commission | N/A | Contractor | Ancillary Buildings | 4.4 UG Water Tank | Testing & Commission | N/A | N/A | Handover | No cost | None | Float > 90 d | Other | None | Substation & Utiliti | No site crew | 2028-01 | 2028-01 | 2028-Q1 | Not TGA process | Baseline | Not applicable |
|  | 03 | **External Works** |  |  | 2027-12-21 | 2028-05-17 |  |  |  |  |  |  |  |  |  |  |  |  |  |  |  |  |  |  |  |  |  |  |  |  |  |  |  |  |  |  |  |
|  | 01 | **Site Works and Underground Utilities** |  |  | 2028-01-01 | 2028-01-26 |  |  |  |  |  |  |  |  |  |  |  |  |  |  |  |  |  |  |  |  |  |  |  |  |  |  |  |  |  |  |  |
| TC-0230 |  | Authority Inspections & Permanent Connections (NWC / SEC / Telecom) |  | 15d | 2028-01-01 | 2028-01-17 | TG-0870 | 268d | 0d | SAR-6D Construction (Fri off, public holidays off) | PERFORMANCE - Progress Value (SAR, planned earned value) [198678 SAR]; CASH FLOW - Invoiced Cash (SAR, net of advance recovery) [178810 SAR]; Site Engineer / Supervisor [120 h]; Commissioning / Test Engineer [840 h]; Electrician / Cable Technician [600 h]; General Labourer [240 h]; Testing & Commissioning Instruments [120 h] | 377,488.69 | Phase 1 | Phase 1 (Billing) | 5.1 | Testing & Commission | N/A | Contractor | External Works | 5.1 Site Works & Uti | Testing & Commission | Studies & Approvals | N/A | N/A | Testing & Commiss. | Monthly progress | Float > 90 d | Design & approvals g | Authority dependency | Substation & Utiliti | Medium (15-40) | 2028-01 | 2028-01 | 2028-Q1 | Verification and Readiness | Baseline | Not applicable |
| TC-0240 |  | As-Built Survey & Final Acceptance of Utilities |  | 8d | 2028-01-18 | 2028-01-26 | TC-0230 | 268d | 0d | SAR-6D Construction (Fri off, public holidays off) | PERFORMANCE - Progress Value (SAR, planned earned value) [214762 SAR]; CASH FLOW - Invoiced Cash (SAR, net of advance recovery) [193286 SAR]; Site Engineer / Supervisor [64 h]; Commissioning / Test Engineer [448 h]; Electrician / Cable Technician [320 h]; General Labourer [128 h]; Testing & Commissioning Instruments [64 h] | 408,047.31 | Phase 1 | Phase 1 (Billing) | 5.1 | Testing & Commission | N/A | Contractor | External Works | 5.1 Site Works & Uti | Testing & Commission | N/A | N/A | N/A | Engineering & Design | On completion | Float > 90 d | Other | None | Substation & Utiliti | Medium (15-40) | 2028-01 | 2028-01 | 2028-Q1 | Not TGA process | Baseline | Review / Approval |
| TC-0250 |  | Handing Over - Site Works & Underground Utilities | milestone | 0d | 2028-01-26 | 2028-01-26 | TC-0240 | 268d | 0d | SAR-6D Construction (Fri off, public holidays off) |  |  | Phase 1 | Phase 1 (Billing) | 5.1 | Testing & Commission | N/A | Contractor | External Works | 5.1 Site Works & Uti | Testing & Commission | N/A | N/A | Handover | No cost | None | Float > 90 d | Other | None | Substation & Utiliti | No site crew | 2028-01 | 2028-01 | 2028-Q1 | Not TGA process | Baseline | Not applicable |
|  | 02 | **Car Parking Sheds (BOQ 1,375 m²)** |  |  | 2028-04-20 | 2028-04-26 |  |  |  |  |  |  |  |  |  |  |  |  |  |  |  |  |  |  |  |  |  |  |  |  |  |  |  |  |  |  |  |
| TC-0260 |  | Final Inspection & Snagging - Car Parking Sheds |  | 6d | 2028-04-20 | 2028-04-26 | CN-1260, CN-1270 | 197d | 0d | SAR-6D Construction (Fri off, public holidays off) | PERFORMANCE - Progress Value (SAR, planned earned value) [24490 SAR]; CASH FLOW - Invoiced Cash (SAR, net of advance recovery) [22041 SAR]; Site Engineer / Supervisor [48 h]; Commissioning / Test Engineer [192 h]; Electrician / Cable Technician [144 h]; General Labourer [48 h]; Testing & Commissioning Instruments [48 h] | 46,531 | Phase 1 | Phase 1 (Billing) | 5.2 | Testing & Commission | N/A | Contractor | External Works | 5.2 Car Parking Shed | Testing & Commission | N/A | N/A | N/A | Testing & Commiss. | Monthly progress | Float > 90 d | Other | None | Site & External Zone | Small (<15) | 2028-04 | 2028-04 | 2028-Q2 | Not TGA process | Baseline | Not applicable |
| TC-0270 |  | Handing Over - Car Parking Sheds | milestone | 0d | 2028-04-26 | 2028-04-26 | TC-0260 | 197d | 0d | SAR-6D Construction (Fri off, public holidays off) |  |  | Phase 1 | Phase 1 (Billing) | 5.2 | Testing & Commission | N/A | Contractor | External Works | 5.2 Car Parking Shed | Testing & Commission | N/A | N/A | Handover | No cost | None | Float > 90 d | Other | None | Site & External Zone | No site crew | 2028-04 | 2028-04 | 2028-Q2 | Not TGA process | Baseline | Not applicable |

| ID | WBS | Activity | Type | Duration | Start | Finish | Predecessors | Total float | Free float | Calendar | Resources | Cost | Phase | Contract Phase | BOQ Ref | Stage | Lead Class | Responsibility | Package Group | Work Package | Discipline | Design Stage | Procurement Step | Milestone Type | Cost Component | Payment Basis | Path Class | Critical Driver | Risk Flag | Work Zone | Crew Size Class | Start Month | Finish Month | Start Quarter | TGA Process | Duration Basis | Submit / Review |
| --- | --- | --- | --- | --- | --- | --- | --- | --- | --- | --- | --- | --- | --- | --- | --- | --- | --- | --- | --- | --- | --- | --- | --- | --- | --- | --- | --- | --- | --- | --- | --- | --- | --- | --- | --- | --- | --- |
|  | 03 | **Fence Works (BOQ 500 m)** |  |  | 2027-12-21 | 2027-12-25 |  |  |  |  |  |  |  |  |  |  |  |  |  |  |  |  |  |  |  |  |  |  |  |  |  |  |  |  |  |  |  |
| TC-0280 |  | Final Inspection & Snagging - Fence Works |  | 4d | 2027-12-21 | 2027-12-25 | CN-1280, CN-1310 | 296d | 0d | SAR-6D Construction (Fri off, public holidays off) | PERFORMANCE - Progress Value (SAR, planned earned value) [6500 SAR]; CASH FLOW - Invoiced Cash (SAR, net of advance recovery) [5850 SAR]; Site Engineer / Supervisor [32 h]; Commissioning / Test Engineer [64 h]; Electrician / Cable Technician [64 h]; General Labourer [32 h]; Testing & Commissioning Instruments [32 h] | 12,350 | Phase 1 | Phase 1 (Billing) | 5.3 | Testing & Commission | N/A | Contractor | External Works | 5.3 Fence Works | Testing & Commission | N/A | N/A | N/A | Testing & Commiss. | Monthly progress | Float > 90 d | Other | None | Site & External Zone | Small (<15) | 2027-12 | 2027-12 | 2027-Q4 | Not TGA process | Baseline | Not applicable |
| TC-0290 |  | Handing Over - Fence Works | milestone | 0d | 2027-12-25 | 2027-12-25 | TC-0280 | 296d | 0d | SAR-6D Construction (Fri off, public holidays off) |  |  | Phase 1 | Phase 1 (Billing) | 5.3 | Testing & Commission | N/A | Contractor | External Works | 5.3 Fence Works | Testing & Commission | N/A | N/A | Handover | No cost | None | Float > 90 d | Other | None | Site & External Zone | No site crew | 2027-12 | 2027-12 | 2027-Q4 | Not TGA process | Baseline | Not applicable |
|  | 04 | **Automatic Gate System (BOQ 2 no)** |  |  | 2028-05-13 | 2028-05-17 |  |  |  |  |  |  |  |  |  |  |  |  |  |  |  |  |  |  |  |  |  |  |  |  |  |  |  |  |  |  |  |
| TC-0300 |  | Gate System Testing & Commissioning |  | 5d | 2028-05-13 | 2028-05-17 | CN-1320, CN-1340, TC-0100 | 185d | 0d | SAR-6D Construction (Fri off, public holidays off) | PERFORMANCE - Progress Value (SAR, planned earned value) [30000 SAR]; CASH FLOW - Invoiced Cash (SAR, net of advance recovery) [27000 SAR]; Site Engineer / Supervisor [40 h]; Commissioning / Test Engineer [120 h]; Electrician / Cable Technician [80 h]; General Labourer [40 h]; Testing & Commissioning Instruments [40 h] | 57,000 | Phase 1 | Phase 1 (Billing) | 5.4 | Testing & Commission | N/A | Contractor | External Works | 5.4 Automatic Gate | Testing & Commission | N/A | N/A | N/A | Testing & Commiss. | Monthly progress | Float > 90 d | Other | None | Site & External Zone | Small (<15) | 2028-05 | 2028-05 | 2028-Q2 | Not TGA process | Baseline | Not applicable |
| TC-0310 |  | Handing Over - Automatic Gate System | milestone | 0d | 2028-05-17 | 2028-05-17 | TC-0300 | 185d | 0d | SAR-6D Construction (Fri off, public holidays off) |  |  | Phase 1 | Phase 1 (Billing) | 5.4 | Testing & Commission | N/A | Contractor | External Works | 5.4 Automatic Gate | Testing & Commission | N/A | N/A | Handover | No cost | None | Float > 90 d | Other | None | Site & External Zone | No site crew | 2028-05 | 2028-05 | 2028-Q2 | Not TGA process | Baseline | Not applicable |
|  | 04 | **Road Works** |  |  | 2028-05-13 | 2028-05-23 |  |  |  |  |  |  |  |  |  |  |  |  |  |  |  |  |  |  |  |  |  |  |  |  |  |  |  |  |  |  |  |
|  | 01 | **Access Road (BOQ ~1,700 m dual carriageway)** |  |  | 2028-05-13 | 2028-05-21 |  |  |  |  |  |  |  |  |  |  |  |  |  |  |  |  |  |  |  |  |  |  |  |  |  |  |  |  |  |  |  |
| TC-0320 |  | Final Inspection, Snagging & Lighting Energization - Access Road |  | 8d | 2028-05-13 | 2028-05-21 | CN-1380, CN-1390, CN-1400, CN-1410, CN-1420, TC-0100 | 182d | 0d | SAR-6D Construction (Fri off, public holidays off) | PERFORMANCE - Progress Value (SAR, planned earned value) [387600 SAR]; CASH FLOW - Invoiced Cash (SAR, net of advance recovery) [348840 SAR]; Site Engineer / Supervisor [64 h]; Commissioning / Test Engineer [448 h]; Electrician / Cable Technician [320 h]; General Labourer [128 h]; Testing & Commissioning Instruments [64 h] | 736,440 | Phase 2 | Phase 2 (Billing) | 6.1 | Testing & Commission | N/A | Contractor | Road Works | 6.1 Access Road | Testing & Commission | N/A | N/A | N/A | Testing & Commiss. | Monthly progress | Float > 90 d | Other | None | Road Zone | Medium (15-40) | 2028-05 | 2028-05 | 2028-Q2 | Not TGA process | Baseline | Not applicable |
| TC-0330 |  | Handing Over - Access Road | milestone | 0d | 2028-05-21 | 2028-05-21 | TC-0320 | 182d | 0d | SAR-6D Construction (Fri off, public holidays off) |  |  | Phase 2 | Phase 2 (Billing) | 6.1 | Testing & Commission | N/A | Contractor | Road Works | 6.1 Access Road | Testing & Commission | N/A | N/A | Handover | No cost | None | Float > 90 d | Other | None | Road Zone | No site crew | 2028-05 | 2028-05 | 2028-Q2 | Not TGA process | Baseline | Not applicable |
|  | 02 | **External Works (All works above ground)** |  |  | 2028-05-13 | 2028-05-23 |  |  |  |  |  |  |  |  |  |  |  |  |  |  |  |  |  |  |  |  |  |  |  |  |  |  |  |  |  |  |  |
| TC-0340 |  | Final Inspection & Snagging - External Works |  | 10d | 2028-05-13 | 2028-05-23 | CN-1460, CN-1480, CN-1490, CN-1500, CN-1510, CN-1530, TC-0100 | 180d | 0d | SAR-6D Construction (Fri off, public holidays off) | PERFORMANCE - Progress Value (SAR, planned earned value) [278690 SAR]; CASH FLOW - Invoiced Cash (SAR, net of advance recovery) [250821 SAR]; Site Engineer / Supervisor [80 h]; Commissioning / Test Engineer [560 h]; Electrician / Cable Technician [400 h]; General Labourer [160 h]; Testing & Commissioning Instruments [80 h] | 529,511 | Phase 1 | Phase 1 (Billing) | 6.3 | Testing & Commission | N/A | Contractor | Road Works | 6.3 External Works | Testing & Commission | N/A | N/A | N/A | Testing & Commiss. | Monthly progress | Float > 90 d | Other | None | Site & External Zone | Medium (15-40) | 2028-05 | 2028-05 | 2028-Q2 | Not TGA process | Baseline | Not applicable |
| TC-0350 |  | Handing Over - External Works (Above Ground) | milestone | 0d | 2028-05-23 | 2028-05-23 | TC-0340 | 180d | 0d | SAR-6D Construction (Fri off, public holidays off) |  |  | Phase 1 | Phase 1 (Billing) | 6.3 | Testing & Commission | N/A | Contractor | Road Works | 6.3 External Works | Testing & Commission | N/A | N/A | Handover | No cost | None | Float > 90 d | Other | None | Site & External Zone | No site crew | 2028-05 | 2028-05 | 2028-Q2 | Not TGA process | Baseline | Not applicable |
|  | 05 | **Railway Systems** |  |  | 2028-06-14 | 2028-12-09 |  |  |  |  |  |  |  |  |  |  |  |  |  |  |  |  |  |  |  |  |  |  |  |  |  |  |  |  |  |  |  |
|  | 01 | **Signalling and Telecommunication** |  |  | 2028-06-22 | 2028-12-09 |  |  |  |  |  |  |  |  |  |  |  |  |  |  |  |  |  |  |  |  |  |  |  |  |  |  |  |  |  |  |  |
| TC-0360 |  | Static & Functional Testing - Signalling & Telecommunication |  | 12d | 2028-06-22 | 2028-07-05 | CN-1580, CN-1590, CN-1620, TC-0100 | 91d | 0d | SAR-6D Construction (Fri off, public holidays off) | PERFORMANCE - Progress Value (SAR, planned earned value) [298000 SAR]; CASH FLOW - Invoiced Cash (SAR, net of advance recovery) [268200 SAR]; Site Engineer / Supervisor [96 h]; Commissioning / Test Engineer [768 h]; Electrician / Cable Technician [480 h]; General Labourer [288 h]; Testing & Commissioning Instruments [96 h] | 566,200 | Phase 1 | Phase 1 (Billing) | 6.2 | Testing & Commission | N/A | Contractor | Railway Systems | 6.2 Signalling & Tel | Testing & Commission | N/A | N/A | N/A | Testing & Commiss. | Monthly progress | Float > 90 d | Other | None | Track Zone | Medium (15-40) | 2028-06 | 2028-07 | 2028-Q2 | Not TGA process | Baseline | Not applicable |
| TC-0370 |  | Dynamic & System Integration Testing with Track and Turnouts |  | 15d | 2028-10-22 | 2028-11-07 | CN-1680, TC-0360, TC-0440 | 0d |  | SAR-6D Construction (Fri off, public holidays off) | PERFORMANCE - Progress Value (SAR, planned earned value) [372500 SAR]; CASH FLOW - Invoiced Cash (SAR, net of advance recovery) [335250 SAR]; Site Engineer / Supervisor [120 h]; Commissioning / Test Engineer [960 h]; Electrician / Cable Technician [600 h]; General Labourer [360 h]; Testing & Commissioning Instruments [120 h] | 707,750 | Phase 1 | Phase 1 (Billing) | 6.2 | Testing & Commission | N/A | Contractor | Railway Systems | 6.2 Signalling & Tel | Testing & Commission | N/A | N/A | N/A | Testing & Commiss. | Monthly progress | Critical (0 d) | Longest path | None | Track Zone | Medium (15-40) | 2028-10 | 2028-11 | 2028-Q4 | Verification and Readiness | Baseline | Not applicable |
| TC-0460 |  | Trial Running - Loop Line & Turnouts with Signalling |  | 12d | 2028-11-08 | 2028-11-21 | TC-0370, TG-0810 FF, TG-2925 | 0d |  | SAR-6D Construction (Fri off, public holidays off) | PERFORMANCE - Progress Value (SAR, planned earned value) [298000 SAR]; CASH FLOW - Invoiced Cash (SAR, net of advance recovery) [268200 SAR]; Site Engineer / Supervisor [96 h]; Commissioning / Test Engineer [768 h]; Electrician / Cable Technician [480 h]; General Labourer [288 h]; Testing & Commissioning Instruments [96 h] | 566,200 | Phase 1 | Phase 1 (Billing) | 6.2 | Testing & Commission | N/A | Contractor | Railway Systems | 6.2 Signalling & Tel | Testing & Commission | N/A | N/A | N/A | Testing & Commiss. | Monthly progress | Critical (0 d) | Longest path | SAR dependency | Track Zone | Medium (15-40) | 2028-11 | 2028-11 | 2028-Q4 | Verification and Readiness | Baseline | Not applicable |
| TC-0380 |  | SAR Safety Assessment and Acceptance - Review |  | 15d | 2028-11-22 | 2028-12-09 | TC-0460, TG-0830 | 0d |  | SAR-6D Construction (Fri off, public holidays off) | PERFORMANCE - Progress Value (SAR, planned earned value) [521500 SAR]; CASH FLOW - Invoiced Cash (SAR, net of advance recovery) [469350 SAR]; Site Engineer / Supervisor [120 h]; Commissioning / Test Engineer [960 h]; Electrician / Cable Technician [600 h]; General Labourer [360 h]; Testing & Commissioning Instruments [120 h] | 990,850 | Phase 1 | Phase 1 (Billing) | 6.2 | Testing & Commission | N/A | Contractor | Railway Systems | 6.2 Signalling & Tel | Testing & Commission | N/A | N/A | N/A | Testing & Commiss. | Monthly progress | Critical (0 d) | Longest path | SAR dependency | Track Zone | Medium (15-40) | 2028-11 | 2028-12 | 2028-Q4 | Verification and Readiness | Baseline | Review / Approval |
| TC-0390 |  | Handing Over - Signalling & Telecommunication | milestone | 0d | 2028-12-09 | 2028-12-09 | TC-0380 | 10d | 0d | SAR-6D Construction (Fri off, public holidays off) |  |  | Phase 1 | Phase 1 (Billing) | 6.2 | Testing & Commission | N/A | Contractor | Railway Systems | 6.2 Signalling & Tel | Testing & Commission | N/A | N/A | Handover | No cost | None | Near-critical (1-30 d) | Other | None | Track Zone | No site crew | 2028-12 | 2028-12 | 2028-Q4 | Not TGA process | Baseline | Not applicable |
|  | 02 | **Railway Track Works (BOQ 2,500 m loop line)** |  |  | 2028-10-22 | 2028-11-19 |  |  |  |  |  |  |  |  |  |  |  |  |  |  |  |  |  |  |  |  |  |  |  |  |  |  |  |  |  |  |  |
| TC-0400 |  | Track Geometry Survey, Inspection & Load Testing |  | 10d | 2028-10-22 | 2028-11-01 | CN-1680 | 18d | 0d | SAR-6D Construction (Fri off, public holidays off) | PERFORMANCE - Progress Value (SAR, planned earned value) [328500 SAR]; CASH FLOW - Invoiced Cash (SAR, net of advance recovery) [295650 SAR]; Site Engineer / Supervisor [80 h]; Commissioning / Test Engineer [640 h]; Electrician / Cable Technician [400 h]; General Labourer [240 h]; Testing & Commissioning Instruments [80 h] | 624,150 | Phase 2 | Phase 2 (Billing) | 7.2 | Testing & Commission | N/A | Contractor | Railway Systems | 7.2 Railway Track | Testing & Commission | N/A | N/A | N/A | Testing & Commiss. | Monthly progress | Near-critical (1-30 d) | Railway convergence | None | Track Zone | Medium (15-40) | 2028-10 | 2028-11 | 2028-Q4 | Not TGA process | Baseline | Not applicable |
| TC-0410 |  | SAR Inspection & Acceptance - Loop Line |  | 10d | 2028-11-08 | 2028-11-19 | TC-0370, TC-0400 | 13d | 0d | SAR-6D Construction (Fri off, public holidays off) | PERFORMANCE - Progress Value (SAR, planned earned value) [547500 SAR]; CASH FLOW - Invoiced Cash (SAR, net of advance recovery) [492750 SAR]; Site Engineer / Supervisor [80 h]; Commissioning / Test Engineer [640 h]; Electrician / Cable Technician [400 h]; General Labourer [240 h]; Testing & Commissioning Instruments [80 h] | 1,040,250 | Phase 2 | Phase 2 (Billing) | 7.2 | Testing & Commission | N/A | Contractor | Railway Systems | 7.2 Railway Track | Testing & Commission | N/A | N/A | N/A | Testing & Commiss. | Monthly progress | Near-critical (1-30 d) | Railway convergence | SAR dependency | Track Zone | Medium (15-40) | 2028-11 | 2028-11 | 2028-Q4 | Not TGA process | Baseline | Review / Approval |
| TC-0420 |  | Handing Over - Railway Track Works | milestone | 0d | 2028-11-19 | 2028-11-19 | TC-0410 | 27d | 0d | SAR-6D Construction (Fri off, public holidays off) |  |  | Phase 2 | Phase 2 (Billing) | 7.2 | Testing & Commission | N/A | Contractor | Railway Systems | 7.2 Railway Track | Testing & Commission | N/A | N/A | Handover | No cost | None | Near-critical (1-30 d) | Other | None | Track Zone | No site crew | 2028-11 | 2028-11 | 2028-Q4 | Not TGA process | Baseline | Not applicable |

| ID | WBS | Activity | Type | Duration | Start | Finish | Predecessors | Total float | Free float | Constraint | Calendar | Resources | Cost | Phase | Contract Phase | BOQ Ref | Stage | Lead Class | Responsibility | Package Group | Work Package | Discipline | Design Stage | Procurement Step | Milestone Type | Cost Component | Payment Basis | Path Class | Critical Driver | Risk Flag | Work Zone | Crew Size Class | Start Month | Finish Month | Start Quarter | TGA Process | Duration Basis | Submit / Review |
| --- | --- | --- | --- | --- | --- | --- | --- | --- | --- | --- | --- | --- | --- | --- | --- | --- | --- | --- | --- | --- | --- | --- | --- | --- | --- | --- | --- | --- | --- | --- | --- | --- | --- | --- | --- | --- | --- | --- |
|  | 03 | **Railway Turnout Works** |  |  | 2028-06-14 | 2028-07-02 |  |  |  |  |  |  |  |  |  |  |  |  |  |  |  |  |  |  |  |  |  |  |  |  |  |  |  |  |  |  |  |  |
| TC-0430 |  | Turnout Geometry Inspection & Functional Tests |  | 8d | 2028-06-14 | 2028-06-22 | CN-1740 | 94d | 0d |  | SAR-6D Construction (Fri off, public holidays off) | PERFORMANCE - Progress Value (SAR, planned earned value) [179980 SAR]; CASH FLOW - Invoiced Cash (SAR, net of advance recovery) [161982 SAR]; Site Engineer / Supervisor [64 h]; Commissioning / Test Engineer [448 h]; Electrician / Cable Technician [320 h]; General Labourer [128 h]; Testing & Commissioning Instruments [64 h] | 341,962 | Phase 1 | Phase 1 (Billing) | 7.3 | Testing & Commission | N/A | Contractor | Railway Systems | 7.3 Railway Turnouts | Testing & Commission | N/A | N/A | N/A | Testing & Commiss. | Monthly progress | Float > 90 d | Railway convergence | None | Track Zone | Medium (15-40) | 2028-06 | 2028-06 | 2028-Q2 | Not TGA process | Baseline | Not applicable |
| TC-0440 |  | SAR Inspection & Acceptance - Turnouts |  | 8d | 2028-06-24 | 2028-07-02 | TC-0430 | 94d | 0d |  | SAR-6D Construction (Fri off, public holidays off) | PERFORMANCE - Progress Value (SAR, planned earned value) [269970 SAR]; CASH FLOW - Invoiced Cash (SAR, net of advance recovery) [242973 SAR]; Site Engineer / Supervisor [64 h]; Commissioning / Test Engineer [448 h]; Electrician / Cable Technician [320 h]; General Labourer [128 h]; Testing & Commissioning Instruments [64 h] | 512,943 | Phase 1 | Phase 1 (Billing) | 7.3 | Testing & Commission | N/A | Contractor | Railway Systems | 7.3 Railway Turnouts | Testing & Commission | N/A | N/A | N/A | Testing & Commiss. | Monthly progress | Float > 90 d | Railway convergence | SAR dependency | Track Zone | Medium (15-40) | 2028-06 | 2028-07 | 2028-Q2 | Not TGA process | Baseline | Review / Approval |
| TC-0450 |  | Handing Over - Railway Turnout Works | milestone | 0d | 2028-07-02 | 2028-07-02 | TC-0440 | 146d | 0d |  | SAR-6D Construction (Fri off, public holidays off) |  |  | Phase 1 | Phase 1 (Billing) | 7.3 | Testing & Commission | N/A | Contractor | Railway Systems | 7.3 Railway Turnouts | Testing & Commission | N/A | N/A | Handover | No cost | None | Float > 90 d | Other | None | Track Zone | No site crew | 2028-07 | 2028-07 | 2028-Q3 | Not TGA process | Baseline | Not applicable |
|  | 07 | **Closeout Project** |  |  | 2028-07-02 | 2028-12-26 |  |  |  |  |  |  |  |  |  |  |  |  |  |  |  |  |  |  |  |  |  |  |  |  |  |  |  |  |  |  |  |  |
| CO-0010 |  | Final As-Built Drawings, O&M Manuals & Handing Over Documentation |  | 30d | 2028-07-02 | 2028-07-31 | TC-0030 | 141d | 0d |  |  | PERFORMANCE - Progress Value (SAR, planned earned value) [171554 SAR]; CASH FLOW - Invoiced Cash (SAR, net of advance recovery) [154398 SAR]; CAD / BIM Technician [720 h]; Site Engineer / Supervisor [480 h] | 325,951.86 | Phase 1 | Phase 1 (Billing) | 1.1 | Closeout | N/A | Contractor | General |  | Handover & Close-out | N/A | N/A | N/A | Preliminaries | Time-related / lump | Float > 90 d | Other | None | General | Small (<15) | 2028-07 | 2028-07 | 2028-Q3 | Not TGA process | Baseline | Not applicable |
| CO-0015 |  | SAR Taking-Over Certificate - Review and Issue |  | 11d | 2028-12-10 | 2028-12-20 | TC-0380, TC-0410, TG-0880, TG-0930 | 0d |  |  |  | PERFORMANCE - Progress Value (SAR, planned earned value) [10722.1 SAR]; CASH FLOW - Invoiced Cash (SAR, net of advance recovery) [9649.89 SAR] | 20,371.99 | Phase 1 | Phase 1 (Billing) | 1.1 | Closeout | N/A | SAR | General |  | Handover & Close-out | N/A | N/A | N/A | Preliminaries | Time-related / lump | Critical (0 d) | Longest path | SAR dependency | General | No site crew | 2028-12 | 2028-12 | 2028-Q4 | Verification and Readiness | Baseline | Review / Approval |
| CO-0020 |  | Taking-Over of All Works - Final Handing Over Certificate | milestone | 0d | 2028-12-20 | 2028-12-20 | MS-0120, TC-0040, TC-0070, TC-0080, TC-0090, TC-0120, TC-0160, TC-0190, TC-0220, TC-0250, TC-0270, TC-0290, TC-0310, TC-0330, TC-0350, TC-0390, TC-0420, TC-0450, CO-0010, CO-0015 | 0d |  |  |  |  |  | Phase 1 | Phase 1 (Billing) | 1.1 | Closeout | N/A | Contractor | General |  | Handover & Close-out | N/A | N/A | Completion | No cost | None | Critical (0 d) | Longest path | SAR dependency | General | No site crew | 2028-12 | 2028-12 | 2028-Q4 | Not TGA process | Baseline | Not applicable |
| CO-0030 |  | Final Account Submission & Project Closeout Report |  | 5d | 2028-12-21 | 2028-12-26 | CO-0020 | 4d | 0d |  | SAR-6D Construction (Fri off, public holidays off) | PERFORMANCE - Progress Value (SAR, planned earned value) [42888.4 SAR]; CASH FLOW - Invoiced Cash (SAR, net of advance recovery) [38599.6 SAR] | 81,487.96 | Phase 1 | Phase 1 (Billing) | 1.1 | Closeout | N/A | Contractor | General |  | Handover & Close-out | N/A | N/A | N/A | Preliminaries | Time-related / lump | Near-critical (1-30 d) | Other | None | General | No site crew | 2028-12 | 2028-12 | 2028-Q4 | Not TGA process | Baseline | Submission |
|  | 08 | **Cash Flow & Invoicing** |  |  | 2026-11-01 | 2028-12-31 |  |  |  |  |  |  |  |  |  |  |  |  |  |  |  |  |  |  |  |  |  |  |  |  |  |  |  |  |  |  |  |  |
|  | 01 | **Advance Payment** |  |  | 2026-11-01 | 2026-11-01 |  |  |  |  |  |  |  |  |  |  |  |  |  |  |  |  |  |  |  |  |  |  |  |  |  |  |  |  |  |  |  |  |
| ADV-0010 |  | Advance Payment Received (10% of Contract Value) | milestone | 0d | 2026-11-01 | 2026-11-01 |  | 0d |  | finish on 2026-11-01 |  | CASH FLOW - Invoiced Cash (SAR, net of advance recovery) [9999900 SAR] | 9,999,900 | Phase 1 | Phase 1 (Billing) | N/A | Cash Flow | N/A | SAR | General |  | Management & General | N/A | N/A | Cash (IPC / Advance) | No cost | Cash milestone | LOE / Cash | Other | None | General | No site crew | 2026-11 | 2026-11 | 2026-Q4 | Not TGA process | Baseline | Not applicable |
|  | 02 | **Monthly Interim Payment Certificates (IPC)** |  |  | 2026-11-30 | 2028-12-31 |  |  |  |  |  |  |  |  |  |  |  |  |  |  |  |  |  |  |  |  |  |  |  |  |  |  |  |  |  |  |  |  |
| IPC-01 |  | Monthly Interim Payment Certificate No.01 - submit invoice (2026-11) | milestone | 0d | 2026-11-30 | 2026-11-30 |  | 0d |  | finish on 2026-11-30 |  |  |  | Phase 1 | Phase 1 (Billing) | N/A | Cash Flow | N/A | SAR | General |  | Management & General | N/A | N/A | Cash (IPC / Advance) | No cost | Cash milestone | LOE / Cash | Other | None | General | No site crew | 2026-11 | 2026-11 | 2026-Q4 | Not TGA process | Baseline | Not applicable |
| IPC-02 |  | Monthly Interim Payment Certificate No.02 - submit invoice (2026-12) | milestone | 0d | 2026-12-31 | 2026-12-31 |  | 0d |  | finish on 2026-12-31 |  |  |  | Phase 1 | Phase 1 (Billing) | N/A | Cash Flow | N/A | SAR | General |  | Management & General | N/A | N/A | Cash (IPC / Advance) | No cost | Cash milestone | LOE / Cash | Other | None | General | No site crew | 2026-12 | 2026-12 | 2026-Q4 | Not TGA process | Baseline | Not applicable |
| IPC-03 |  | Monthly Interim Payment Certificate No.03 - submit invoice (2027-01) | milestone | 0d | 2027-01-31 | 2027-01-31 |  | 0d |  | finish on 2027-01-31 |  |  |  | Phase 1 | Phase 1 (Billing) | N/A | Cash Flow | N/A | SAR | General |  | Management & General | N/A | N/A | Cash (IPC / Advance) | No cost | Cash milestone | LOE / Cash | Other | None | General | No site crew | 2027-01 | 2027-01 | 2027-Q1 | Not TGA process | Baseline | Not applicable |
| IPC-04 |  | Monthly Interim Payment Certificate No.04 - submit invoice (2027-02) | milestone | 0d | 2027-02-28 | 2027-02-28 |  | 0d |  | finish on 2027-02-28 |  |  |  | Phase 1 | Phase 1 (Billing) | N/A | Cash Flow | N/A | SAR | General |  | Management & General | N/A | N/A | Cash (IPC / Advance) | No cost | Cash milestone | LOE / Cash | Other | None | General | No site crew | 2027-02 | 2027-02 | 2027-Q1 | Not TGA process | Baseline | Not applicable |
| IPC-05 |  | Monthly Interim Payment Certificate No.05 - submit invoice (2027-03) | milestone | 0d | 2027-03-31 | 2027-03-31 |  | 0d |  | finish on 2027-03-31 |  |  |  | Phase 1 | Phase 1 (Billing) | N/A | Cash Flow | N/A | SAR | General |  | Management & General | N/A | N/A | Cash (IPC / Advance) | No cost | Cash milestone | LOE / Cash | Other | None | General | No site crew | 2027-03 | 2027-03 | 2027-Q1 | Not TGA process | Baseline | Not applicable |
| IPC-06 |  | Monthly Interim Payment Certificate No.06 - submit invoice (2027-04) | milestone | 0d | 2027-04-30 | 2027-04-30 |  | 0d |  | finish on 2027-04-30 |  |  |  | Phase 1 | Phase 1 (Billing) | N/A | Cash Flow | N/A | SAR | General |  | Management & General | N/A | N/A | Cash (IPC / Advance) | No cost | Cash milestone | LOE / Cash | Other | None | General | No site crew | 2027-04 | 2027-04 | 2027-Q2 | Not TGA process | Baseline | Not applicable |
| IPC-07 |  | Monthly Interim Payment Certificate No.07 - submit invoice (2027-05) | milestone | 0d | 2027-05-31 | 2027-05-31 |  | 0d |  | finish on 2027-05-31 |  |  |  | Phase 1 | Phase 1 (Billing) | N/A | Cash Flow | N/A | SAR | General |  | Management & General | N/A | N/A | Cash (IPC / Advance) | No cost | Cash milestone | LOE / Cash | Other | None | General | No site crew | 2027-05 | 2027-05 | 2027-Q2 | Not TGA process | Baseline | Not applicable |
| IPC-08 |  | Monthly Interim Payment Certificate No.08 - submit invoice (2027-06) | milestone | 0d | 2027-06-30 | 2027-06-30 |  | 0d |  | finish on 2027-06-30 |  |  |  | Phase 1 | Phase 1 (Billing) | N/A | Cash Flow | N/A | SAR | General |  | Management & General | N/A | N/A | Cash (IPC / Advance) | No cost | Cash milestone | LOE / Cash | Other | None | General | No site crew | 2027-06 | 2027-06 | 2027-Q2 | Not TGA process | Baseline | Not applicable |
| IPC-09 |  | Monthly Interim Payment Certificate No.09 - submit invoice (2027-07) | milestone | 0d | 2027-07-31 | 2027-07-31 |  | 0d |  | finish on 2027-07-31 |  |  |  | Phase 1 | Phase 1 (Billing) | N/A | Cash Flow | N/A | SAR | General |  | Management & General | N/A | N/A | Cash (IPC / Advance) | No cost | Cash milestone | LOE / Cash | Other | None | General | No site crew | 2027-07 | 2027-07 | 2027-Q3 | Not TGA process | Baseline | Not applicable |
| IPC-10 |  | Monthly Interim Payment Certificate No.10 - submit invoice (2027-08) | milestone | 0d | 2027-08-31 | 2027-08-31 |  | 0d |  | finish on 2027-08-31 |  |  |  | Phase 1 | Phase 1 (Billing) | N/A | Cash Flow | N/A | SAR | General |  | Management & General | N/A | N/A | Cash (IPC / Advance) | No cost | Cash milestone | LOE / Cash | Other | None | General | No site crew | 2027-08 | 2027-08 | 2027-Q3 | Not TGA process | Baseline | Not applicable |
| IPC-11 |  | Monthly Interim Payment Certificate No.11 - submit invoice (2027-09) | milestone | 0d | 2027-09-30 | 2027-09-30 |  | 0d |  | finish on 2027-09-30 |  |  |  | Phase 1 | Phase 1 (Billing) | N/A | Cash Flow | N/A | SAR | General |  | Management & General | N/A | N/A | Cash (IPC / Advance) | No cost | Cash milestone | LOE / Cash | Other | None | General | No site crew | 2027-09 | 2027-09 | 2027-Q3 | Not TGA process | Baseline | Not applicable |
| IPC-12 |  | Monthly Interim Payment Certificate No.12 - submit invoice (2027-10) | milestone | 0d | 2027-10-31 | 2027-10-31 |  | 0d |  | finish on 2027-10-31 |  |  |  | Phase 1 | Phase 1 (Billing) | N/A | Cash Flow | N/A | SAR | General |  | Management & General | N/A | N/A | Cash (IPC / Advance) | No cost | Cash milestone | LOE / Cash | Other | None | General | No site crew | 2027-10 | 2027-10 | 2027-Q4 | Not TGA process | Baseline | Not applicable |
| IPC-13 |  | Monthly Interim Payment Certificate No.13 - submit invoice (2027-11) | milestone | 0d | 2027-11-30 | 2027-11-30 |  | 0d |  | finish on 2027-11-30 |  |  |  | Phase 1 | Phase 1 (Billing) | N/A | Cash Flow | N/A | SAR | General |  | Management & General | N/A | N/A | Cash (IPC / Advance) | No cost | Cash milestone | LOE / Cash | Other | None | General | No site crew | 2027-11 | 2027-11 | 2027-Q4 | Not TGA process | Baseline | Not applicable |
| IPC-14 |  | Monthly Interim Payment Certificate No.14 - submit invoice (2027-12) | milestone | 0d | 2027-12-31 | 2027-12-31 |  | 0d |  | finish on 2027-12-31 |  |  |  | Phase 1 | Phase 1 (Billing) | N/A | Cash Flow | N/A | SAR | General |  | Management & General | N/A | N/A | Cash (IPC / Advance) | No cost | Cash milestone | LOE / Cash | Other | None | General | No site crew | 2027-12 | 2027-12 | 2027-Q4 | Not TGA process | Baseline | Not applicable |
| IPC-15 |  | Monthly Interim Payment Certificate No.15 - submit invoice (2028-01) | milestone | 0d | 2028-01-31 | 2028-01-31 |  | 0d |  | finish on 2028-01-31 |  |  |  | Phase 1 | Phase 1 (Billing) | N/A | Cash Flow | N/A | SAR | General |  | Management & General | N/A | N/A | Cash (IPC / Advance) | No cost | Cash milestone | LOE / Cash | Other | None | General | No site crew | 2028-01 | 2028-01 | 2028-Q1 | Not TGA process | Baseline | Not applicable |
| IPC-16 |  | Monthly Interim Payment Certificate No.16 - submit invoice (2028-02) | milestone | 0d | 2028-02-23 | 2028-02-23 |  | 0d |  | finish on 2028-02-23 |  |  |  | Phase 1 | Phase 1 (Billing) | N/A | Cash Flow | N/A | SAR | General |  | Management & General | N/A | N/A | Cash (IPC / Advance) | No cost | Cash milestone | LOE / Cash | Other | None | General | No site crew | 2028-02 | 2028-02 | 2028-Q1 | Not TGA process | Baseline | Not applicable |
| IPC-17 |  | Monthly Interim Payment Certificate No.17 - submit invoice (2028-03) | milestone | 0d | 2028-03-31 | 2028-03-31 |  | 0d |  | finish on 2028-03-31 |  |  |  | Phase 1 | Phase 1 (Billing) | N/A | Cash Flow | N/A | SAR | General |  | Management & General | N/A | N/A | Cash (IPC / Advance) | No cost | Cash milestone | LOE / Cash | Other | None | General | No site crew | 2028-03 | 2028-03 | 2028-Q1 | Not TGA process | Baseline | Not applicable |
| IPC-18 |  | Monthly Interim Payment Certificate No.18 - submit invoice (2028-04) | milestone | 0d | 2028-04-30 | 2028-04-30 |  | 0d |  | finish on 2028-04-30 |  |  |  | Phase 1 | Phase 1 (Billing) | N/A | Cash Flow | N/A | SAR | General |  | Management & General | N/A | N/A | Cash (IPC / Advance) | No cost | Cash milestone | LOE / Cash | Other | None | General | No site crew | 2028-04 | 2028-04 | 2028-Q2 | Not TGA process | Baseline | Not applicable |
| IPC-19 |  | Monthly Interim Payment Certificate No.19 - submit invoice (2028-05) | milestone | 0d | 2028-05-31 | 2028-05-31 |  | 0d |  | finish on 2028-05-31 |  |  |  | Phase 1 | Phase 1 (Billing) | N/A | Cash Flow | N/A | SAR | General |  | Management & General | N/A | N/A | Cash (IPC / Advance) | No cost | Cash milestone | LOE / Cash | Other | None | General | No site crew | 2028-05 | 2028-05 | 2028-Q2 | Not TGA process | Baseline | Not applicable |
| IPC-20 |  | Monthly Interim Payment Certificate No.20 - submit invoice (2028-06) | milestone | 0d | 2028-06-30 | 2028-06-30 |  | 0d |  | finish on 2028-06-30 |  |  |  | Phase 1 | Phase 1 (Billing) | N/A | Cash Flow | N/A | SAR | General |  | Management & General | N/A | N/A | Cash (IPC / Advance) | No cost | Cash milestone | LOE / Cash | Other | None | General | No site crew | 2028-06 | 2028-06 | 2028-Q2 | Not TGA process | Baseline | Not applicable |
| IPC-21 |  | Monthly Interim Payment Certificate No.21 - submit invoice (2028-07) | milestone | 0d | 2028-07-31 | 2028-07-31 |  | 0d |  | finish on 2028-07-31 |  |  |  | Phase 1 | Phase 1 (Billing) | N/A | Cash Flow | N/A | SAR | General |  | Management & General | N/A | N/A | Cash (IPC / Advance) | No cost | Cash milestone | LOE / Cash | Other | None | General | No site crew | 2028-07 | 2028-07 | 2028-Q3 | Not TGA process | Baseline | Not applicable |
| IPC-22 |  | Monthly Interim Payment Certificate No.22 - submit invoice (2028-08) | milestone | 0d | 2028-08-31 | 2028-08-31 |  | 0d |  | finish on 2028-08-31 |  |  |  | Phase 1 | Phase 1 (Billing) | N/A | Cash Flow | N/A | SAR | General |  | Management & General | N/A | N/A | Cash (IPC / Advance) | No cost | Cash milestone | LOE / Cash | Other | None | General | No site crew | 2028-08 | 2028-08 | 2028-Q3 | Not TGA process | Baseline | Not applicable |
| IPC-23 |  | Monthly Interim Payment Certificate No.23 - submit invoice (2028-09) | milestone | 0d | 2028-09-30 | 2028-09-30 |  | 0d |  | finish on 2028-09-30 |  |  |  | Phase 1 | Phase 1 (Billing) | N/A | Cash Flow | N/A | SAR | General |  | Management & General | N/A | N/A | Cash (IPC / Advance) | No cost | Cash milestone | LOE / Cash | Other | None | General | No site crew | 2028-09 | 2028-09 | 2028-Q3 | Not TGA process | Baseline | Not applicable |
| IPC-24 |  | Monthly Interim Payment Certificate No.24 - submit invoice (2028-10) | milestone | 0d | 2028-10-31 | 2028-10-31 |  | 0d |  | finish on 2028-10-31 |  |  |  | Phase 1 | Phase 1 (Billing) | N/A | Cash Flow | N/A | SAR | General |  | Management & General | N/A | N/A | Cash (IPC / Advance) | No cost | Cash milestone | LOE / Cash | Other | None | General | No site crew | 2028-10 | 2028-10 | 2028-Q4 | Not TGA process | Baseline | Not applicable |
| IPC-25 |  | Monthly Interim Payment Certificate No.25 - submit invoice (2028-11) | milestone | 0d | 2028-11-30 | 2028-11-30 |  | 0d |  | finish on 2028-11-30 |  |  |  | Phase 1 | Phase 1 (Billing) | N/A | Cash Flow | N/A | SAR | General |  | Management & General | N/A | N/A | Cash (IPC / Advance) | No cost | Cash milestone | LOE / Cash | Other | None | General | No site crew | 2028-11 | 2028-11 | 2028-Q4 | Not TGA process | Baseline | Not applicable |
| IPC-26 |  | Monthly Interim Payment Certificate No.26 - submit invoice (2028-12) | milestone | 0d | 2028-12-31 | 2028-12-31 |  | 0d |  | finish on 2028-12-31 |  |  |  | Phase 1 | Phase 1 (Billing) | N/A | Cash Flow | N/A | SAR | General |  | Management & General | N/A | N/A | Cash (IPC / Advance) | No cost | Cash milestone | LOE / Cash | Other | None | General | No site crew | 2028-12 | 2028-12 | 2028-Q4 | Not TGA process | Baseline | Not applicable |

| ID | WBS | Activity | Duration | Start | Finish | Predecessors | Total float | Free float | Phase | Contract Phase | BOQ Ref | Stage | Lead Class | Responsibility | Package Group | Discipline | Design Stage | Procurement Step | Milestone Type | Cost Component | Payment Basis | Path Class | Critical Driver | Risk Flag | Work Zone | Crew Size Class | Start Month | Finish Month | Start Quarter | TGA Process | Duration Basis | Submit / Review |
| --- | --- | --- | --- | --- | --- | --- | --- | --- | --- | --- | --- | --- | --- | --- | --- | --- | --- | --- | --- | --- | --- | --- | --- | --- | --- | --- | --- | --- | --- | --- | --- | --- |
|  | 09 | **TGA Compliance, Safety Assurance and SAR Permits** |  | 2026-11-02 | 2028-12-08 |  |  |  |  |  |  |  |  |  |  |  |  |  |  |  |  |  |  |  |  |  |  |  |  |  |  |  |
|  | 01 | **ICP and Safety Planning** |  | 2026-11-02 | 2026-12-08 |  |  |  |  |  |  |  |  |  |  |  |  |  |  |  |  |  |  |  |  |  |  |  |  |  |  |  |
| TG-0010 |  | Prepare ICP Appointment Package (Scope of Independent Assessment and Competence Evidence) | 7d | 2026-11-02 | 2026-11-08 | PR-0010 | 61d | 0d | Phase 1 | Phase 1 (Billing) | N/A | Preliminaries | N/A | Contractor | General | TGA & Safety Assuran | Studies & Approvals | N/A | N/A | No cost | None | Float 31-90 d | TGA / permit chain | Authority dependency | General | No site crew | 2026-11 | 2026-11 | 2026-Q4 | ICP and Safety Planning | Contract (C) | Preparation |
| TG-0030 |  | Prepare DEMP, Safe-by-Design Safety Plan, RAM Plan and Change Management Procedure | 21d | 2026-11-02 | 2026-11-22 | PR-0010 | 39d | 0d | Phase 1 | Phase 1 (Billing) | N/A | Preliminaries | N/A | Contractor | General | TGA & Safety Assuran | Studies & Approvals | N/A | N/A | No cost | None | Float 31-90 d | TGA / permit chain | Authority dependency | General | No site crew | 2026-11 | 2026-11 | 2026-Q4 | ICP and Safety Planning | Contract (C) | Preparation |
| TG-0020 |  | ICP Appointment - Submission to SAR / TGA | 2d | 2026-11-09 | 2026-11-10 | TG-0010 | 61d | 0d | Phase 1 | Phase 1 (Billing) | N/A | Preliminaries | N/A | Contractor | General | TGA & Safety Assuran | Studies & Approvals | N/A | N/A | No cost | None | Float 31-90 d | TGA / permit chain | Authority dependency | General | No site crew | 2026-11 | 2026-11 | 2026-Q4 | ICP and Safety Planning | Contract (C) | Submission |
| TG-2020 |  | ICP Appointment - Review and Acceptance by SAR / TGA | 10d | 2026-11-11 | 2026-11-20 | TG-0020 | 61d | 0d | Phase 1 | Phase 1 (Billing) | N/A | Preliminaries | N/A | Authority | General | TGA & Safety Assuran | Studies & Approvals | N/A | N/A | No cost | None | Float 31-90 d | TGA / permit chain | Authority dependency | General | No site crew | 2026-11 | 2026-11 | 2026-Q4 | ICP and Safety Planning | To be confirmed (T) | Review / Approval |
| TG-0040 |  | DEMP, Safety and RAM Plans - Submission to SAR | 2d | 2026-11-23 | 2026-11-24 | TG-0030 | 39d | 0d | Phase 1 | Phase 1 (Billing) | N/A | Preliminaries | N/A | Contractor | General | TGA & Safety Assuran | Studies & Approvals | N/A | N/A | No cost | None | Float 31-90 d | TGA / permit chain | Authority dependency | General | No site crew | 2026-11 | 2026-11 | 2026-Q4 | ICP and Safety Planning | Contract (C) | Submission |
| TG-0050 |  | ICP Review of Safety Plan and Risk Process | 10d | 2026-11-25 | 2026-12-04 | TG-2020, TG-0040 | 57d | 0d | Phase 1 | Phase 1 (Billing) | N/A | Preliminaries | N/A | ICP | General | TGA & Safety Assuran | Studies & Approvals | N/A | N/A | No cost | None | Float 31-90 d | TGA / permit chain | Authority dependency | General | No site crew | 2026-11 | 2026-12 | 2026-Q4 | ICP and Safety Planning | Baseline assumption (B) | Review / Approval |
| TG-2040 |  | DEMP, Safety and RAM Plans - Review and Approval by SAR | 14d | 2026-11-25 | 2026-12-08 | TG-0040 | 53d | 0d | Phase 1 | Phase 1 (Billing) | N/A | Preliminaries | N/A | SAR | General | TGA & Safety Assuran | Studies & Approvals | N/A | N/A | No cost | None | Float 31-90 d | TGA / permit chain | SAR dependency | General | No site crew | 2026-11 | 2026-12 | 2026-Q4 | ICP and Safety Planning | Baseline assumption (B) | Review / Approval |
|  | 02 | **Design Safety Assurance (Safe by Design)** |  | 2026-11-25 | 2027-06-10 |  |  |  |  |  |  |  |  |  |  |  |  |  |  |  |  |  |  |  |  |  |  |  |  |  |  |  |
| TG-0110 |  | Concept Stage - Safe-by-Design Hazard Identification (All Disciplines) | 21d | 2026-11-25 | 2026-12-15 | TG-0040 | 39d | 0d | Phase 1 | Phase 1 (Billing) | N/A | Design | N/A | Contractor | General | TGA & Safety Assuran | Concept | N/A | N/A | No cost | None | Float 31-90 d | TGA / permit chain | Authority dependency | General | No site crew | 2026-11 | 2026-12 | 2026-Q4 | Design Safety Assurance | Contract (C) | Not applicable |
| TG-0120 |  | ICP Check of Concept Safety Inputs | 7d | 2026-12-16 | 2026-12-22 | TG-2020, TG-0110 | 39d | 0d | Phase 1 | Phase 1 (Billing) | N/A | Design | N/A | ICP | General | TGA & Safety Assuran | Concept | N/A | N/A | No cost | None | Float 31-90 d | TGA / permit chain | Authority dependency | General | No site crew | 2026-12 | 2026-12 | 2026-Q4 | Design Safety Assurance | Baseline assumption (B) | Not applicable |
| TG-0210 |  | Preliminary Hazard Analysis, Safety Case and Risk Register | 42d | 2027-01-31 | 2027-03-20 | DS-0020 | 16d | 0d | Phase 1 | Phase 1 (Billing) | N/A | Design | N/A | Contractor | General | TGA & Safety Assuran | Preliminary | N/A | N/A | No cost | None | Near-critical (1-30 d) | TGA / permit chain | Authority dependency | General | No site crew | 2027-01 | 2027-03 | 2027-Q1 | Design Safety Assurance | Contract (C) | Not applicable |
| TG-0310 |  | High-Level EIA Preparation (Preliminary Design) | 35d | 2027-01-31 | 2027-03-07 | DS-0020 | 30d | 0d | Phase 1 | Phase 1 (Billing) | N/A | Design | N/A | Contractor | General | TGA & Safety Assuran | Studies & Approvals | N/A | N/A | No cost | None | Near-critical (1-30 d) | TGA / permit chain | Authority dependency | General | No site crew | 2027-01 | 2027-03 | 2027-Q1 | Design Safety Assurance | Contract (C) | Preparation |
| TG-0320 |  | High-Level EIA - Submission to SAR | 2d | 2027-03-08 | 2027-03-15 | TG-0310 | 30d | 0d | Phase 1 | Phase 1 (Billing) | N/A | Design | N/A | Contractor | General | TGA & Safety Assuran | Studies & Approvals | N/A | N/A | No cost | None | Near-critical (1-30 d) | TGA / permit chain | Authority dependency | General | No site crew | 2027-03 | 2027-03 | 2027-Q1 | Design Safety Assurance | Contract (C) | Submission |
| TG-2320 |  | High-Level EIA - Review by SAR (CRS) | 14d | 2027-03-16 | 2027-03-29 | TG-0320 | 30d | 0d | Phase 1 | Phase 1 (Billing) | N/A | Design | N/A | SAR | General | TGA & Safety Assuran | Studies & Approvals | N/A | N/A | No cost | None | Near-critical (1-30 d) | TGA / permit chain | SAR dependency | General | No site crew | 2027-03 | 2027-03 | 2027-Q1 | Design Safety Assurance | Baseline assumption (B) | Review / Approval |
| TG-0220 |  | Safety Case and Risk Register - Submission to SAR | 2d | 2027-03-21 | 2027-03-22 | TG-0210 | 16d | 0d | Phase 1 | Phase 1 (Billing) | N/A | Design | N/A | Contractor | General | TGA & Safety Assuran | Preliminary | N/A | N/A | No cost | None | Near-critical (1-30 d) | TGA / permit chain | Authority dependency | General | No site crew | 2027-03 | 2027-03 | 2027-Q1 | Design Safety Assurance | Contract (C) | Submission |
| TG-0230 |  | ICP Review of Preliminary Safety Case | 10d | 2027-03-23 | 2027-04-01 | TG-0220 | 27d | 0d | Phase 1 | Phase 1 (Billing) | N/A | Design | N/A | ICP | General | TGA & Safety Assuran | Preliminary | N/A | N/A | No cost | None | Near-critical (1-30 d) | TGA / permit chain | Authority dependency | General | No site crew | 2027-03 | 2027-04 | 2027-Q1 | Design Safety Assurance | Baseline assumption (B) | Review / Approval |
| TG-2220 |  | Safety Case and Risk Register - Review by SAR | 21d | 2027-03-23 | 2027-04-12 | TG-0220 | 16d | 0d | Phase 1 | Phase 1 (Billing) | N/A | Design | N/A | SAR | General | TGA & Safety Assuran | Studies & Approvals | N/A | N/A | No cost | None | Near-critical (1-30 d) | TGA / permit chain | SAR dependency | General | No site crew | 2027-03 | 2027-04 | 2027-Q1 | Design Safety Assurance | Baseline assumption (B) | Review / Approval |
| TG-0330 |  | Detailed EIA Preparation (for GAMEP) | 45d | 2027-03-30 | 2027-05-13 | TG-2320 | 250d | 0d | Phase 1 | Phase 1 (Billing) | N/A | Design | N/A | Contractor | General | TGA & Safety Assuran | Studies & Approvals | N/A | N/A | No cost | None | Float > 90 d | TGA / permit chain | Authority dependency | General | No site crew | 2027-03 | 2027-05 | 2027-Q1 | Design Safety Assurance | Contract (C) | Preparation |
| TG-0410 |  | Hazard Close-out to ALARP and Residual Hazard Transfer List | 21d | 2027-04-29 | 2027-05-25 | DS-0360 | 103d | 0d | Phase 1 | Phase 1 (Billing) | N/A | Design | N/A | Contractor | General | TGA & Safety Assuran | Studies & Approvals | N/A | N/A | No cost | None | Float > 90 d | TGA / permit chain | Authority dependency | General | No site crew | 2027-04 | 2027-05 | 2027-Q2 | Design Safety Assurance | Contract (C) | Not applicable |
| TG-0420 |  | Hazard Close-out Report - Submission to SAR | 2d | 2027-05-26 | 2027-05-27 | TG-0410 | 103d | 0d | Phase 1 | Phase 1 (Billing) | N/A | Design | N/A | Contractor | General | TGA & Safety Assuran | Studies & Approvals | N/A | N/A | No cost | None | Float > 90 d | TGA / permit chain | Authority dependency | General | No site crew | 2027-05 | 2027-05 | 2027-Q2 | Design Safety Assurance | Contract (C) | Submission |
| TG-0430 |  | ICP Design Verification Statement | 10d | 2027-05-28 | 2027-06-06 | TG-0420 | 107d | 0d | Phase 1 | Phase 1 (Billing) | N/A | Design | N/A | ICP | General | TGA & Safety Assuran | Studies & Approvals | N/A | N/A | No cost | None | Float > 90 d | TGA / permit chain | Authority dependency | General | No site crew | 2027-05 | 2027-06 | 2027-Q2 | Design Safety Assurance | Baseline assumption (B) | Not applicable |
| TG-2420 |  | Hazard Close-out Report - Review by SAR | 14d | 2027-05-28 | 2027-06-10 | TG-0420 | 103d | 0d | Phase 1 | Phase 1 (Billing) | N/A | Design | N/A | SAR | General | TGA & Safety Assuran | Studies & Approvals | N/A | N/A | No cost | None | Float > 90 d | TGA / permit chain | SAR dependency | General | No site crew | 2027-05 | 2027-06 | 2027-Q2 | Design Safety Assurance | Baseline assumption (B) | Review / Approval |

| ID | WBS | Activity | Type | Duration | Start | Finish | Predecessors | Total float | Free float | Calendar | Phase | Contract Phase | BOQ Ref | Stage | Lead Class | Responsibility | Package Group | Discipline | Design Stage | Procurement Step | Milestone Type | Cost Component | Payment Basis | Path Class | Critical Driver | Risk Flag | Work Zone | Crew Size Class | Start Month | Finish Month | Start Quarter | TGA Process | Duration Basis | Submit / Review |
| --- | --- | --- | --- | --- | --- | --- | --- | --- | --- | --- | --- | --- | --- | --- | --- | --- | --- | --- | --- | --- | --- | --- | --- | --- | --- | --- | --- | --- | --- | --- | --- | --- | --- | --- |
|  | 03 | **Authority Design Approvals (HCIS, Civil Defense, GAMEP)** |  |  | 2027-04-29 | 2027-06-26 |  |  |  |  |  |  |  |  |  |  |  |  |  |  |  |  |  |  |  |  |  |  |  |  |  |  |  |  |
| TG-0510 |  | HCIS Design Package Preparation (HCIS-Approved Consultant) |  | 21d | 2027-04-29 | 2027-05-25 | DS-0360 | 87d | 0d |  | Phase 1 | Phase 1 (Billing) | N/A | Preliminaries | N/A | Contractor | General | Authorities & Permit | Detailed & IFC | N/A | N/A | No cost | None | Float 31-90 d | TGA / permit chain | Authority dependency | General | No site crew | 2027-04 | 2027-05 | 2027-Q2 | Authority Design Approvals | Contract (C) | Review / Approval |
| TG-0530 |  | Civil Defense Detailed Design - Submission |  | 3d | 2027-05-13 | 2027-05-21 | PR-0190 | 78d | 0d |  | Phase 1 | Phase 1 (Billing) | N/A | Preliminaries | N/A | Contractor | General | Authorities & Permit | Detailed & IFC | N/A | N/A | No cost | None | Float 31-90 d | TGA / permit chain | Authority dependency | General | No site crew | 2027-05 | 2027-05 | 2027-Q2 | Authority Design Approvals | Contract (C) | Submission |
| TG-0520 |  | HCIS Design Package - Submission to HCIS |  | 2d | 2027-05-26 | 2027-05-27 | TG-0510 | 87d | 0d |  | Phase 1 | Phase 1 (Billing) | N/A | Preliminaries | N/A | Contractor | General | Authorities & Permit | Detailed & IFC | N/A | N/A | No cost | None | Float 31-90 d | TGA / permit chain | Authority dependency | General | No site crew | 2027-05 | 2027-05 | 2027-Q2 | Authority Design Approvals | Contract (C) | Submission |
| TG-2520 |  | HCIS Design Approval |  | 30d | 2027-05-28 | 2027-06-26 | TG-0520 | 87d | 0d |  | Phase 1 | Phase 1 (Billing) | N/A | Preliminaries | N/A | Authority | General | Authorities & Permit | Studies & Approvals | N/A | N/A | No cost | None | Float 31-90 d | TGA / permit chain | Authority dependency | General | No site crew | 2027-05 | 2027-06 | 2027-Q2 | Authority Design Approvals | To be confirmed (T) | Review / Approval |
|  | 04 | **SAR Work Permit and Possession** |  |  | 2027-06-04 | 2028-08-21 |  |  |  |  |  |  |  |  |  |  |  |  |  |  |  |  |  |  |  |  |  |  |  |  |  |  |  |  |
| TG-0610 |  | Prepare SAR Work Permit Package (Permit Form, WARA, Method Statements, Insurance, KMZ, Staff List, PTS / PO / PICOP Evidence) |  | 21d | 2027-06-04 | 2027-06-24 | DS-0360 FS+30d | 218d | 0d |  | Phase 1 | Phase 1 (Billing) | N/A | Preliminaries | N/A | Contractor | General | SAR Work Permit | Detailed & IFC | N/A | N/A | No cost | None | Float > 90 d | TGA / permit chain | Authority dependency | General | No site crew | 2027-06 | 2027-06 | 2027-Q2 | SAR Work Permit and Possession | Work Permit Handbook (H) | Preparation |
| TG-0620 |  | Work Permit Request - Submission to SAR Permit Department (by SAR as Project Owner) |  | 2d | 2027-06-25 | 2027-06-26 | TG-0610 | 218d | 0d |  | Phase 1 | Phase 1 (Billing) | N/A | Preliminaries | N/A | Contractor | General | SAR Work Permit | Detailed & IFC | N/A | N/A | No cost | None | Float > 90 d | TGA / permit chain | Authority dependency | General | No site crew | 2027-06 | 2027-06 | 2027-Q2 | SAR Work Permit and Possession | Work Permit Handbook (H) | Submission |
| TG-2620 |  | Work Permit Request - SAR Acceptance Check (5 Working Days) |  | 5d | 2027-06-27 | 2027-07-01 | TG-0620 | 218d | 0d |  | Phase 1 | Phase 1 (Billing) | N/A | Preliminaries | N/A | SAR | General | SAR Work Permit | Studies & Approvals | N/A | N/A | No cost | None | Float > 90 d | TGA / permit chain | SAR dependency | General | No site crew | 2027-06 | 2027-07 | 2027-Q2 | SAR Work Permit and Possession | Work Permit Handbook (H) | Review / Approval |
| TG-0630 |  | Additional Documents Requested by SAR - Contractor Response (7 Days) |  | 7d | 2027-07-02 | 2027-07-08 | TG-2620 | 218d | 0d |  | Phase 1 | Phase 1 (Billing) | N/A | Preliminaries | N/A | Contractor | General | SAR Work Permit | Detailed & IFC | N/A | N/A | No cost | None | Float > 90 d | TGA / permit chain | Authority dependency | General | No site crew | 2027-07 | 2027-07 | 2027-Q3 | SAR Work Permit and Possession | Work Permit Handbook (H) | Not applicable |
| TG-2630 |  | Work Permit - SAR Cross-Functional Technical Review (Engineering, HSE, Insurance, Real Estate, Security, Network Planning) |  | 30d | 2027-07-09 | 2027-08-07 | TG-0630 | 218d | 0d |  | Phase 1 | Phase 1 (Billing) | N/A | Preliminaries | N/A | SAR | General | SAR Work Permit | Studies & Approvals | N/A | N/A | No cost | None | Float > 90 d | TGA / permit chain | SAR dependency | General | No site crew | 2027-07 | 2027-08 | 2027-Q3 | SAR Work Permit and Possession | To be confirmed (T) | Review / Approval |
| TG-0640 |  | Delivery Plan (TTF02) - Submission |  | 3d | 2027-08-08 | 2027-08-10 | TG-2630 | 218d | 0d |  | Phase 1 | Phase 1 (Billing) | N/A | Preliminaries | N/A | Contractor | General | SAR Work Permit | Detailed & IFC | N/A | N/A | No cost | None | Float > 90 d | TGA / permit chain | Authority dependency | General | No site crew | 2027-08 | 2027-08 | 2027-Q3 | SAR Work Permit and Possession | Work Permit Handbook (H) | Submission |
| TG-2640 |  | Delivery Plan (TTF02) - SAR Review and Approval |  | 14d | 2027-08-11 | 2027-08-24 | TG-0640 | 218d | 0d |  | Phase 1 | Phase 1 (Billing) | N/A | Preliminaries | N/A | SAR | General | SAR Work Permit | Studies & Approvals | N/A | N/A | No cost | None | Float > 90 d | TGA / permit chain | SAR dependency | General | No site crew | 2027-08 | 2027-08 | 2027-Q3 | SAR Work Permit and Possession | To be confirmed (T) | Review / Approval |
| TG-0660 |  | Possession Request Package - Turnout Tie-in (TTF02, WARA, Method Statement, PICOP / PO) |  | 5d | 2028-04-11 | 2028-04-15 | CN-1720 SS | 113d | 0d |  | Phase 1 | Phase 1 (Billing) | N/A | Preliminaries | N/A | Contractor | General | SAR Work Permit | Detailed & IFC | N/A | N/A | No cost | None | Float > 90 d | TGA / permit chain | Authority dependency | General | No site crew | 2028-04 | 2028-04 | 2028-Q2 | SAR Work Permit and Possession | Work Permit Handbook (H) | Submission |
| TG-0650 |  | Possession Request Package - Loop Line Tie-in (TTF02, WARA, Method Statement, PICOP / PO) |  | 5d | 2028-08-17 | 2028-08-21 | CN-1660 SS | 6d | 0d |  | Phase 1 | Phase 1 (Billing) | N/A | Preliminaries | N/A | Contractor | General | SAR Work Permit | Detailed & IFC | N/A | N/A | No cost | None | Near-critical (1-30 d) | TGA / permit chain | Authority dependency | General | No site crew | 2028-08 | 2028-08 | 2028-Q3 | SAR Work Permit and Possession | Work Permit Handbook (H) | Submission |
|  | 05 | **Construction Safety Assurance** |  |  | 2027-06-19 | 2028-10-21 |  |  |  |  |  |  |  |  |  |  |  |  |  |  |  |  |  |  |  |  |  |  |  |  |  |  |  |  |
| TG-0710 |  | Prepare Construction Safety Plan and ICP Hold / Witness Points |  | 7d | 2027-06-19 | 2027-06-25 | DS-0360 FS+45d | 280d | 0d |  | Phase 1 | Phase 1 (Billing) | N/A | Preliminaries | N/A | Contractor | General | TGA & Safety Assuran | Detailed & IFC | N/A | N/A | No cost | None | Float > 90 d | TGA / permit chain | Authority dependency | General | No site crew | 2027-06 | 2027-06 | 2027-Q2 | Construction Safety Assurance | Baseline assumption (B) | Preparation |
| TG-0720 |  | Construction Safety Plan - Submission to SAR / ICP |  | 2d | 2027-06-26 | 2027-06-27 | TG-0710 | 280d | 0d |  | Phase 1 | Phase 1 (Billing) | N/A | Preliminaries | N/A | Contractor | General | TGA & Safety Assuran | Detailed & IFC | N/A | N/A | No cost | None | Float > 90 d | TGA / permit chain | Authority dependency | General | No site crew | 2027-06 | 2027-06 | 2027-Q2 | Construction Safety Assurance | Baseline assumption (B) | Submission |
| TG-2720 |  | Construction Safety Plan - Review and Acceptance by SAR / ICP |  | 10d | 2027-06-28 | 2027-07-07 | TG-0720 | 280d | 0d |  | Phase 1 | Phase 1 (Billing) | N/A | Preliminaries | N/A | SAR | General | TGA & Safety Assuran | Studies & Approvals | N/A | N/A | No cost | None | Float > 90 d | TGA / permit chain | SAR dependency | General | No site crew | 2027-06 | 2027-07 | 2027-Q2 | Construction Safety Assurance | Baseline assumption (B) | Review / Approval |
| TG-0730 |  | ICP Witness of Critical Works (Level of Effort) | level of effort | 312d | 2027-10-07 | 2028-10-21 | MS-0090 SS | 0d |  | SAR-6D Construction (Fri off, public holidays off) | Phase 1 | Phase 1 (Billing) | N/A | Preliminaries | N/A | ICP | General | TGA & Safety Assuran | Detailed & IFC | N/A | N/A | No cost | None | Critical (0 d) | TGA / permit chain | Authority dependency | General | No site crew | 2027-10 | 2028-10 | 2027-Q4 | Construction Safety Assurance | Baseline assumption (B) | Not applicable |
|  | 06 | **Verification, Authority Acceptance and Operational Readiness** |  |  | 2027-10-08 | 2028-12-08 |  |  |  |  |  |  |  |  |  |  |  |  |  |  |  |  |  |  |  |  |  |  |  |  |  |  |  |  |
| TG-0910 |  | Operating Rules Change Request and Risk Assessment - Loop Line and Turnouts |  | 10d | 2027-10-08 | 2027-10-17 | MS-0090 | 339d | 0d |  | Phase 1 | Phase 1 (Billing) | N/A | Preliminaries | N/A | SAR | General | TGA & Safety Assuran | Studies & Approvals | N/A | N/A | No cost | None | Float > 90 d | TGA / permit chain | SAR dependency | General | No site crew | 2027-10 | 2027-10 | 2027-Q4 | Verification and Readiness | SAR procedure (S) | Not applicable |
| TG-0920 |  | Operating Rules Critical Change Request Form - Submission (SAR-012-200-4-001) |  | 2d | 2027-10-18 | 2027-10-19 | TG-0910 | 339d | 0d |  | Phase 1 | Phase 1 (Billing) | N/A | Preliminaries | N/A | SAR | General | TGA & Safety Assuran | Studies & Approvals | N/A | N/A | No cost | None | Float > 90 d | TGA / permit chain | SAR dependency | General | No site crew | 2027-10 | 2027-10 | 2027-Q4 | Verification and Readiness | SAR procedure (S) | Submission |
| TG-2920 |  | Change Request Review by Railway Excellence and Governance (15 Days) |  | 15d | 2027-10-20 | 2027-11-03 | TG-0920 | 339d | 0d |  | Phase 1 | Phase 1 (Billing) | N/A | Preliminaries | N/A | SAR | General | TGA & Safety Assuran | Studies & Approvals | N/A | N/A | No cost | None | Float > 90 d | TGA / permit chain | SAR dependency | General | No site crew | 2027-10 | 2027-11 | 2027-Q4 | Verification and Readiness | SAR procedure (S) | Review / Approval |
| TG-2925 |  | Railway Governance Notice (RGN) Preparation and Publication (15 Days) |  | 15d | 2027-11-04 | 2027-11-18 | TG-2920 | 339d | 0d |  | Phase 1 | Phase 1 (Billing) | N/A | Preliminaries | N/A | SAR | General | TGA & Safety Assuran | Studies & Approvals | N/A | N/A | No cost | None | Float > 90 d | TGA / permit chain | SAR dependency | General | No site crew | 2027-11 | 2027-11 | 2027-Q4 | Verification and Readiness | SAR procedure (S) | Preparation |
| TG-0870 |  | Authority Inspection Request - Submission (NWC / SEC / Telecom Permanent Connections) |  | 3d | 2027-12-29 | 2027-12-31 | CN-1090, CN-1100, CN-1110, CN-1130, CN-1150, CN-1160, CN-1170, CN-1180, CN-1220, PR-0175, PR-0185 | 313d | 0d |  | Phase 1 | Phase 1 (Billing) | N/A | Testing & Commission | N/A | Contractor | General | Authorities & Permit | Studies & Approvals | N/A | N/A | No cost | None | Float > 90 d | TGA / permit chain | Authority dependency | General | No site crew | 2027-12 | 2027-12 | 2027-Q4 | Verification and Readiness | Contract (C) | Submission |
| TG-0860 |  | NWC Inspection Request - Submission |  | 3d | 2028-01-17 | 2028-01-19 | TC-0200 | 313d | 0d |  | Phase 1 | Phase 1 (Billing) | N/A | Testing & Commission | N/A | Contractor | General | Authorities & Permit | Studies & Approvals | N/A | N/A | No cost | None | Float > 90 d | TGA / permit chain | Authority dependency | General | No site crew | 2028-01 | 2028-01 | 2028-Q1 | Verification and Readiness | Contract (C) | Submission |
| TG-0850 |  | SEC Inspection Request - Submission |  | 3d | 2028-05-12 | 2028-05-14 | TC-0100, PR-0165 | 179d | 0d |  | Phase 1 | Phase 1 (Billing) | N/A | Testing & Commission | N/A | Contractor | General | Authorities & Permit | Studies & Approvals | N/A | N/A | No cost | None | Float > 90 d | TGA / permit chain | Authority dependency | General | No site crew | 2028-05 | 2028-05 | 2028-Q2 | Verification and Readiness | Contract (C) | Submission |
| TG-0841 |  | Civil Defense Inspection Request - Submission (Ancillary Buildings) |  | 3d | 2028-05-30 | 2028-06-01 | TC-0130 | 180d | 0d |  | Phase 1 | Phase 1 (Billing) | N/A | Testing & Commission | N/A | Contractor | General | Authorities & Permit | Studies & Approvals | N/A | N/A | No cost | None | Float > 90 d | TGA / permit chain | Authority dependency | General | No site crew | 2028-05 | 2028-06 | 2028-Q2 | Verification and Readiness | Contract (C) | Submission |
| TG-0840 |  | Civil Defense Inspection Request - Submission (Main Building Fire and Life Safety) |  | 3d | 2028-06-05 | 2028-06-07 | TC-0010 | 142d | 0d |  | Phase 1 | Phase 1 (Billing) | N/A | Testing & Commission | N/A | Contractor | General | Authorities & Permit | Studies & Approvals | N/A | N/A | No cost | None | Float > 90 d | TGA / permit chain | Authority dependency | General | No site crew | 2028-06 | 2028-06 | 2028-Q2 | Verification and Readiness | Contract (C) | Submission |
| TG-0810 |  | ICP Witness of System and Integration Tests and Trial Running |  | 27d | 2028-10-22 | 2028-11-17 | TC-0370 SS | 4d | 0d |  | Phase 1 | Phase 1 (Billing) | N/A | Testing & Commission | N/A | ICP | General | TGA & Safety Assuran | Studies & Approvals | N/A | N/A | No cost | None | Near-critical (1-30 d) | TGA / permit chain | Authority dependency | General | No site crew | 2028-10 | 2028-11 | 2028-Q4 | Verification and Readiness | Baseline assumption (B) | Not applicable |
| TG-0820 |  | ICP Final Verification Report (Prepared During Trial Running) |  | 6d | 2028-11-09 | 2028-11-14 | TC-0460 SS+1d | 2d | 0d |  | Phase 1 | Phase 1 (Billing) | N/A | Testing & Commission | N/A | ICP | General | TGA & Safety Assuran | Studies & Approvals | N/A | N/A | No cost | None | Near-critical (1-30 d) | TGA / permit chain | Authority dependency | General | No site crew | 2028-11 | 2028-11 | 2028-Q4 | Verification and Readiness | Baseline assumption (B) | Preparation |
| TG-0830 |  | Safety Assessment - Submission (Final Safety Case, ICP Report, Test and Trial Reports) |  | 5d | 2028-11-15 | 2028-11-19 | TG-0820 | 2d | 0d |  | Phase 1 | Phase 1 (Billing) | N/A | Testing & Commission | N/A | Contractor | General | TGA & Safety Assuran | Studies & Approvals | N/A | N/A | No cost | None | Near-critical (1-30 d) | TGA / permit chain | Authority dependency | General | No site crew | 2028-11 | 2028-11 | 2028-Q4 | Verification and Readiness | Baseline assumption (B) | Submission |
| TG-0930 |  | SAR Operational Readiness Review (Staff, Procedures, Operating Rules) |  | 7d | 2028-11-26 | 2028-12-02 | TC-0380 SS+3d | 7d | 0d |  | Phase 1 | Phase 1 (Billing) | N/A | Testing & Commission | N/A | SAR | General | TGA & Safety Assuran | Studies & Approvals | N/A | N/A | No cost | None | Near-critical (1-30 d) | TGA / permit chain | SAR dependency | General | No site crew | 2028-11 | 2028-12 | 2028-Q4 | Verification and Readiness | Baseline assumption (B) | Review / Approval |
| TG-0880 |  | Taking-Over Certificate Application and Document Submission (As-Builts, O&M Manuals, Spares, Assurance Letter, Authority Certificates) |  | 5d | 2028-12-04 | 2028-12-08 | TC-0380 SS+10d, TC-0410 | 1d | 0d |  | Phase 1 | Phase 1 (Billing) | N/A | Testing & Commission | N/A | Contractor | General | TGA & Safety Assuran | Studies & Approvals | N/A | N/A | No cost | None | Near-critical (1-30 d) | TGA / permit chain | Authority dependency | General | No site crew | 2028-12 | 2028-12 | 2028-Q4 | Verification and Readiness | Contract (C) | Submission |

## Activity codes

| Code | Value | Meaning |
| --- | --- | --- |
| BOQ Ref | 1.1 | Preliminaries & General Requirements |
| BOQ Ref | 2.1 | Design & Engineering |
| BOQ Ref | 3.1 | Main Building |
| BOQ Ref | 3.2 | IT Equipment |
| BOQ Ref | 3.3 | FF&E |
| BOQ Ref | 4.1 | Substation & SEC |
| BOQ Ref | 4.2 | Firefighting Bldg |
| BOQ Ref | 4.3 | Generator Room |
| BOQ Ref | 4.4 | UG Water Tank |
| BOQ Ref | 5.1 | Site Works & Utilities |
| BOQ Ref | 5.2 | Car Parking Sheds |
| BOQ Ref | 5.3 | Fence Works |
| BOQ Ref | 5.4 | Automatic Gate |
| BOQ Ref | 6.1 | Access Road |
| BOQ Ref | 6.2 | Signalling & Telecom |
| BOQ Ref | 6.3 | External Works |
| BOQ Ref | 7.2 | Railway Track |
| BOQ Ref | 7.3 | Railway Turnouts |
| BOQ Ref | N/A | Not linked to a BOQ item (milestones / cash) |
| Critical Driver | Design & approvals g | Design & approvals gate |
| Discipline | Architectural & Fini | Architectural & Finishes |
| Discipline | Authorities & Permit | Authorities & Permits |
| Discipline | Design - Architectur | Design - Architecture |
| Discipline | Design - Civil & Roa | Design - Civil & Roads |
| Discipline | Design - Railway & S | Design - Railway & Signalling |
| Discipline | SAR Work Permit | SAR Work Permit and Possession |
| Discipline | Structure (RC / Stee | Structure (RC / Steel) |
| Discipline | TGA & Safety Assuran | TGA and Safety Assurance |
| Discipline | Testing & Commission | Testing & Commissioning |
| Responsibility | ICP | Independent Competent Person (ICP) |
| Risk Flag | Long-lead manufactur | Long-lead manufacture |
| Stage | Testing & Commission | Testing & Commissioning |
| Work Package | 4.2 Firefighting Bld | 4.2 Firefighting Bldg |
| Work Package | 5.1 Site Works & Uti | 5.1 Site Works & Utilities |
| Work Package | 5.2 Car Parking Shed | 5.2 Car Parking Sheds |
| Work Package | 6.2 Signalling & Tel | 6.2 Signalling & Telecom |
| Work Zone | Station Building Zon | Station Building Zone |
| Work Zone | Substation & Utiliti | Substation & Utilities Zone |
